# Bouwplanning v1.0

How a schedule from an IFC model changed from version to version. A marks actual dates.

## Version 1 (saved 2026-07-03)

Note of the change: feat(examples): generator op echte writer+CPM, 3 showcase-planningen, rijkere topologie

| ID | Task | Duration | Start | Finish | Predecessors | Total float |
| --- | --- | --- | --- | --- | --- | --- |
| 1 | **1. Voorbereiding** | 5d | 2027-03-01 | 2027-03-30 |  | 0d |
| 1.1 | Bouwplaats inrichten | 8d | 2027-03-01 | 2027-03-10 |  | 0d |
| 1.2 | Omgevingsmanagement | 5d | 2027-03-11 | 2027-03-17 | 1.1 | 265d |
| 1.3 | Verkeersmaatregelen | 3d | 2027-03-18 | 2027-03-22 | 1.2 | 265d |
| 1.4 | Monitoring peilbuizen | 3d | 2027-03-23 | 2027-03-25 | 1.3 | 265d |
| 1.5 | Start bouw | 0d | 2027-03-30 | 2027-03-30 | 1.4 | 265d |
| 2 | **2. Grondwerk & Fundering** | 5d | 2027-03-15 | 2027-09-09 |  | 0d |
| 2.1 | Damwand profielen | 15d | 2027-03-15 | 2027-04-06 | 1.1 SS+10d | 0d |
| 2.2 | Bronbemaling | 5d | 2027-04-07 | 2027-04-13 | 2.1 | 167d |
| 2.3 | Ontgraven -2 | 12d | 2027-04-14 | 2027-04-30 | 2.2 | 167d |
| 2.4 | Ontgraven -1 | 10d | 2027-05-03 | 2027-05-19 | 2.3 | 167d |
| 2.5 | Funderingspalen boren | 20d | 2027-05-20 | 2027-06-16 | 2.4 | 167d |
| 2.6 | Funderingsbalken | 10d | 2027-06-17 | 2027-06-30 | 2.5 | 167d |
| 2.7 | Keldervloer P2 | 8d | 2027-07-01 | 2027-07-12 | 2.6 | 167d |
| 2.8 | Keldervloer P1 | 8d | 2027-07-13 | 2027-07-22 | 2.7 | 167d |
| 2.9 | Kelderwanden storten | 12d | 2027-07-23 | 2027-08-30 | 2.8 | 167d |
| 2.10 | Waterdichting kelder | 8d | 2027-08-31 | 2027-09-09 | 2.9 | 167d |
| 3 | **3. Ruwbouw** | 5d | 2027-03-23 | 2027-09-08 |  | 0d |
| 3.1 | Begane grond kolommen & vloer | 10d | 2027-03-23 | 2027-04-07 | 2.1 SS | 0d |
| 3.2 | Verdieping 1 ruwbouw | 8d | 2027-04-08 | 2027-04-19 | 3.1 | 0d |
| 3.3 | Verdieping 2 ruwbouw | 8d | 2027-04-20 | 2027-04-30 | 3.2 | 0d |
| 3.4 | Verdieping 3 ruwbouw | 8d | 2027-05-03 | 2027-05-14 | 3.3 | 0d |
| 3.5 | Verdieping 4 ruwbouw | 8d | 2027-05-18 | 2027-05-27 | 3.4 | 0d |
| 3.6 | Verdieping 5 ruwbouw | 8d | 2027-05-28 | 2027-06-08 | 3.5 | 0d |
| 3.7 | Verdieping 6 ruwbouw | 8d | 2027-06-09 | 2027-06-18 | 3.6 | 0d |
| 3.8 | Verdieping 7 ruwbouw | 8d | 2027-06-21 | 2027-06-30 | 3.7 | 0d |
| 3.9 | Verdieping 8 ruwbouw | 8d | 2027-07-01 | 2027-07-12 | 3.8 | 0d |
| 3.10 | Trappenhuis kern beton | 20d | 2027-07-08 | 2027-08-25 | 3.9 SS+5d | 0d |
| 3.11 | Dakconstructie staal | 10d | 2027-08-26 | 2027-09-08 | 3.10 | 0d |
| 3.12 | Hoogste punt | 0d | 2027-09-08 | 2027-09-08 | 3.11 | 168d |
| 4 | **4. Gevel** | 5d | 2027-07-21 | 2027-10-21 |  | 0d |
| 4.1 | Vliesgevel montage fase 1 | 15d | 2027-07-21 | 2027-08-31 | 3.11 FS-21d | 0d |
| 4.2 | Vliesgevel montage fase 2 | 15d | 2027-09-01 | 2027-09-21 | 4.1 | 0d |
| 4.3 | Vliesgevel montage fase 3 | 12d | 2027-09-22 | 2027-10-07 | 4.2 | 0d |
| 4.4 | Dakafwerking en installaties | 10d | 2027-10-08 | 2027-10-21 | 4.3, 3.11 FF+2d | 0d |
| 4.5 | Wind- en waterdicht | 0d | 2027-10-21 | 2027-10-21 | 4.4 | 137d |
| 5 | **5. Installaties** | 5d | 2027-10-22 | 2028-02-22 |  | 0d |
| 5.1 | Hoofdverdeelruimte elektra | 10d | 2027-10-22 | 2027-11-04 | 4.4 | 0d |
| 5.2 | Stijgleidingen elektra | 12d | 2027-11-05 | 2027-11-22 | 5.1 | 49d |
| 5.3 | Stijgleidingen W-installatie | 12d | 2027-11-10 | 2027-11-25 | 5.2 SS+3d | 49d |
| 5.4 | Luchtbehandelingskasten | 10d | 2027-11-26 | 2027-12-09 | 5.3 | 49d |
| 5.5 | Kanaalwerk ventilatie | 15d | 2027-12-10 | 2027-12-30 | 5.4 | 49d |
| 5.6 | Sprinklerinstallatie | 10d | 2027-12-31 | 2028-01-13 | 5.5 | 49d |
| 5.7 | Liftinstallatie | 20d | 2028-01-14 | 2028-02-10 | 5.6 | 49d |
| 5.8 | BMS/gebouwbeheer | 8d | 2028-02-11 | 2028-02-22 | 5.7 | 49d |
| 6 | **6. Afbouw** | 5d | 2027-12-30 | 2028-03-22 |  | 0d |
| 6.1 | Systeemwanden kantoren | 15d | 2027-12-30 | 2028-01-19 | 5.1 SS+49d | 0d |
| 6.2 | Verlaagde plafonds | 12d | 2028-01-20 | 2028-02-04 | 6.1 | 0d |
| 6.3 | Verhoogde vloeren | 10d | 2028-02-07 | 2028-02-18 | 6.2 | 0d |
| 6.4 | Sanitaire ruimten | 8d | 2028-02-21 | 2028-03-01 | 6.3 | 0d |
| 6.5 | Keuken/pantry inbouw | 5d | 2028-03-02 | 2028-03-08 | 6.4 | 0d |
| 6.6 | Schilderwerk & afwerking | 10d | 2028-03-09 | 2028-03-22 | 6.5 | 0d |
| 7 | **7. Terrein & Oplevering** | 5d | 2028-03-23 | 2028-05-04 |  | 0d |
| 7.1 | Bestrating & groenvoorziening | 10d | 2028-03-23 | 2028-04-05 | 6.6 | 0d |
| 7.2 | Inrichting entree & lobby | 8d | 2028-04-06 | 2028-04-19 | 7.1 | 0d |
| 7.3 | Testen & inregelen | 10d | 2028-04-20 | 2028-05-04 | 7.2 | 0d |
| 7.4 | Oplevering | 0d | 2028-05-04 | 2028-05-04 | 7.3 | 0d |

## Version 2 (saved 2026-09-28)

Note of the change: chore(voorbeelden): opnieuw gegenereerd met STEP-codering en de nieuwe GlobalIds

Last finish stays 2028-05-04.

Changed:

| ID | Task | Duration | Other |
| --- | --- | --- | --- |
| 1 | **1. Preparation** | 5d → 20d | was named 1. Voorbereiding |
| 1.1 | Set up site |  | was named Bouwplaats inrichten; resources none → Site works contractor |
| 1.2 | Stakeholder management |  | was named Omgevingsmanagement; resources none → Project management |
| 1.3 | Traffic management |  | was named Verkeersmaatregelen; resources none → Site works contractor |
| 1.4 | Piezometer monitoring |  | was named Monitoring peilbuizen; resources none → Geotechnical monitoring contractor |
| 1.5 | Start of construction |  | was named Start bouw |
| 2 | **2. Earthworks & foundations** | 5d → 108d | was named 2. Grondwerk & Fundering |
| 2.1 | Sheet pile sections |  | was named Damwand profielen; resources none → Piling contractor |
| 2.2 | Wellpoint dewatering |  | was named Bronbemaling; resources none → Earthworks contractor |
| 2.3 | Excavate to level -2 |  | was named Ontgraven -2; resources none → Earthworks contractor |
| 2.4 | Excavate to level -1 |  | was named Ontgraven -1; resources none → Earthworks contractor |
| 2.5 | Bore foundation piles |  | was named Funderingspalen boren; resources none → Piling contractor |
| 2.6 | Foundation beams |  | was named Funderingsbalken; resources none → Structural works crew; Steel fixers; Concrete C30/37 |
| 2.7 | Basement floor P2 |  | was named Keldervloer P2; resources none → Structural works crew; Concrete C30/37 |
| 2.8 | Basement floor P1 |  | was named Keldervloer P1; resources none → Structural works crew; Concrete C30/37 |
| 2.9 | Pour basement walls |  | was named Kelderwanden storten; resources none → Structural works crew; Steel fixers; Concrete C30/37 |
| 2.10 | Basement waterproofing |  | was named Waterdichting kelder; resources none → Structural works crew |
| 3 | **3. Structural works** | 5d → 101d | was named 3. Ruwbouw |
| 3.1 | Ground floor columns & slab |  | was named Begane grond kolommen & vloer; resources none → Structural works crew; Steel fixers; Tower crane; Concrete C30/37 |
| 3.2 | Floor 1 structural works |  | was named Verdieping 1 ruwbouw; resources none → Structural works crew; Tower crane; Concrete C30/37 |
| 3.3 | Floor 2 structural works |  | was named Verdieping 2 ruwbouw; resources none → Structural works crew; Tower crane; Concrete C30/37 |
| 3.4 | Floor 3 structural works |  | was named Verdieping 3 ruwbouw; resources none → Structural works crew; Tower crane; Concrete C30/37 |
| 3.5 | Floor 4 structural works |  | was named Verdieping 4 ruwbouw; resources none → Structural works crew; Tower crane; Concrete C30/37 |
| 3.6 | Floor 5 structural works |  | was named Verdieping 5 ruwbouw; resources none → Structural works crew; Tower crane; Concrete C30/37 |
| 3.7 | Floor 6 structural works |  | was named Verdieping 6 ruwbouw; resources none → Structural works crew; Tower crane; Concrete C30/37 |
| 3.8 | Floor 7 structural works |  | was named Verdieping 7 ruwbouw; resources none → Structural works crew; Tower crane; Concrete C30/37 |
| 3.9 | Floor 8 structural works |  | was named Verdieping 8 ruwbouw; resources none → Structural works crew; Tower crane; Concrete C30/37 |
| 3.10 | Concrete stair and lift core |  | was named Trappenhuis kern beton; resources none → Core formwork gang; Steel fixers; Concrete C30/37 |
| 3.11 | Steel roof structure |  | was named Dakconstructie staal; resources none → Structural steel contractor; Tower crane |
| 3.12 | Topping out |  | was named Hoogste punt |
| 4 | **4. Facade** | 5d → 52d | was named 4. Gevel |
| 4.1 | Curtain wall installation, phase 1 |  | was named Vliesgevel montage fase 1; resources none → Facade contractor |
| 4.2 | Curtain wall installation, phase 2 |  | was named Vliesgevel montage fase 2; resources none → Facade contractor |
| 4.3 | Curtain wall installation, phase 3 |  | was named Vliesgevel montage fase 3; resources none → Facade contractor |
| 4.4 | Roof finishes and services |  | was named Dakafwerking en installaties; resources none → Roofing contractor |
| 4.5 | Wind and weathertight |  | was named Wind- en waterdicht |
| 5 | **5. Building services** | 5d → 88d | was named 5. Installaties |
| 5.1 | Main electrical switchroom |  | was named Hoofdverdeelruimte elektra; resources none → Electricians |
| 5.2 | Risers, electrical |  | was named Stijgleidingen elektra; resources none → Electricians |
| 5.3 | Risers, mechanical services |  | was named Stijgleidingen W-installatie; resources none → Mechanical fitters |
| 5.4 | Air handling units |  | was named Luchtbehandelingskasten; resources none → Mechanical fitters |
| 5.5 | Ventilation ductwork |  | was named Kanaalwerk ventilatie; resources none → Mechanical fitters |
| 5.6 | Sprinkler installation |  | was named Sprinklerinstallatie; resources none → Mechanical fitters |
| 5.7 | Lift installation |  | was named Liftinstallatie; resources none → Lift contractor |
| 5.8 | BMS/building management |  | was named BMS/gebouwbeheer; resources none → Electricians |
| 6 | **6. Fit-out** | 5d → 60d | was named 6. Afbouw |
| 6.1 | Office system partitions |  | was named Systeemwanden kantoren; resources none → Fit-out crew |
| 6.2 | Suspended ceilings |  | was named Verlaagde plafonds; resources none → Fit-out crew |
| 6.3 | Raised floors |  | was named Verhoogde vloeren; resources none → Fit-out crew |
| 6.4 | Sanitary rooms |  | was named Sanitaire ruimten; resources none → Fit-out crew; Mechanical fitters |
| 6.5 | Kitchen/pantry fit-out |  | was named Keuken/pantry inbouw; resources none → Fit-out crew |
| 6.6 | Painting & finishing |  | was named Schilderwerk & afwerking; resources none → Painters |
| 7 | **7. Site works & handover** | 5d → 28d | was named 7. Terrein & Oplevering |
| 7.1 | Paving & landscaping |  | was named Bestrating & groenvoorziening; resources none → Site works contractor |
| 7.2 | Entrance & lobby fit-out |  | was named Inrichting entree & lobby; resources none → Fit-out crew |
| 7.3 | Testing & commissioning |  | was named Testen & inregelen; resources none → Electricians; Mechanical fitters; Project management |
| 7.4 | Handover |  | was named Oplevering |

## Version 3 (saved 2026-10-27)

Note of the change: Behoud huidige werkplaatsing en herstel resourcechecks

Last finish stays 2028-05-04.

Changed:

| ID | Task | Duration |
| --- | --- | --- |
| 1 | **1. Preparation** | 20d → 19d |
