# Bouwplanning v1.0

How a schedule from an IFC model changed from version to version. A marks actual dates.

## Version 1 (saved 2026-06-05)

Note of the change: fix(examples): termineer STEP-entiteiten met ';' in generator + hergenereer

| ID | Task | Predecessors |
| --- | --- | --- |
| 1 | **1. Voorbereiding** |  |
| 1.1 | Kabels en leidingen verleggen |  |
| 1.2 | Bouwplaats inrichten | 1.1 |
| 1.3 | Monitoring omgeving | 1.2 |
| 1.4 | Verkeersmaatregelen | 1.3 |
| 1.5 | Start bouw | 1.4 |
| 2 | **2. Bouwkuip** |  |
| 2.1 | Diepwanden uitvoeren | 1.5 |
| 2.2 | Stempels niveau 1 | 2.1 |
| 2.3 | Ontgraven laag 1 | 2.2 |
| 2.4 | Stempels niveau 2 | 2.3 |
| 2.5 | Ontgraven laag 2 | 2.4 |
| 2.6 | Stempels niveau 3 | 2.5 |
| 2.7 | Ontgraven laag 3 | 2.6 |
| 2.8 | Onderwaterbeton vloer | 2.7 |
| 2.9 | Droogpompen | 2.8 |
| 2.10 | Bouwkuip droog | 2.9 |
| 3 | **3. Betonconstructie** |  |
| 3.1 | Vloer niveau -3 | 2.10 |
| 3.2 | Kolommen en wanden -3 | 3.1 |
| 3.3 | Vloer niveau -2 | 3.2 |
| 3.4 | Kolommen en wanden -2 | 3.3 |
| 3.5 | Vloer niveau -1 | 3.4 |
| 3.6 | Kolommen en wanden -1 | 3.5 |
| 3.7 | Dek parkeergarage | 3.6 |
| 3.8 | Stempels verwijderen | 3.7 |
| 3.9 | Waterdichting | 3.8 |
| 4 | **4. Installaties** |  |
| 4.1 | Elektra hoofdverdeling | 3.9 |
| 4.2 | Verlichting parkeerlagen | 4.1 |
| 4.3 | Ventilatie en CO-detectie | 4.2 |
| 4.4 | Sprinklerinstallatie | 4.3 |
| 4.5 | Parkeergeleiding systeem | 4.4 |
| 4.6 | Liftinstallatie | 4.5 |
| 4.7 | Brandmeldinstallatie | 4.6 |
| 5 | **5. Afwerking** |  |
| 5.1 | Vloercoating aanbrengen | 4.7 |
| 5.2 | Belijning en bewegwijzering | 5.1 |
| 5.3 | Toegangscontrole slagbomen | 5.2 |
| 5.4 | Nooduitgangen afwerken | 5.3 |
| 6 | **6. Bovengronds herstel** |  |
| 6.1 | Plein opnieuw inrichten | 5.4 |
| 6.2 | Bestrating en groen | 6.1 |
| 6.3 | Verkeersmaatregelen opheffen | 6.2 |
| 6.4 | Oplevering | 6.3 |

## Version 2 (saved 2026-07-03)

Note of the change: feat(examples): generator op echte writer+CPM, 3 showcase-planningen, rijkere topologie

Last finish none → 2027-12-17.

Changed:

| ID | Task | Start | Finish | Duration | Total float | Predecessors |
| --- | --- | --- | --- | --- | --- | --- |
| 1 | **1. Voorbereiding** | none → 2027-03-01 | none → 2027-04-05 | none → 5d | none → 0d |  |
| 1.1 | Kabels en leidingen verleggen | none → 2027-03-01 | none → 2027-03-12 | none → 10d | none → 0d |  |
| 1.2 | Bouwplaats inrichten | none → 2027-03-15 | none → 2027-03-19 | none → 5d | none → 165d |  |
| 1.3 | Monitoring omgeving | none → 2027-03-22 | none → 2027-03-24 | none → 3d | none → 165d |  |
| 1.4 | Verkeersmaatregelen | none → 2027-03-25 | none → 2027-04-02 | none → 5d | none → 165d |  |
| 1.5 | Start bouw | none → 2027-04-05 | none → 2027-04-05 | none → 0d | none → 165d |  |
| 2 | **2. Bouwkuip** | none → 2027-03-17 | none → 2027-08-16 | none → 5d | none → 0d |  |
| 2.1 | Diepwanden uitvoeren | none → 2027-03-17 | none → 2027-04-15 | none → 20d | none → 0d | 1.5 → 1.1 SS+12d |
| 2.2 | Stempels niveau 1 | none → 2027-04-16 | none → 2027-04-28 | none → 8d | none → 89d |  |
| 2.3 | Ontgraven laag 1 | none → 2027-04-29 | none → 2027-05-14 | none → 10d | none → 89d |  |
| 2.4 | Stempels niveau 2 | none → 2027-05-18 | none → 2027-05-27 | none → 8d | none → 89d |  |
| 2.5 | Ontgraven laag 2 | none → 2027-05-28 | none → 2027-06-10 | none → 10d | none → 89d |  |
| 2.6 | Stempels niveau 3 | none → 2027-06-11 | none → 2027-06-22 | none → 8d | none → 89d |  |
| 2.7 | Ontgraven laag 3 | none → 2027-06-23 | none → 2027-07-06 | none → 10d | none → 89d |  |
| 2.8 | Onderwaterbeton vloer | none → 2027-07-07 | none → 2027-07-16 | none → 8d | none → 89d |  |
| 2.9 | Droogpompen | none → 2027-07-19 | none → 2027-07-23 | none → 5d | none → 89d |  |
| 2.10 | Bouwkuip droog | none → 2027-08-16 | none → 2027-08-16 | none → 0d | none → 89d |  |
| 3 | **3. Betonconstructie** | none → 2027-03-31 | none → 2027-08-20 | none → 5d | none → 0d |  |
| 3.1 | Vloer niveau -3 | none → 2027-03-31 | none → 2027-04-13 | none → 10d | none → 0d | 2.10 → 2.1 SS |
| 3.2 | Kolommen en wanden -3 | none → 2027-04-14 | none → 2027-04-23 | none → 8d | none → 0d |  |
| 3.3 | Vloer niveau -2 | none → 2027-04-26 | none → 2027-05-12 | none → 10d | none → 0d |  |
| 3.4 | Kolommen en wanden -2 | none → 2027-05-13 | none → 2027-05-25 | none → 8d | none → 0d |  |
| 3.5 | Vloer niveau -1 | none → 2027-05-26 | none → 2027-06-08 | none → 10d | none → 0d |  |
| 3.6 | Kolommen en wanden -1 | none → 2027-06-09 | none → 2027-06-18 | none → 8d | none → 0d |  |
| 3.7 | Dek parkeergarage | none → 2027-06-21 | none → 2027-07-06 | none → 12d | none → 0d |  |
| 3.8 | Stempels verwijderen | none → 2027-07-07 | none → 2027-07-16 | none → 8d | none → 0d |  |
| 3.9 | Waterdichting | none → 2027-07-19 | none → 2027-08-20 | none → 10d | none → 0d |  |
| 4 | **4. Installaties** | none → 2027-07-08 | none → 2027-10-18 | none → 5d | none → 0d |  |
| 4.1 | Elektra hoofdverdeling | none → 2027-07-08 | none → 2027-07-19 | none → 8d | none → 0d | 3.9 → 3.9 FS-17d |
| 4.2 | Verlichting parkeerlagen | none → 2027-07-20 | none → 2027-08-23 | none → 10d | none → 0d |  |
| 4.3 | Ventilatie en CO-detectie | none → 2027-08-24 | none → 2027-09-06 | none → 10d | none → 0d |  |
| 4.4 | Sprinklerinstallatie | none → 2027-09-07 | none → 2027-09-16 | none → 8d | none → 0d |  |
| 4.5 | Parkeergeleiding systeem | none → 2027-09-17 | none → 2027-09-23 | none → 5d | none → 0d |  |
| 4.6 | Liftinstallatie | none → 2027-09-24 | none → 2027-10-11 | none → 12d | none → 0d |  |
| 4.7 | Brandmeldinstallatie | none → 2027-10-12 | none → 2027-10-18 | none → 5d | none → 0d | 4.6 → 4.6, 3.9 FF+2d |
| 5 | **5. Afwerking** | none → 2027-10-19 | none → 2027-11-18 | none → 5d | none → 0d |  |
| 5.1 | Vloercoating aanbrengen | none → 2027-10-19 | none → 2027-10-28 | none → 8d | none → 0d |  |
| 5.2 | Belijning en bewegwijzering | none → 2027-10-29 | none → 2027-11-04 | none → 5d | none → 0d |  |
| 5.3 | Toegangscontrole slagbomen | none → 2027-11-05 | none → 2027-11-11 | none → 5d | none → 0d |  |
| 5.4 | Nooduitgangen afwerken | none → 2027-11-12 | none → 2027-11-18 | none → 5d | none → 0d |  |
| 6 | **6. Bovengronds herstel** | none → 2027-11-19 | none → 2027-12-17 | none → 5d | none → 0d |  |
| 6.1 | Plein opnieuw inrichten | none → 2027-11-19 | none → 2027-12-02 | none → 10d | none → 0d |  |
| 6.2 | Bestrating en groen | none → 2027-12-03 | none → 2027-12-14 | none → 8d | none → 0d |  |
| 6.3 | Verkeersmaatregelen opheffen | none → 2027-12-15 | none → 2027-12-17 | none → 3d | none → 0d |  |
| 6.4 | Oplevering | none → 2027-12-17 | none → 2027-12-17 | none → 0d | none → 0d |  |

## Version 3 (saved 2026-09-04)

Note of the change: Merge pull request #92 from OpenAEC-Foundation/claude/light-mode-colors-6yu5uc

Last finish stays 2027-12-17.

Changed:

| ID | Task | Other |
| --- | --- | --- |
| 1 | **1. Preparation** | was named 1. Voorbereiding |
| 1.1 | Divert cables and pipes | was named Kabels en leidingen verleggen |
| 1.2 | Set up site | was named Bouwplaats inrichten |
| 1.3 | Environmental monitoring | was named Monitoring omgeving |
| 1.4 | Traffic management | was named Verkeersmaatregelen |
| 1.5 | Start of construction | was named Start bouw |
| 2 | **2. Excavation pit** | was named 2. Bouwkuip |
| 2.1 | Construct diaphragm walls | was named Diepwanden uitvoeren |
| 2.2 | Struts, level 1 | was named Stempels niveau 1 |
| 2.3 | Excavate layer 1 | was named Ontgraven laag 1 |
| 2.4 | Struts, level 2 | was named Stempels niveau 2 |
| 2.5 | Excavate layer 2 | was named Ontgraven laag 2 |
| 2.6 | Struts, level 3 | was named Stempels niveau 3 |
| 2.7 | Excavate layer 3 | was named Ontgraven laag 3 |
| 2.8 | Underwater concrete slab | was named Onderwaterbeton vloer |
| 2.9 | Pump dry | was named Droogpompen |
| 2.10 | Excavation pit dry | was named Bouwkuip droog |
| 3 | **3. Concrete structure** | was named 3. Betonconstructie |
| 3.1 | Slab at level -3 | was named Vloer niveau -3 |
| 3.2 | Columns and walls, level -3 | was named Kolommen en wanden -3 |
| 3.3 | Slab at level -2 | was named Vloer niveau -2 |
| 3.4 | Columns and walls, level -2 | was named Kolommen en wanden -2 |
| 3.5 | Slab at level -1 | was named Vloer niveau -1 |
| 3.6 | Columns and walls, level -1 | was named Kolommen en wanden -1 |
| 3.7 | Car park deck | was named Dek parkeergarage |
| 3.8 | Remove struts | was named Stempels verwijderen |
| 3.9 | Waterproofing | was named Waterdichting |
| 4 | **4. Building services** | was named 4. Installaties |
| 4.1 | Main electrical distribution | was named Elektra hoofdverdeling |
| 4.2 | Lighting, parking levels | was named Verlichting parkeerlagen |
| 4.3 | Ventilation and CO detection | was named Ventilatie en CO-detectie |
| 4.4 | Sprinkler installation | was named Sprinklerinstallatie |
| 4.5 | Parking guidance system | was named Parkeergeleiding systeem |
| 4.6 | Lift installation | was named Liftinstallatie |
| 4.7 | Fire alarm system | was named Brandmeldinstallatie |
| 5 | **5. Finishing** | was named 5. Afwerking |
| 5.1 | Apply floor coating | was named Vloercoating aanbrengen |
| 5.2 | Road marking and signage | was named Belijning en bewegwijzering |
| 5.3 | Access control barriers | was named Toegangscontrole slagbomen |
| 5.4 | Finish emergency exits | was named Nooduitgangen afwerken |
| 6 | **6. Surface reinstatement** | was named 6. Bovengronds herstel |
| 6.1 | Redevelop the square | was named Plein opnieuw inrichten |
| 6.2 | Paving and landscaping | was named Bestrating en groen |
| 6.3 | Remove traffic management | was named Verkeersmaatregelen opheffen |
| 6.4 | Handover | was named Oplevering |

## Version 4 (saved 2026-09-28)

Note of the change: chore(voorbeelden): opnieuw gegenereerd met STEP-codering en de nieuwe GlobalIds

Last finish stays 2027-12-17.

Changed:

| ID | Task | Duration |
| --- | --- | --- |
| 1 | **1. Preparation** | 5d → 24d |
| 2 | **2. Excavation pit** | 5d → 88d |
| 3 | **3. Concrete structure** | 5d → 84d |
| 4 | **4. Building services** | 5d → 58d |
| 5 | **5. Finishing** | 5d → 23d |
| 6 | **6. Surface reinstatement** | 5d → 21d |

## Version 5 (saved 2026-10-27)

Note of the change: Merge remote-tracking branch 'origin/main' into review-ready-643-20261027

Last finish stays 2027-12-17.

Changed:

| ID | Task | Duration |
| --- | --- | --- |
| 1 | **1. Preparation** | 24d → 23d |
| 2 | **2. Excavation pit** | 88d → 87d |
