# Bouwplanning v1.0

How a schedule from an IFC model changed from version to version. A marks actual dates.

## Version 1 (saved 2026-06-05)

Note of the change: fix(examples): termineer STEP-entiteiten met ';' in generator + hergenereer

| ID | Task | Predecessors |
| --- | --- | --- |
| 1 | **1. Voorbereiding** |  |
| 1.1 | Bouwplaats inrichten |  |
| 1.2 | Bomen beschermen | 1.1 |
| 1.3 | Start bouw | 1.2 |
| 2 | **2. Grondwerk & Fundering** |  |
| 2.1 | Ontgraven zwembad | 1.3 |
| 2.2 | Funderingssleuven graven | 2.1 |
| 2.3 | Fundering storten | 2.2 |
| 2.4 | Riolering en drainage | 2.3 |
| 2.5 | Kruipruimte opvullen | 2.4 |
| 2.6 | Begane grondvloer | 2.5 |
| 3 | **3. Ruwbouw** |  |
| 3.1 | Begane grond metselwerk | 2.6 |
| 3.2 | Verdiepingsvloer storten | 3.1 |
| 3.3 | Verdieping metselwerk | 3.2 |
| 3.4 | Dakconstructie hout | 3.3 |
| 3.5 | Dakpannen | 3.4 |
| 3.6 | Schoorstenen metsen | 3.5 |
| 3.7 | Hoogste punt | 3.6 |
| 4 | **4. Gevel & Dak** |  |
| 4.1 | Gevelisolatie | 3.7 |
| 4.2 | Kozijnen hardhouten | 4.1 |
| 4.3 | Beglazing HR+++ | 4.2 |
| 4.4 | Zinken goten en HWA | 4.3 |
| 4.5 | Wind- en waterdicht | 4.4 |
| 5 | **5. Installaties** |  |
| 5.1 | Elektra eerste fix | 4.5 |
| 5.2 | Loodgieter eerste fix | 5.1 SS |
| 5.3 | Vloerverwarming | 5.2 |
| 5.4 | Domotica systeem | 5.3 |
| 5.5 | Zwembadtechniek | 5.4 |
| 5.6 | Warmtepomp en bodem | 5.5 |
| 5.7 | Zonnepanelen | 5.6 |
| 6 | **6. Afbouw** |  |
| 6.1 | Stucwerk wanden en plafonds | 5.7 |
| 6.2 | Tegelwerk badkamers luxe | 6.1 |
| 6.3 | Natuurstenen vloeren | 6.2 |
| 6.4 | Eiken trappen | 6.3 |
| 6.5 | Maatwerk keuken | 6.4 |
| 6.6 | Schilderwerk | 6.5 |
| 6.7 | Sanitair afmonteren | 6.6 |
| 7 | **7. Buitenwerk & Oplevering** |  |
| 7.1 | Zwembad afbouwen | 6.7 |
| 7.2 | Tuinaanleg | 7.1 |
| 7.3 | Oprit en bestrating | 7.2 |
| 7.4 | Schoonmaak | 7.3 |
| 7.5 | Oplevering | 7.4 |

## Version 2 (saved 2026-07-07)

Note of the change: feat(2.10): showcase-schema-uitbreidingen + KLEIN/MIDDEL-showcases (onderdeel 4, golf 1)

Last finish none → 2027-12-01.

Changed:

| ID | Task | Start | Finish | Duration | Total float | Predecessors |
| --- | --- | --- | --- | --- | --- | --- |
| 1 | **1. Voorbereiding** | none → 2027-03-01 | none → 2027-03-08 | none → 5d | none → 0d |  |
| 1.1 | Bouwplaats inrichten | none → 2027-03-01 | none → 2027-03-03 | none → 3d | none → 0d |  |
| 1.2 | Bomen beschermen | none → 2027-03-04 | none → 2027-03-05 | none → 2d | none → 171d |  |
| 1.3 | Start bouw | none → 2027-03-08 | none → 2027-03-08 | none → 0d | none → 171d |  |
| 2 | **2. Grondwerk & Fundering** | none → 2027-03-04 | none → 2027-04-22 | none → 5d | none → 0d |  |
| 2.1 | Ontgraven zwembad | none → 2027-03-04 | none → 2027-03-15 | none → 8d | none → 0d | 1.3 → 1.1 SS+3d |
| 2.2 | Funderingssleuven graven | none → 2027-03-16 | none → 2027-03-22 | none → 5d | none → 140d |  |
| 2.3 | Fundering storten | none → 2027-03-23 | none → 2027-04-05 | none → 8d | none → 140d |  |
| 2.4 | Riolering en drainage | none → 2027-04-06 | none → 2027-04-12 | none → 5d | none → 140d |  |
| 2.5 | Kruipruimte opvullen | none → 2027-04-13 | none → 2027-04-15 | none → 3d | none → 140d |  |
| 2.6 | Begane grondvloer | none → 2027-04-16 | none → 2027-04-22 | none → 5d | none → 140d |  |
| 3 | **3. Ruwbouw** | none → 2027-03-09 | none → 2027-05-18 | none → 5d | none → 0d |  |
| 3.1 | Begane grond metselwerk | none → 2027-03-09 | none → 2027-03-24 | none → 12d | none → 0d | 2.6 → 2.1 SS |
| 3.2 | Verdiepingsvloer storten | none → 2027-03-25 | none → 2027-04-02 | none → 5d | none → 0d |  |
| 3.3 | Verdieping metselwerk | none → 2027-04-05 | none → 2027-04-16 | none → 10d | none → 0d |  |
| 3.4 | Dakconstructie hout | none → 2027-04-19 | none → 2027-05-03 | none → 10d | none → 0d |  |
| 3.5 | Dakpannen | none → 2027-05-04 | none → 2027-05-12 | none → 5d | none → 0d |  |
| 3.6 | Schoorstenen metsen | none → 2027-05-13 | none → 2027-05-18 | none → 3d | none → 0d |  |
| 3.7 | Hoogste punt | none → 2027-05-18 | none → 2027-05-18 | none → 0d | none → 126d |  |
| 4 | **4. Gevel & Dak** | none → 2027-05-03 | none → 2027-06-10 | none → 5d | none → 0d |  |
| 4.1 | Gevelisolatie | none → 2027-05-03 | none → 2027-05-14 | none → 8d | none → 0d | 3.7 → 3.6 FS-9d |
| 4.2 | Kozijnen hardhouten | none → 2027-05-18 | none → 2027-05-27 | none → 8d | none → 0d |  |
| 4.3 | Beglazing HR+++ | none → 2027-05-28 | none → 2027-06-03 | none → 5d | none → 0d |  |
| 4.4 | Zinken goten en HWA | none → 2027-06-04 | none → 2027-06-10 | none → 5d | none → 0d | 4.3 → 4.3, 3.6 FF+2d |
| 4.5 | Wind- en waterdicht | none → 2027-06-10 | none → 2027-06-10 | none → 0d | none → 109d |  |
| 5 | **5. Installaties** | none → 2027-06-11 | none → 2027-09-01 | none → 5d | none → 0d |  |
| 5.1 | Elektra eerste fix | none → 2027-06-11 | none → 2027-06-22 | none → 8d | none → 0d | 4.5 → 4.4 |
| 5.2 | Loodgieter eerste fix | none → 2027-06-15 | none → 2027-06-24 | none → 8d | none → 65d | 5.1 SS → 5.1 SS+2d |
| 5.3 | Vloerverwarming | none → 2027-06-25 | none → 2027-07-06 | none → 8d | none → 65d |  |
| 5.4 | Domotica systeem | none → 2027-07-07 | none → 2027-07-13 | none → 5d | none → 65d |  |
| 5.5 | Zwembadtechniek | none → 2027-07-14 | none → 2027-08-17 | none → 10d | none → 65d |  |
| 5.6 | Warmtepomp en bodem | none → 2027-08-18 | none → 2027-08-27 | none → 8d | none → 65d |  |
| 5.7 | Zonnepanelen | none → 2027-08-30 | none → 2027-09-01 | none → 3d | none → 65d |  |
| 6 | **6. Afbouw** | none → 2027-07-16 | none → 2027-10-26 | none → 5d | none → 0d |  |
| 6.1 | Stucwerk wanden en plafonds | none → 2027-07-16 | none → 2027-08-23 | none → 12d | none → 0d | 5.7 → 5.1 SS+25d |
| 6.2 | Tegelwerk badkamers luxe | none → 2027-08-24 | none → 2027-09-06 | none → 10d | none → 0d |  |
| 6.3 | Natuurstenen vloeren | none → 2027-09-07 | none → 2027-09-16 | none → 8d | none → 0d |  |
| 6.4 | Eiken trappen | none → 2027-09-17 | none → 2027-09-23 | none → 5d | none → 0d |  |
| 6.5 | Maatwerk keuken | none → 2027-09-24 | none → 2027-10-05 | none → 8d | none → 0d |  |
| 6.6 | Schilderwerk | none → 2027-10-06 | none → 2027-10-19 | none → 10d | none → 0d |  |
| 6.7 | Sanitair afmonteren | none → 2027-10-20 | none → 2027-10-26 | none → 5d | none → 0d |  |
| 7 | **7. Buitenwerk & Oplevering** | none → 2027-10-27 | none → 2027-12-01 | none → 5d | none → 0d |  |
| 7.1 | Zwembad afbouwen | none → 2027-10-27 | none → 2027-11-05 | none → 8d | none → 0d |  |
| 7.2 | Tuinaanleg | none → 2027-11-08 | none → 2027-11-19 | none → 10d | none → 0d |  |
| 7.3 | Oprit en bestrating | none → 2027-11-22 | none → 2027-11-26 | none → 5d | none → 0d |  |
| 7.4 | Schoonmaak | none → 2027-11-29 | none → 2027-12-01 | none → 3d | none → 0d |  |
| 7.5 | Oplevering | none → 2027-12-01 | none → 2027-12-01 | none → 0d | none → 0d |  |

## Version 3 (saved 2026-09-11)

Note of the change: Merge remote-tracking branch 'origin/main' into t3code/oplossen-issue-27

Last finish stays 2027-12-01.

Changed:

| ID | Task | Other |
| --- | --- | --- |
| 1 | **1. Preparation** | was named 1. Voorbereiding |
| 1.1 | Set up site | was named Bouwplaats inrichten |
| 1.2 | Protect trees | was named Bomen beschermen |
| 1.3 | Start of construction | was named Start bouw |
| 2 | **2. Earthworks & foundations** | was named 2. Grondwerk & Fundering |
| 2.1 | Excavate swimming pool | was named Ontgraven zwembad |
| 2.2 | Excavate foundation trenches | was named Funderingssleuven graven |
| 2.3 | Pour foundations | was named Fundering storten |
| 2.4 | Sewerage and drainage | was named Riolering en drainage |
| 2.5 | Fill crawl space | was named Kruipruimte opvullen |
| 2.6 | Ground floor slab | was named Begane grondvloer |
| 3 | **3. Structural works** | was named 3. Ruwbouw |
| 3.1 | Ground floor masonry | was named Begane grond metselwerk; resources none → Bricklayers |
| 3.2 | Pour upper floor slab | was named Verdiepingsvloer storten |
| 3.3 | Upper floor masonry | was named Verdieping metselwerk; resources none → Bricklayers |
| 3.4 | Timber roof structure | was named Dakconstructie hout; resources none → Carpenters |
| 3.5 | Roof tiles | was named Dakpannen; resources none → Carpenters |
| 3.6 | Build chimneys | was named Schoorstenen metsen; resources none → Bricklayers |
| 3.7 | Topping out | was named Hoogste punt |
| 4 | **4. Facade & roof** | was named 4. Gevel & Dak |
| 4.1 | Facade insulation | was named Gevelisolatie |
| 4.2 | Hardwood window frames | was named Kozijnen hardhouten; resources none → Carpenters |
| 4.3 | Triple glazing HR+++ | was named Beglazing HR+++; resources none → Carpenters |
| 4.4 | Zinc gutters and downpipes | was named Zinken goten en HWA |
| 4.5 | Wind and weathertight | was named Wind- en waterdicht |
| 5 | **5. Building services** | was named 5. Installaties |
| 5.1 | Electrical first fix | was named Elektra eerste fix; resources none → MEP fitters |
| 5.2 | Plumbing first fix | was named Loodgieter eerste fix; resources none → MEP fitters |
| 5.3 | Underfloor heating | was named Vloerverwarming; resources none → MEP fitters |
| 5.4 | Home automation system | was named Domotica systeem; resources none → MEP fitters |
| 5.5 | Pool plant | was named Zwembadtechniek; resources none → MEP fitters |
| 5.6 | Heat pump and ground loop | was named Warmtepomp en bodem; resources none → MEP fitters |
| 5.7 | Solar panels | was named Zonnepanelen; resources none → MEP fitters |
| 6 | **6. Fit-out** | was named 6. Afbouw |
| 6.1 | Plastering, walls and ceilings | was named Stucwerk wanden en plafonds; resources none → Plasterers |
| 6.2 | Luxury bathroom tiling | was named Tegelwerk badkamers luxe; resources none → Tilers |
| 6.3 | Natural stone floors | was named Natuurstenen vloeren; resources none → Tilers |
| 6.4 | Oak staircases | was named Eiken trappen; resources none → Carpenters |
| 6.5 | Bespoke kitchen | was named Maatwerk keuken; resources none → Carpenters |
| 6.6 | Painting | was named Schilderwerk; resources none → Painters |
| 6.7 | Second-fix sanitary fittings | was named Sanitair afmonteren |
| 7 | **7. External works & handover** | was named 7. Buitenwerk & Oplevering |
| 7.1 | Complete swimming pool | was named Zwembad afbouwen |
| 7.2 | Garden landscaping | was named Tuinaanleg |
| 7.3 | Driveway and paving | was named Oprit en bestrating |
| 7.4 | Cleaning | was named Schoonmaak |
| 7.5 | Handover | was named Oplevering |

## Version 4 (saved 2026-09-28)

Note of the change: Merge pull request #241 from OpenAEC-Foundation/claude/future-bottlenecks-bugs-1ybv83

Last finish stays 2027-12-01.

Changed:

| ID | Task | Duration |
| --- | --- | --- |
| 1 | **1. Preparation** | 5d → 6d |
| 2 | **2. Earthworks & foundations** | 5d → 34d |
| 3 | **3. Structural works** | 5d → 45d |
| 4 | **4. Facade & roof** | 5d → 26d |
| 5 | **5. Building services** | 5d → 44d |
| 6 | **6. Fit-out** | 5d → 58d |
| 7 | **7. External works & handover** | 5d → 26d |
