# Bouwplanning v1.0

How a schedule from an IFC model changed from version to version. A marks actual dates.

## Version 1 (saved 2026-06-05)

Note of the change: fix(examples): termineer STEP-entiteiten met ';' in generator + hergenereer

| ID | Task | Predecessors |
| --- | --- | --- |
| 1 | **1. Voorbereiding** |  |
| 1.1 | Terrein bouwrijp maken |  |
| 1.2 | Nutsaansluitingen 10kV | 1.1 |
| 1.3 | Security hekwerk tijdelijk | 1.2 |
| 1.4 | Start bouw | 1.3 |
| 2 | **2. Fundering** |  |
| 2.1 | Heien funderingspalen | 1.4 |
| 2.2 | Funderingsbalken | 2.1 |
| 2.3 | Vloer op palen storten | 2.2 |
| 2.4 | Kabelgoten in vloer | 2.3 |
| 3 | **3. Constructie** |  |
| 3.1 | Prefab betonwanden | 2.4 |
| 3.2 | Staalconstructie dak | 3.1 |
| 3.3 | Dakpanelen sandwich | 3.2 |
| 3.4 | Verhoogde computervloer | 3.3 |
| 3.5 | Hoogste punt | 3.4 |
| 4 | **4. Gevel & Waterdicht** |  |
| 4.1 | Gevelisolatie en beplating | 3.5 |
| 4.2 | Laadperrons en deuren | 4.1 |
| 4.3 | Waterdichting dak | 4.2 |
| 4.4 | Wind- en waterdicht | 4.3 |
| 5 | **5. Elektra & Koeling** |  |
| 5.1 | Transformatoren 10kV | 4.4 |
| 5.2 | UPS systemen | 5.1 |
| 5.3 | Noodstroomgeneratoren | 5.2 |
| 5.4 | Hoofdverdeling en PDU | 5.3 |
| 5.5 | Koelmachines | 5.4 |
| 5.6 | CRAH units datahallen | 5.5 |
| 5.7 | Koeltorens buiten | 5.6 |
| 6 | **6. ICT & Beveiliging** |  |
| 6.1 | Glasvezel inkomend | 5.7 |
| 6.2 | Patchpanelen en bekabeling | 6.1 |
| 6.3 | Brandblussysteem gas | 6.2 |
| 6.4 | Toegangscontrole biometrisch | 6.3 |
| 6.5 | CCTV systeem | 6.4 |
| 6.6 | BMS monitoring | 6.5 |
| 7 | **7. Oplevering** |  |
| 7.1 | Testen failover scenario | 6.6 |
| 7.2 | Terreinafwerking | 7.1 |
| 7.3 | Certificering Tier III | 7.2 |
| 7.4 | Oplevering | 7.3 |

## Version 2 (saved 2026-07-07)

Note of the change: feat(2.10): showcase-schema-uitbreidingen + KLEIN/MIDDEL-showcases (onderdeel 4, golf 1)

Last finish none → 2027-10-15.

Changed:

| ID | Task | Start | Finish | Duration | Total float | Predecessors |
| --- | --- | --- | --- | --- | --- | --- |
| 1 | **1. Voorbereiding** | none → 2027-03-01 | none → 2027-04-01 | none → 5d | none → 0d |  |
| 1.1 | Terrein bouwrijp maken | none → 2027-03-01 | none → 2027-03-10 | none → 8d | none → 0d |  |
| 1.2 | Nutsaansluitingen 10kV | none → 2027-03-11 | none → 2027-03-24 | none → 10d | none → 122d |  |
| 1.3 | Security hekwerk tijdelijk | none → 2027-03-25 | none → 2027-03-31 | none → 3d | none → 122d |  |
| 1.4 | Start bouw | none → 2027-04-01 | none → 2027-04-01 | none → 0d | none → 122d |  |
| 2 | **2. Fundering** | none → 2027-03-16 | none → 2027-04-30 | none → 5d | none → 0d |  |
| 2.1 | Heien funderingspalen | none → 2027-03-16 | none → 2027-03-31 | none → 10d | none → 0d | 1.4 → 1.1 SS+11d |
| 2.2 | Funderingsbalken | none → 2027-04-01 | none → 2027-04-12 | none → 8d | none → 102d |  |
| 2.3 | Vloer op palen storten | none → 2027-04-13 | none → 2027-04-22 | none → 8d | none → 102d |  |
| 2.4 | Kabelgoten in vloer | none → 2027-04-23 | none → 2027-04-30 | none → 5d | none → 102d |  |
| 3 | **3. Constructie** | none → 2027-03-22 | none → 2027-05-20 | none → 5d | none → 0d |  |
| 3.1 | Prefab betonwanden | none → 2027-03-22 | none → 2027-04-08 | none → 12d | none → 0d | 2.4 → 2.1 SS |
| 3.2 | Staalconstructie dak | none → 2027-04-09 | none → 2027-04-20 | none → 8d | none → 0d |  |
| 3.3 | Dakpanelen sandwich | none → 2027-04-21 | none → 2027-05-03 | none → 8d | none → 0d |  |
| 3.4 | Verhoogde computervloer | none → 2027-05-04 | none → 2027-05-20 | none → 10d | none → 0d |  |
| 3.5 | Hoogste punt | none → 2027-05-20 | none → 2027-05-20 | none → 0d | none → 91d |  |
| 4 | **4. Gevel & Waterdicht** | none → 2027-05-10 | none → 2027-06-07 | none → 5d | none → 0d |  |
| 4.1 | Gevelisolatie en beplating | none → 2027-05-10 | none → 2027-05-24 | none → 10d | none → 0d | 3.5 → 3.4 FS-8d |
| 4.2 | Laadperrons en deuren | none → 2027-05-25 | none → 2027-05-31 | none → 5d | none → 0d |  |
| 4.3 | Waterdichting dak | none → 2027-06-01 | none → 2027-06-07 | none → 5d | none → 0d | 4.2 → 4.2, 3.4 FF+2d |
| 4.4 | Wind- en waterdicht | none → 2027-06-07 | none → 2027-06-07 | none → 0d | none → 79d |  |
| 5 | **5. Elektra & Koeling** | none → 2027-06-08 | none → 2027-09-22 | none → 5d | none → 0d |  |
| 5.1 | Transformatoren 10kV | none → 2027-06-08 | none → 2027-06-17 | none → 8d | none → 0d | 4.4 → 4.3 |
| 5.2 | UPS systemen | none → 2027-06-18 | none → 2027-07-01 | none → 10d | none → 17d |  |
| 5.3 | Noodstroomgeneratoren | none → 2027-07-02 | none → 2027-07-13 | none → 8d | none → 17d |  |
| 5.4 | Hoofdverdeling en PDU | none → 2027-07-14 | none → 2027-08-17 | none → 10d | none → 17d |  |
| 5.5 | Koelmachines | none → 2027-08-18 | none → 2027-08-31 | none → 10d | none → 17d |  |
| 5.6 | CRAH units datahallen | none → 2027-09-01 | none → 2027-09-10 | none → 8d | none → 17d |  |
| 5.7 | Koeltorens buiten | none → 2027-09-13 | none → 2027-09-22 | none → 8d | none → 17d |  |
| 6 | **6. ICT & Beveiliging** | none → 2027-07-21 | none → 2027-09-24 | none → 5d | none → 0d |  |
| 6.1 | Glasvezel inkomend | none → 2027-07-21 | none → 2027-08-17 | none → 5d | none → 0d | 5.7 → 5.1 SS+31d |
| 6.2 | Patchpanelen en bekabeling | none → 2027-08-18 | none → 2027-08-27 | none → 8d | none → 0d |  |
| 6.3 | Brandblussysteem gas | none → 2027-08-30 | none → 2027-09-03 | none → 5d | none → 0d |  |
| 6.4 | Toegangscontrole biometrisch | none → 2027-09-06 | none → 2027-09-10 | none → 5d | none → 0d |  |
| 6.5 | CCTV systeem | none → 2027-09-13 | none → 2027-09-17 | none → 5d | none → 0d |  |
| 6.6 | BMS monitoring | none → 2027-09-20 | none → 2027-09-24 | none → 5d | none → 0d |  |
| 7 | **7. Oplevering** | none → 2027-09-27 | none → 2027-10-15 | none → 5d | none → 0d |  |
| 7.1 | Testen failover scenario | none → 2027-09-27 | none → 2027-10-01 | none → 5d | none → 0d |  |
| 7.2 | Terreinafwerking | none → 2027-10-04 | none → 2027-10-08 | none → 5d | none → 0d |  |
| 7.3 | Certificering Tier III | none → 2027-10-11 | none → 2027-10-15 | none → 5d | none → 0d |  |
| 7.4 | Oplevering | none → 2027-10-15 | none → 2027-10-15 | none → 0d | none → 0d |  |

## Version 3 (saved 2026-09-11)

Note of the change: Merge branch 't3code/b1c-etappe3' into worktree-agent-abc8cd00eb9e63a01

Last finish stays 2027-10-15.

Changed:

| ID | Task | Other |
| --- | --- | --- |
| 1 | **1. Preparation** | was named 1. Voorbereiding |
| 1.1 | Prepare site for construction | was named Terrein bouwrijp maken |
| 1.2 | 10 kV utility connections | was named Nutsaansluitingen 10kV; resources none → Electricians |
| 1.3 | Temporary security fencing | was named Security hekwerk tijdelijk |
| 1.4 | Start of construction | was named Start bouw |
| 2 | **2. Foundations** | was named 2. Fundering |
| 2.1 | Pile driving, foundation piles | was named Heien funderingspalen |
| 2.2 | Foundation beams | was named Funderingsbalken; resources none → Structural crew |
| 2.3 | Pour slab on piles | was named Vloer op palen storten; resources none → Structural crew |
| 2.4 | Cable trays in floor | was named Kabelgoten in vloer; resources none → Electricians |
| 3 | **3. Structure** | was named 3. Constructie |
| 3.1 | Precast concrete walls | was named Prefab betonwanden; resources none → Mobile crane; Structural crew |
| 3.2 | Structural steel, roof | was named Staalconstructie dak; resources none → Mobile crane; Structural crew |
| 3.3 | Sandwich roof panels | was named Dakpanelen sandwich; resources none → Structural crew |
| 3.4 | Raised computer floor | was named Verhoogde computervloer; resources none → Mechanical fitters |
| 3.5 | Topping out | was named Hoogste punt |
| 4 | **4. Facade & weathertight** | was named 4. Gevel & Waterdicht |
| 4.1 | Facade insulation and cladding | was named Gevelisolatie en beplating; resources none → Structural crew |
| 4.2 | Loading docks and doors | was named Laadperrons en deuren |
| 4.3 | Roof waterproofing | was named Waterdichting dak |
| 4.4 | Wind and weathertight | was named Wind- en waterdicht |
| 5 | **5. Power & cooling** | was named 5. Elektra & Koeling |
| 5.1 | 10 kV transformers | was named Transformatoren 10kV; resources none → Electricians |
| 5.2 | UPS systems | was named UPS systemen; resources none → UPS and generator supplier; Electricians |
| 5.3 | Emergency generators | was named Noodstroomgeneratoren; resources none → UPS and generator supplier; Mechanical fitters |
| 5.4 | Main distribution and PDUs | was named Hoofdverdeling en PDU; resources none → Electricians |
| 5.5 | Chillers | was named Koelmachines; resources none → Cooling contractor; Mechanical fitters |
| 5.6 | CRAH units, data halls | was named CRAH units datahallen; resources none → Cooling contractor; Mechanical fitters |
| 5.7 | External cooling towers | was named Koeltorens buiten; resources none → Cooling contractor |
| 6 | **6. ICT & security** | was named 6. ICT & Beveiliging |
| 6.1 | Incoming fibre optics | was named Glasvezel inkomend; resources none → ICT cabling technicians |
| 6.2 | Patch panels and cabling | was named Patchpanelen en bekabeling; resources none → ICT cabling technicians |
| 6.3 | Gas fire suppression system | was named Brandblussysteem gas; resources none → Fire suppression contractor |
| 6.4 | Biometric access control | was named Toegangscontrole biometrisch; resources none → ICT cabling technicians |
| 6.5 | CCTV system | was named CCTV systeem; resources none → ICT cabling technicians |
| 6.6 | BMS monitoring | resources none → ICT cabling technicians; Electricians |
| 7 | **7. Handover** | was named 7. Oplevering |
| 7.1 | Test failover scenario | was named Testen failover scenario; resources none → Commissioning engineer; Electricians |
| 7.2 | Site finishing | was named Terreinafwerking |
| 7.3 | Tier III certification | was named Certificering Tier III; resources none → Commissioning engineer |
| 7.4 | Handover | was named Oplevering |

## Version 4 (saved 2026-09-28)

Note of the change: chore(voorbeelden): opnieuw gegenereerd met STEP-codering en de nieuwe GlobalIds

Last finish stays 2027-10-15.

Changed:

| ID | Task | Duration |
| --- | --- | --- |
| 1 | **1. Preparation** | 5d → 22d |
| 2 | **2. Foundations** | 5d → 31d |
| 3 | **3. Structure** | 5d → 38d |
| 4 | **4. Facade & weathertight** | 5d → 20d |
| 5 | **5. Power & cooling** | 5d → 62d |
| 6 | **6. ICT & security** | 5d → 33d |
| 7 | **7. Handover** | 5d → 15d |
