# Bouwplanning v1.0

How a schedule from an IFC model changed from version to version. A marks actual dates.

## Version 1 (saved 2026-06-05)

Note of the change: fix(examples): termineer STEP-entiteiten met ';' in generator + hergenereer

| ID | Task | Predecessors |
| --- | --- | --- |
| 1 | **1. Voorbereiding** |  |
| 1.1 | Ecologisch onderzoek |  |
| 1.2 | Vergunningen waterbeheer | 1.1 |
| 1.3 | Grondaankoop afronden | 1.2 |
| 1.4 | Bouwwegen aanleggen | 1.3 |
| 1.5 | Depots inrichten | 1.4 |
| 1.6 | Start werkzaamheden | 1.5 |
| 2 | **2. Voorbelasting** |  |
| 2.1 | Grond aanvoeren depot | 1.6 |
| 2.2 | Voorbelasting km 0-1 | 2.1 |
| 2.3 | Voorbelasting km 1-2 | 2.2 SS |
| 2.4 | Voorbelasting km 2-3 | 2.3 |
| 2.5 | Zettingsperiode afwachten | 2.4 |
| 2.6 | Monitoring zettingen | 2.5 SS |
| 3 | **3. Grondlichaam** |  |
| 3.1 | Voorbelasting verwijderen | 2.6 |
| 3.2 | Geotextiel aanbrengen | 3.1 |
| 3.3 | Kleilaag kern opbouwen km 0-2 | 3.2 |
| 3.4 | Kleilaag kern opbouwen km 2-5 | 3.3 |
| 3.5 | Zandkern aanbrengen | 3.4 |
| 3.6 | Profielcontrole inmeten | 3.5 |
| 4 | **4. Bekleding & Erosiebescherming** |  |
| 4.1 | Steenzetting binnentalud | 3.6 |
| 4.2 | Grasmat buitentalud | 4.1 |
| 4.3 | Teenconstructie waterzijde | 4.2 |
| 4.4 | Kreukelberm storten | 4.3 |
| 5 | **5. Kunstwerken** |  |
| 5.1 | Duiker renovatie | 4.4 |
| 5.2 | Gemaal aanpassen | 5.1 |
| 5.3 | Keersluis onderhoud | 5.2 |
| 5.4 | Trappen en overgangen | 5.3 |
| 6 | **6. Afwerking & Herstel** |  |
| 6.1 | Dijkweg herstellen | 5.4 |
| 6.2 | Fietspad aanleggen | 6.1 |
| 6.3 | Ecologisch herstel | 6.2 |
| 6.4 | Hekwerk en bebording | 6.3 |
| 6.5 | Oplevering | 6.4 |

## Version 2 (saved 2026-07-03)

Note of the change: feat(examples): generator op echte writer+CPM, 3 showcase-planningen, rijkere topologie

Last finish none → 2027-10-23.

Changed:

| ID | Task | Start | Finish | Duration | Total float | Predecessors |
| --- | --- | --- | --- | --- | --- | --- |
| 1 | **1. Voorbereiding** | none → 2027-03-01 | none → 2027-04-13 | none → 5d | none → 0d |  |
| 1.1 | Ecologisch onderzoek | none → 2027-03-01 | none → 2027-03-11 | none → 10d | none → 0d |  |
| 1.2 | Vergunningen waterbeheer | none → 2027-03-12 | none → 2027-03-17 | none → 5d | none → 144d |  |
| 1.3 | Grondaankoop afronden | none → 2027-03-18 | none → 2027-03-23 | none → 5d | none → 144d |  |
| 1.4 | Bouwwegen aanleggen | none → 2027-03-24 | none → 2027-04-06 | none → 10d | none → 144d |  |
| 1.5 | Depots inrichten | none → 2027-04-07 | none → 2027-04-12 | none → 5d | none → 144d |  |
| 1.6 | Start werkzaamheden | none → 2027-04-13 | none → 2027-04-13 | none → 0d | none → 144d |  |
| 2 | **2. Voorbelasting** | none → 2027-03-22 | none → 2027-06-05 | none → 5d | none → 0d |  |
| 2.1 | Grond aanvoeren depot | none → 2027-03-22 | none → 2027-04-09 | none → 15d | none → 0d | 1.6 → 1.1 SS+18d |
| 2.2 | Voorbelasting km 0-1 | none → 2027-04-10 | none → 2027-04-21 | none → 10d | none → 102d |  |
| 2.3 | Voorbelasting km 1-2 | none → 2027-04-16 | none → 2027-04-28 | none → 10d | none → 102d | 2.2 SS → 2.2 SS+5d |
| 2.4 | Voorbelasting km 2-3 | none → 2027-04-29 | none → 2027-05-12 | none → 10d | none → 102d |  |
| 2.5 | Zettingsperiode afwachten | none → 2027-05-13 | none → 2027-06-05 | none → 20d | none → 102d |  |
| 2.6 | Monitoring zettingen | none → 2027-05-13 | none → 2027-06-05 | none → 20d | none → 102d |  |
| 3 | **3. Grondlichaam** | none → 2027-03-31 | none → 2027-06-18 | none → 5d | none → 0d |  |
| 3.1 | Voorbelasting verwijderen | none → 2027-03-31 | none → 2027-04-10 | none → 10d | none → 0d | 2.6 → 2.1 SS |
| 3.2 | Geotextiel aanbrengen | none → 2027-04-12 | none → 2027-04-20 | none → 8d | none → 0d |  |
| 3.3 | Kleilaag kern opbouwen km 0-2 | none → 2027-04-21 | none → 2027-05-11 | none → 15d | none → 0d |  |
| 3.4 | Kleilaag kern opbouwen km 2-5 | none → 2027-05-12 | none → 2027-05-29 | none → 15d | none → 0d |  |
| 3.5 | Zandkern aanbrengen | none → 2027-05-31 | none → 2027-06-12 | none → 12d | none → 0d |  |
| 3.6 | Profielcontrole inmeten | none → 2027-06-14 | none → 2027-06-18 | none → 5d | none → 0d |  |
| 4 | **4. Bekleding & Erosiebescherming** | none → 2027-06-04 | none → 2027-07-20 | none → 5d | none → 0d |  |
| 4.1 | Steenzetting binnentalud | none → 2027-06-04 | none → 2027-06-17 | none → 12d | none → 0d | 3.6 → 3.6 FS-13d |
| 4.2 | Grasmat buitentalud | none → 2027-06-18 | none → 2027-06-29 | none → 10d | none → 0d |  |
| 4.3 | Teenconstructie waterzijde | none → 2027-06-30 | none → 2027-07-10 | none → 10d | none → 0d |  |
| 4.4 | Kreukelberm storten | none → 2027-07-12 | none → 2027-07-20 | none → 8d | none → 0d | 4.3 → 4.3, 3.6 FF+2d |
| 5 | **5. Kunstwerken** | none → 2027-07-21 | none → 2027-09-15 | none → 5d | none → 0d |  |
| 5.1 | Duiker renovatie | none → 2027-07-21 | none → 2027-08-21 | none → 10d | none → 0d |  |
| 5.2 | Gemaal aanpassen | none → 2027-08-23 | none → 2027-08-31 | none → 8d | none → 0d |  |
| 5.3 | Keersluis onderhoud | none → 2027-09-01 | none → 2027-09-06 | none → 5d | none → 0d |  |
| 5.4 | Trappen en overgangen | none → 2027-09-07 | none → 2027-09-15 | none → 8d | none → 0d |  |
| 6 | **6. Afwerking & Herstel** | none → 2027-09-16 | none → 2027-10-23 | none → 5d | none → 0d |  |
| 6.1 | Dijkweg herstellen | none → 2027-09-16 | none → 2027-09-27 | none → 10d | none → 0d |  |
| 6.2 | Fietspad aanleggen | none → 2027-09-28 | none → 2027-10-06 | none → 8d | none → 0d |  |
| 6.3 | Ecologisch herstel | none → 2027-10-07 | none → 2027-10-18 | none → 10d | none → 0d |  |
| 6.4 | Hekwerk en bebording | none → 2027-10-19 | none → 2027-10-23 | none → 5d | none → 0d |  |
| 6.5 | Oplevering | none → 2027-10-23 | none → 2027-10-23 | none → 0d | none → 0d |  |

## Version 3 (saved 2026-09-04)

Note of the change: Merge main (f16bfff7) in de XER/Primavera-importetappe

Last finish stays 2027-10-23.

Changed:

| ID | Task | Other |
| --- | --- | --- |
| 1 | **1. Preparation** | was named 1. Voorbereiding |
| 1.1 | Ecological survey | was named Ecologisch onderzoek |
| 1.2 | Water management permits | was named Vergunningen waterbeheer |
| 1.3 | Complete land acquisition | was named Grondaankoop afronden |
| 1.4 | Construct site roads | was named Bouwwegen aanleggen |
| 1.5 | Set up depots | was named Depots inrichten |
| 1.6 | Start of works | was named Start werkzaamheden |
| 2 | **2. Preloading** | was named 2. Voorbelasting |
| 2.1 | Deliver soil to depot | was named Grond aanvoeren depot |
| 2.2 | Preloading, km 0-1 | was named Voorbelasting km 0-1 |
| 2.3 | Preloading, km 1-2 | was named Voorbelasting km 1-2 |
| 2.4 | Preloading, km 2-3 | was named Voorbelasting km 2-3 |
| 2.5 | Await settlement period | was named Zettingsperiode afwachten |
| 2.6 | Settlement monitoring | was named Monitoring zettingen |
| 3 | **3. Embankment** | was named 3. Grondlichaam |
| 3.1 | Remove preloading | was named Voorbelasting verwijderen |
| 3.2 | Install geotextile | was named Geotextiel aanbrengen |
| 3.3 | Build up clay core, km 0-2 | was named Kleilaag kern opbouwen km 0-2 |
| 3.4 | Build up clay core, km 2-5 | was named Kleilaag kern opbouwen km 2-5 |
| 3.5 | Place sand core | was named Zandkern aanbrengen |
| 3.6 | Survey profile check | was named Profielcontrole inmeten |
| 4 | **4. Revetment & erosion protection** | was named 4. Bekleding & Erosiebescherming |
| 4.1 | Stone revetment, inner slope | was named Steenzetting binnentalud |
| 4.2 | Grass cover, outer slope | was named Grasmat buitentalud |
| 4.3 | Toe structure, waterside | was named Teenconstructie waterzijde |
| 4.4 | Place toe protection berm | was named Kreukelberm storten |
| 5 | **5. Civil structures** | was named 5. Kunstwerken |
| 5.1 | Culvert renovation | was named Duiker renovatie |
| 5.2 | Modify pumping station | was named Gemaal aanpassen |
| 5.3 | Barrier lock maintenance | was named Keersluis onderhoud |
| 5.4 | Stairs and transitions | was named Trappen en overgangen |
| 6 | **6. Finishing & reinstatement** | was named 6. Afwerking & Herstel |
| 6.1 | Reinstate dike road | was named Dijkweg herstellen |
| 6.2 | Construct cycle path | was named Fietspad aanleggen |
| 6.3 | Ecological restoration | was named Ecologisch herstel |
| 6.4 | Fencing and signage | was named Hekwerk en bebording |
| 6.5 | Handover | was named Oplevering |

## Version 4 (saved 2026-09-28)

Note of the change: Merge pull request #241 from OpenAEC-Foundation/claude/future-bottlenecks-bugs-1ybv83

Last finish stays 2027-10-23.

Changed:

| ID | Task | Duration |
| --- | --- | --- |
| 1 | **1. Preparation** | 5d → 36d |
| 2 | **2. Preloading** | 5d → 60d |
| 3 | **3. Embankment** | 5d → 65d |
| 4 | **4. Revetment & erosion protection** | 5d → 40d |
| 5 | **5. Civil structures** | 5d → 31d |
| 6 | **6. Finishing & reinstatement** | 5d → 33d |

## Version 5 (saved 2026-10-26)

Note of the change: Merge remote-tracking branch 'origin/main' into fix/recovery-opaque-origin

Last finish stays 2027-10-23.

Changed:

| ID | Task | Duration |
| --- | --- | --- |
| 1 | **1. Preparation** | 36d → 35d |
