# Bouwplanning v1.0

How a schedule from an IFC model changed from version to version. A marks actual dates.

## Version 1 (saved 2026-06-05)

Note of the change: fix(examples): termineer STEP-entiteiten met ';' in generator + hergenereer

| ID | Task | Predecessors |
| --- | --- | --- |
| 1 | **1. Voorbereiding** |  |
| 1.1 | Sloop bestaand pand |  |
| 1.2 | Bouwplaats inrichten | 1.1 |
| 1.3 | Funderingsonderzoek | 1.2 |
| 1.4 | Start nieuwbouw | 1.3 |
| 2 | **2. Fundering** |  |
| 2.1 | Damwanden boulevard | 1.4 |
| 2.2 | Ontgraven kelder | 2.1 |
| 2.3 | Funderingspalen | 2.2 |
| 2.4 | Keldervloer wellness | 2.3 |
| 2.5 | Kelderwanden | 2.4 |
| 3 | **3. Ruwbouw** |  |
| 3.1 | Begane grond lobby | 2.5 |
| 3.2 | Verdieping 1 kamers | 3.1 |
| 3.3 | Verdieping 2 kamers | 3.2 |
| 3.4 | Verdieping 3 kamers | 3.3 |
| 3.5 | Verdieping 4 kamers | 3.4 |
| 3.6 | Verdieping 5 kamers | 3.5 |
| 3.7 | Penthouse verdieping | 3.6 |
| 3.8 | Dakterras constructie | 3.7 |
| 3.9 | Hoogste punt | 3.8 |
| 4 | **4. Gevel** |  |
| 4.1 | Vliesgevel zeezijde | 3.9 |
| 4.2 | Vliesgevel landzijde | 4.1 |
| 4.3 | Gevelbekleding natuursteen | 4.2 |
| 4.4 | Kozijnen en beglazing | 4.3 |
| 4.5 | Wind- en waterdicht | 4.4 |
| 5 | **5. Installaties** |  |
| 5.1 | Elektra hoofdverdeling | 4.5 |
| 5.2 | Stijgleidingen alle media | 5.1 |
| 5.3 | VRF klimaatsysteem | 5.2 SS |
| 5.4 | Ventilatie en luchtbehandeling | 5.3 |
| 5.5 | Liftinstallatie 2x | 5.4 |
| 5.6 | Sprinkler en BMI | 5.5 |
| 5.7 | Wellness installaties | 5.6 |
| 5.8 | Hotelautomatisering | 5.7 |
| 6 | **6. Afbouw** |  |
| 6.1 | Kamerwanden prefab | 5.8 |
| 6.2 | Badkamer prefab units | 6.1 |
| 6.3 | Dekvloeren en tapijt | 6.2 |
| 6.4 | Lobby afwerking luxe | 6.3 |
| 6.5 | Restaurant keuken | 6.4 |
| 6.6 | Schilderwerk | 6.5 |
| 6.7 | Inrichting kamers | 6.6 |
| 7 | **7. Oplevering** |  |
| 7.1 | Dakterras afwerken | 6.7 |
| 7.2 | Buitenterrein boulevard | 7.1 |
| 7.3 | Testen en inregelen | 7.2 |
| 7.4 | Oplevering hotel | 7.3 |

## Version 2 (saved 2026-07-03)

Note of the change: feat(examples): generator op echte writer+CPM, 3 showcase-planningen, rijkere topologie

Last finish none → 2028-02-16.

Changed:

| ID | Task | Start | Finish | Duration | Total float | Predecessors |
| --- | --- | --- | --- | --- | --- | --- |
| 1 | **1. Voorbereiding** | none → 2027-03-01 | none → 2027-03-25 | none → 5d | none → 0d |  |
| 1.1 | Sloop bestaand pand | none → 2027-03-01 | none → 2027-03-12 | none → 10d | none → 0d |  |
| 1.2 | Bouwplaats inrichten | none → 2027-03-15 | none → 2027-03-19 | none → 5d | none → 213d |  |
| 1.3 | Funderingsonderzoek | none → 2027-03-22 | none → 2027-03-24 | none → 3d | none → 213d |  |
| 1.4 | Start nieuwbouw | none → 2027-03-25 | none → 2027-03-25 | none → 0d | none → 213d |  |
| 2 | **2. Fundering** | none → 2027-03-12 | none → 2027-05-24 | none → 5d | none → 0d |  |
| 2.1 | Damwanden boulevard | none → 2027-03-12 | none → 2027-03-25 | none → 10d | none → 0d | 1.4 → 1.1 SS+9d |
| 2.2 | Ontgraven kelder | none → 2027-03-30 | none → 2027-04-08 | none → 8d | none → 177d |  |
| 2.3 | Funderingspalen | none → 2027-04-09 | none → 2027-04-26 | none → 12d | none → 177d |  |
| 2.4 | Keldervloer wellness | none → 2027-04-28 | none → 2027-05-11 | none → 8d | none → 177d |  |
| 2.5 | Kelderwanden | none → 2027-05-12 | none → 2027-05-24 | none → 8d | none → 177d |  |
| 3 | **3. Ruwbouw** | none → 2027-03-18 | none → 2027-06-29 | none → 5d | none → 0d |  |
| 3.1 | Begane grond lobby | none → 2027-03-18 | none → 2027-04-02 | none → 10d | none → 0d | 2.5 → 2.1 SS |
| 3.2 | Verdieping 1 kamers | none → 2027-04-05 | none → 2027-04-14 | none → 8d | none → 0d |  |
| 3.3 | Verdieping 2 kamers | none → 2027-04-15 | none → 2027-04-26 | none → 8d | none → 0d |  |
| 3.4 | Verdieping 3 kamers | none → 2027-04-28 | none → 2027-05-11 | none → 8d | none → 0d |  |
| 3.5 | Verdieping 4 kamers | none → 2027-05-12 | none → 2027-05-24 | none → 8d | none → 0d |  |
| 3.6 | Verdieping 5 kamers | none → 2027-05-25 | none → 2027-06-03 | none → 8d | none → 0d |  |
| 3.7 | Penthouse verdieping | none → 2027-06-04 | none → 2027-06-17 | none → 10d | none → 0d |  |
| 3.8 | Dakterras constructie | none → 2027-06-18 | none → 2027-06-29 | none → 8d | none → 0d |  |
| 3.9 | Hoogste punt | none → 2027-06-29 | none → 2027-06-29 | none → 0d | none → 151d |  |
| 4 | **4. Gevel** | none → 2027-06-10 | none → 2027-08-25 | none → 5d | none → 0d |  |
| 4.1 | Vliesgevel zeezijde | none → 2027-06-10 | none → 2027-06-25 | none → 12d | none → 0d | 3.9 → 3.8 FS-14d |
| 4.2 | Vliesgevel landzijde | none → 2027-06-28 | none → 2027-07-09 | none → 10d | none → 0d |  |
| 4.3 | Gevelbekleding natuursteen | none → 2027-07-12 | none → 2027-07-23 | none → 10d | none → 0d |  |
| 4.4 | Kozijnen en beglazing | none → 2027-08-16 | none → 2027-08-25 | none → 8d | none → 0d | 4.3 → 4.3, 3.8 FF+2d |
| 4.5 | Wind- en waterdicht | none → 2027-08-25 | none → 2027-08-25 | none → 0d | none → 125d |  |
| 5 | **5. Installaties** | none → 2027-08-26 | none → 2027-12-02 | none → 5d | none → 0d |  |
| 5.1 | Elektra hoofdverdeling | none → 2027-08-26 | none → 2027-09-06 | none → 8d | none → 0d | 4.5 → 4.4 |
| 5.2 | Stijgleidingen alle media | none → 2027-09-07 | none → 2027-09-22 | none → 12d | none → 54d |  |
| 5.3 | VRF klimaatsysteem | none → 2027-09-14 | none → 2027-09-27 | none → 10d | none → 54d | 5.2 SS → 5.2 SS+5d |
| 5.4 | Ventilatie en luchtbehandeling | none → 2027-09-28 | none → 2027-10-11 | none → 10d | none → 54d |  |
| 5.5 | Liftinstallatie 2x | none → 2027-10-12 | none → 2027-11-01 | none → 15d | none → 54d |  |
| 5.6 | Sprinkler en BMI | none → 2027-11-02 | none → 2027-11-11 | none → 8d | none → 54d |  |
| 5.7 | Wellness installaties | none → 2027-11-12 | none → 2027-11-25 | none → 10d | none → 54d |  |
| 5.8 | Hotelautomatisering | none → 2027-11-26 | none → 2027-12-02 | none → 5d | none → 54d |  |
| 6 | **6. Afbouw** | none → 2027-10-20 | none → 2028-01-21 | none → 5d | none → 0d |  |
| 6.1 | Kamerwanden prefab | none → 2027-10-20 | none → 2027-11-04 | none → 12d | none → 0d | 5.8 → 5.1 SS+39d |
| 6.2 | Badkamer prefab units | none → 2027-11-05 | none → 2027-11-18 | none → 10d | none → 0d |  |
| 6.3 | Dekvloeren en tapijt | none → 2027-11-19 | none → 2027-11-30 | none → 8d | none → 0d |  |
| 6.4 | Lobby afwerking luxe | none → 2027-12-01 | none → 2027-12-14 | none → 10d | none → 0d |  |
| 6.5 | Restaurant keuken | none → 2027-12-15 | none → 2027-12-24 | none → 8d | none → 0d |  |
| 6.6 | Schilderwerk | none → 2027-12-27 | none → 2028-01-07 | none → 10d | none → 0d |  |
| 6.7 | Inrichting kamers | none → 2028-01-10 | none → 2028-01-21 | none → 10d | none → 0d |  |
| 7 | **7. Oplevering** | none → 2028-01-24 | none → 2028-02-16 | none → 5d | none → 0d |  |
| 7.1 | Dakterras afwerken | none → 2028-01-24 | none → 2028-01-28 | none → 5d | none → 0d |  |
| 7.2 | Buitenterrein boulevard | none → 2028-01-31 | none → 2028-02-09 | none → 8d | none → 0d |  |
| 7.3 | Testen en inregelen | none → 2028-02-10 | none → 2028-02-16 | none → 5d | none → 0d |  |
| 7.4 | Oplevering hotel | none → 2028-02-16 | none → 2028-02-16 | none → 0d | none → 0d |  |

## Version 3 (saved 2026-09-04)

Note of the change: Merge remote-tracking branch 'origin/main' into t3code/b1c-etappe3

Last finish stays 2028-02-16.

Changed:

| ID | Task | Other |
| --- | --- | --- |
| 1 | **1. Preparation** | was named 1. Voorbereiding |
| 1.1 | Demolish existing building | was named Sloop bestaand pand |
| 1.2 | Set up site | was named Bouwplaats inrichten |
| 1.3 | Foundation survey | was named Funderingsonderzoek |
| 1.4 | Start of new build | was named Start nieuwbouw |
| 2 | **2. Foundations** | was named 2. Fundering |
| 2.1 | Sheet piling, boulevard | was named Damwanden boulevard |
| 2.2 | Excavate basement | was named Ontgraven kelder |
| 2.3 | Foundation piles | was named Funderingspalen |
| 2.4 | Basement floor, wellness | was named Keldervloer wellness |
| 2.5 | Basement walls | was named Kelderwanden |
| 3 | **3. Structural works** | was named 3. Ruwbouw |
| 3.1 | Ground floor lobby | was named Begane grond lobby |
| 3.2 | Floor 1 rooms | was named Verdieping 1 kamers |
| 3.3 | Floor 2 rooms | was named Verdieping 2 kamers |
| 3.4 | Floor 3 rooms | was named Verdieping 3 kamers |
| 3.5 | Floor 4 rooms | was named Verdieping 4 kamers |
| 3.6 | Floor 5 rooms | was named Verdieping 5 kamers |
| 3.7 | Penthouse floor | was named Penthouse verdieping |
| 3.8 | Roof terrace structure | was named Dakterras constructie |
| 3.9 | Topping out | was named Hoogste punt |
| 4 | **4. Facade** | was named 4. Gevel |
| 4.1 | Curtain wall, sea side | was named Vliesgevel zeezijde |
| 4.2 | Curtain wall, land side | was named Vliesgevel landzijde |
| 4.3 | Natural stone cladding | was named Gevelbekleding natuursteen |
| 4.4 | Window frames and glazing | was named Kozijnen en beglazing |
| 4.5 | Wind and weathertight | was named Wind- en waterdicht |
| 5 | **5. Building services** | was named 5. Installaties |
| 5.1 | Main electrical distribution | was named Elektra hoofdverdeling |
| 5.2 | Risers, all services | was named Stijgleidingen alle media |
| 5.3 | VRF climate system | was named VRF klimaatsysteem |
| 5.4 | Ventilation and air handling | was named Ventilatie en luchtbehandeling |
| 5.5 | Lift installation (2 units) | was named Liftinstallatie 2x |
| 5.6 | Sprinkler and fire alarm | was named Sprinkler en BMI |
| 5.7 | Wellness building services | was named Wellness installaties |
| 5.8 | Hotel automation | was named Hotelautomatisering |
| 6 | **6. Fit-out** | was named 6. Afbouw |
| 6.1 | Prefab room walls | was named Kamerwanden prefab |
| 6.2 | Prefab bathroom pods | was named Badkamer prefab units |
| 6.3 | Screeds and carpet | was named Dekvloeren en tapijt |
| 6.4 | Luxury lobby finishes | was named Lobby afwerking luxe |
| 6.5 | Restaurant kitchen | was named Restaurant keuken |
| 6.6 | Painting | was named Schilderwerk |
| 6.7 | Room furnishing | was named Inrichting kamers |
| 7 | **7. Handover** | was named 7. Oplevering |
| 7.1 | Finish roof terrace | was named Dakterras afwerken |
| 7.2 | External areas, boulevard | was named Buitenterrein boulevard |
| 7.3 | Testing and commissioning | was named Testen en inregelen |
| 7.4 | Hotel handover | was named Oplevering hotel |

## Version 4 (saved 2026-09-28)

Note of the change: chore(voorbeelden): opnieuw gegenereerd met STEP-codering en de nieuwe GlobalIds

Last finish stays 2028-02-16.

Changed:

| ID | Task | Duration |
| --- | --- | --- |
| 1 | **1. Preparation** | 5d → 19d |
| 2 | **2. Foundations** | 5d → 46d |
| 3 | **3. Structural works** | 5d → 68d |
| 4 | **4. Facade** | 5d → 40d |
| 5 | **5. Building services** | 5d → 71d |
| 6 | **6. Fit-out** | 5d → 68d |
| 7 | **7. Handover** | 5d → 18d |

## Version 5 (saved 2026-10-29)

Note of the change: Merge origin/main (3c2c1ec12) in meerdere-baselines-gantt

Last finish stays 2028-02-16.

Changed:

| ID | Task | Duration |
| --- | --- | --- |
| 1 | **1. Preparation** | 19d → 18d |
