# Bouwplanning v1.0

How a schedule from an IFC model changed from version to version. A marks actual dates.

## Version 1 (saved 2026-06-05)

Note of the change: fix(examples): termineer STEP-entiteiten met ';' in generator + hergenereer

| ID | Task | Predecessors |
| --- | --- | --- |
| 1 | **1. Voorbereiding** |  |
| 1.1 | Bouwterrein klaarmaken |  |
| 1.2 | Bouwplaats inrichten | 1.1 |
| 1.3 | Start bouw | 1.2 |
| 2 | **2. Fundering** |  |
| 2.1 | Heien funderingspalen | 1.3 |
| 2.2 | Funderingsbalken en poeren | 2.1 |
| 2.3 | Riolering onder vloer | 2.2 |
| 2.4 | Begane grondvloer storten | 2.3 |
| 3 | **3. Ruwbouw** |  |
| 3.1 | Begane grond metselwerk | 2.4 |
| 3.2 | Verdiepingsvloer prefab | 3.1 |
| 3.3 | Verdieping metselwerk | 3.2 |
| 3.4 | CLT dakconstructie | 3.3 |
| 3.5 | Dakbedekking EPDM | 3.4 |
| 3.6 | Sedum dak aanleggen | 3.5 |
| 3.7 | Hoogste punt | 3.6 |
| 4 | **4. Gevel & Dak** |  |
| 4.1 | Gevelisolatie ETICS | 3.7 |
| 4.2 | Kozijnen aluminium | 4.1 |
| 4.3 | Gevelafwerking baksteen strips | 4.2 |
| 4.4 | Zonnepanelen dak | 4.3 |
| 4.5 | Wind- en waterdicht | 4.4 |
| 5 | **5. Installaties** |  |
| 5.1 | Elektra en data | 4.5 |
| 5.2 | Warmtepomp lucht-water | 5.1 |
| 5.3 | Vloerverwarming | 5.2 SS |
| 5.4 | Ventilatie CO2-gestuurd | 5.3 |
| 5.5 | Sanitair leidingwerk | 5.4 |
| 5.6 | Brandmeld en ontruiming | 5.5 |
| 6 | **6. Afbouw** |  |
| 6.1 | Binnenwanden metal stud | 5.6 |
| 6.2 | Plafonds akoestisch | 6.1 |
| 6.3 | Dekvloeren | 6.2 |
| 6.4 | Tegelwerk sanitair | 6.3 |
| 6.5 | Schilderwerk | 6.4 |
| 6.6 | Vloerafwerking linoleum | 6.5 |
| 6.7 | Buitenspeelplaats | 6.6 |
| 7 | **7. Oplevering** |  |
| 7.1 | Inrichting lokalen | 6.7 |
| 7.2 | Testen en inregelen | 7.1 |
| 7.3 | Oplevering IKC | 7.2 |

## Version 2 (saved 2026-07-03)

Note of the change: feat(examples): generator op echte writer+CPM, 3 showcase-planningen, rijkere topologie

Last finish none → 2027-10-15.

Changed:

| ID | Task | Start | Finish | Duration | Total float | Predecessors |
| --- | --- | --- | --- | --- | --- | --- |
| 1 | **1. Voorbereiding** | none → 2027-03-01 | none → 2027-03-11 | none → 5d | none → 0d |  |
| 1.1 | Bouwterrein klaarmaken | none → 2027-03-01 | none → 2027-03-05 | none → 5d | none → 0d |  |
| 1.2 | Bouwplaats inrichten | none → 2027-03-08 | none → 2027-03-10 | none → 3d | none → 135d |  |
| 1.3 | Start bouw | none → 2027-03-11 | none → 2027-03-11 | none → 0d | none → 135d |  |
| 2 | **2. Fundering** | none → 2027-03-05 | none → 2027-04-15 | none → 5d | none → 0d |  |
| 2.1 | Heien funderingspalen | none → 2027-03-05 | none → 2027-03-18 | none → 10d | none → 0d | 1.3 → 1.1 SS+4d |
| 2.2 | Funderingsbalken en poeren | none → 2027-03-19 | none → 2027-04-01 | none → 8d | none → 112d |  |
| 2.3 | Riolering onder vloer | none → 2027-04-02 | none → 2027-04-08 | none → 5d | none → 112d |  |
| 2.4 | Begane grondvloer storten | none → 2027-04-09 | none → 2027-04-15 | none → 5d | none → 112d |  |
| 3 | **3. Ruwbouw** | none → 2027-03-11 | none → 2027-05-18 | none → 5d | none → 0d |  |
| 3.1 | Begane grond metselwerk | none → 2027-03-11 | none → 2027-03-30 | none → 12d | none → 0d | 2.4 → 2.1 SS |
| 3.2 | Verdiepingsvloer prefab | none → 2027-03-31 | none → 2027-04-06 | none → 5d | none → 0d |  |
| 3.3 | Verdieping metselwerk | none → 2027-04-07 | none → 2027-04-20 | none → 10d | none → 0d |  |
| 3.4 | CLT dakconstructie | none → 2027-04-21 | none → 2027-05-03 | none → 8d | none → 0d |  |
| 3.5 | Dakbedekking EPDM | none → 2027-05-04 | none → 2027-05-12 | none → 5d | none → 0d |  |
| 3.6 | Sedum dak aanleggen | none → 2027-05-13 | none → 2027-05-18 | none → 3d | none → 0d |  |
| 3.7 | Hoogste punt | none → 2027-05-18 | none → 2027-05-18 | none → 0d | none → 93d |  |
| 4 | **4. Gevel & Dak** | none → 2027-05-03 | none → 2027-06-17 | none → 5d | none → 0d |  |
| 4.1 | Gevelisolatie ETICS | none → 2027-05-03 | none → 2027-05-19 | none → 10d | none → 0d | 3.7 → 3.6 FS-9d |
| 4.2 | Kozijnen aluminium | none → 2027-05-20 | none → 2027-05-31 | none → 8d | none → 0d |  |
| 4.3 | Gevelafwerking baksteen strips | none → 2027-06-01 | none → 2027-06-10 | none → 8d | none → 0d |  |
| 4.4 | Zonnepanelen dak | none → 2027-06-11 | none → 2027-06-17 | none → 5d | none → 0d | 4.3 → 4.3, 3.6 FF+2d |
| 4.5 | Wind- en waterdicht | none → 2027-06-17 | none → 2027-06-17 | none → 0d | none → 71d |  |
| 5 | **5. Installaties** | none → 2027-06-18 | none → 2027-08-25 | none → 5d | none → 0d |  |
| 5.1 | Elektra en data | none → 2027-06-18 | none → 2027-06-29 | none → 8d | none → 0d | 4.5 → 4.4 |
| 5.2 | Warmtepomp lucht-water | none → 2027-06-30 | none → 2027-07-06 | none → 5d | none → 37d |  |
| 5.3 | Vloerverwarming | none → 2027-07-02 | none → 2027-07-13 | none → 8d | none → 37d | 5.2 SS → 5.2 SS+2d |
| 5.4 | Ventilatie CO2-gestuurd | none → 2027-07-14 | none → 2027-07-23 | none → 8d | none → 37d |  |
| 5.5 | Sanitair leidingwerk | none → 2027-08-16 | none → 2027-08-20 | none → 5d | none → 37d |  |
| 5.6 | Brandmeld en ontruiming | none → 2027-08-23 | none → 2027-08-25 | none → 3d | none → 37d |  |
| 6 | **6. Afbouw** | none → 2027-07-15 | none → 2027-10-05 | none → 5d | none → 0d |  |
| 6.1 | Binnenwanden metal stud | none → 2027-07-15 | none → 2027-08-16 | none → 8d | none → 0d | 5.6 → 5.1 SS+19d |
| 6.2 | Plafonds akoestisch | none → 2027-08-17 | none → 2027-08-23 | none → 5d | none → 0d |  |
| 6.3 | Dekvloeren | none → 2027-08-24 | none → 2027-08-30 | none → 5d | none → 0d |  |
| 6.4 | Tegelwerk sanitair | none → 2027-08-31 | none → 2027-09-06 | none → 5d | none → 0d |  |
| 6.5 | Schilderwerk | none → 2027-09-07 | none → 2027-09-16 | none → 8d | none → 0d |  |
| 6.6 | Vloerafwerking linoleum | none → 2027-09-17 | none → 2027-09-23 | none → 5d | none → 0d |  |
| 6.7 | Buitenspeelplaats | none → 2027-09-24 | none → 2027-10-05 | none → 8d | none → 0d |  |
| 7 | **7. Oplevering** | none → 2027-10-06 | none → 2027-10-15 | none → 5d | none → 0d |  |
| 7.1 | Inrichting lokalen | none → 2027-10-06 | none → 2027-10-12 | none → 5d | none → 0d |  |
| 7.2 | Testen en inregelen | none → 2027-10-13 | none → 2027-10-15 | none → 3d | none → 0d |  |
| 7.3 | Oplevering IKC | none → 2027-10-15 | none → 2027-10-15 | none → 0d | none → 0d |  |

## Version 3 (saved 2026-09-04)

Note of the change: Merge pull request #92 from OpenAEC-Foundation/claude/light-mode-colors-6yu5uc

Last finish stays 2027-10-15.

Changed:

| ID | Task | Other |
| --- | --- | --- |
| 1 | **1. Preparation** | was named 1. Voorbereiding |
| 1.1 | Prepare construction site | was named Bouwterrein klaarmaken |
| 1.2 | Set up site | was named Bouwplaats inrichten |
| 1.3 | Start of construction | was named Start bouw |
| 2 | **2. Foundations** | was named 2. Fundering |
| 2.1 | Pile driving, foundation piles | was named Heien funderingspalen |
| 2.2 | Foundation beams and pile caps | was named Funderingsbalken en poeren |
| 2.3 | Below-slab drainage | was named Riolering onder vloer |
| 2.4 | Pour ground floor slab | was named Begane grondvloer storten |
| 3 | **3. Structural works** | was named 3. Ruwbouw |
| 3.1 | Ground floor masonry | was named Begane grond metselwerk |
| 3.2 | Precast upper floor slab | was named Verdiepingsvloer prefab |
| 3.3 | Upper floor masonry | was named Verdieping metselwerk |
| 3.4 | CLT roof structure | was named CLT dakconstructie |
| 3.5 | EPDM roofing | was named Dakbedekking EPDM |
| 3.6 | Install sedum roof | was named Sedum dak aanleggen |
| 3.7 | Topping out | was named Hoogste punt |
| 4 | **4. Facade & roof** | was named 4. Gevel & Dak |
| 4.1 | ETICS facade insulation | was named Gevelisolatie ETICS |
| 4.2 | Aluminium window frames | was named Kozijnen aluminium |
| 4.3 | Facade finish, brick slips | was named Gevelafwerking baksteen strips |
| 4.4 | Roof solar panels | was named Zonnepanelen dak |
| 4.5 | Wind and weathertight | was named Wind- en waterdicht |
| 5 | **5. Building services** | was named 5. Installaties |
| 5.1 | Electrical and data | was named Elektra en data |
| 5.2 | Air-to-water heat pump | was named Warmtepomp lucht-water |
| 5.3 | Underfloor heating | was named Vloerverwarming |
| 5.4 | CO2-controlled ventilation | was named Ventilatie CO2-gestuurd |
| 5.5 | Sanitary pipework | was named Sanitair leidingwerk |
| 5.6 | Fire alarm and evacuation | was named Brandmeld en ontruiming |
| 6 | **6. Fit-out** | was named 6. Afbouw |
| 6.1 | Internal walls, metal stud | was named Binnenwanden metal stud |
| 6.2 | Acoustic ceilings | was named Plafonds akoestisch |
| 6.3 | Screed floors | was named Dekvloeren |
| 6.4 | Tiling, sanitary areas | was named Tegelwerk sanitair |
| 6.5 | Painting | was named Schilderwerk |
| 6.6 | Linoleum floor finish | was named Vloerafwerking linoleum |
| 6.7 | Outdoor playground | was named Buitenspeelplaats |
| 7 | **7. Handover** | was named 7. Oplevering |
| 7.1 | Classroom furnishing | was named Inrichting lokalen |
| 7.2 | Testing and commissioning | was named Testen en inregelen |
| 7.3 | Child centre handover | was named Oplevering IKC |

## Version 4 (saved 2026-09-28)

Note of the change: chore(voorbeelden): opnieuw gegenereerd met STEP-codering en de nieuwe GlobalIds

Last finish stays 2027-10-15.

Changed:

| ID | Task | Duration |
| --- | --- | --- |
| 1 | **1. Preparation** | 5d → 9d |
| 2 | **2. Foundations** | 5d → 28d |
| 3 | **3. Structural works** | 5d → 43d |
| 4 | **4. Facade & roof** | 5d → 31d |
| 5 | **5. Building services** | 5d → 34d |
| 6 | **6. Fit-out** | 5d → 44d |
| 7 | **7. Handover** | 5d → 8d |

## Version 5 (saved 2026-10-27)

Note of the change: Merge remote-tracking branch 'origin/main' into review-ready-645-20261027

Last finish stays 2027-10-15.

Changed:

| ID | Task | Duration |
| --- | --- | --- |
| 1 | **1. Preparation** | 9d → 8d |
