# Bouwplanning v1.0

How a schedule from an IFC model changed from version to version. A marks actual dates.

## Version 1 (saved 2026-06-05)

Note of the change: fix(examples): termineer STEP-entiteiten met ';' in generator + hergenereer

| ID | Task | Predecessors |
| --- | --- | --- |
| 1 | **1. Bouwrijp maken** |  |
| 1.1 | Terrein ontruimen en egaliseren |  |
| 1.2 | Hoofdriolering aanleggen | 1.1 |
| 1.3 | Nutsvoorzieningen hoofdleiding | 1.2 |
| 1.4 | Bouwwegen aanleggen | 1.3 |
| 1.5 | Start bouw | 1.4 |
| 2 | **2. Fundering Fase 1 (blok 1-3)** |  |
| 2.1 | Heien blok 1 (10 rijwoningen) | 1.5 |
| 2.2 | Heien blok 2 (10 rijwoningen) | 2.1 |
| 2.3 | Heien blok 3 (10 rijwoningen) | 2.2 SS |
| 2.4 | Funderingsbalken blok 1-3 | 2.3 |
| 2.5 | Begane grondvloer blok 1-3 | 2.4 |
| 3 | **3. Fundering Fase 2 (blok 4-5)** |  |
| 3.1 | Heien blok 4 (10 rijwoningen) | 2.5 |
| 3.2 | Heien blok 5 (10 2-1-kap) | 3.1 SS |
| 3.3 | Funderingsbalken blok 4-5 | 3.2 |
| 3.4 | Begane grondvloer blok 4-5 | 3.3 |
| 4 | **4. Ruwbouw Fase 1** |  |
| 4.1 | Metselwerk BG blok 1-3 | 3.4 |
| 4.2 | Verdiepingsvloer blok 1-3 | 4.1 |
| 4.3 | Metselwerk verdieping blok 1-3 | 4.2 |
| 4.4 | Kapconstructie blok 1-3 | 4.3 |
| 4.5 | Dakpannen blok 1-3 | 4.4 |
| 4.6 | Hoogste punt fase 1 | 4.5 |
| 5 | **5. Ruwbouw Fase 2** |  |
| 5.1 | Metselwerk BG blok 4-5 | 4.6 |
| 5.2 | Verdiepingsvloer blok 4-5 | 5.1 |
| 5.3 | Metselwerk verdieping blok 4-5 | 5.2 |
| 5.4 | Kapconstructie blok 4-5 | 5.3 |
| 5.5 | Dakpannen blok 4-5 | 5.4 |
| 5.6 | Hoogste punt fase 2 | 5.5 |
| 6 | **6. Gevels & Daken** |  |
| 6.1 | Kozijnen blok 1-3 | 5.6 |
| 6.2 | Kozijnen blok 4-5 | 6.1 |
| 6.3 | Geveldichting en isolatie | 6.2 |
| 6.4 | Dakgoten en HWA | 6.3 |
| 6.5 | Wind- en waterdicht alle blokken | 6.4 |
| 7 | **7. Installaties** |  |
| 7.1 | Elektra blok 1-3 | 6.5 |
| 7.2 | Elektra blok 4-5 | 7.1 SS |
| 7.3 | Loodgieter blok 1-3 | 7.2 |
| 7.4 | Loodgieter blok 4-5 | 7.3 |
| 7.5 | Warmtepompen alle woningen | 7.4 |
| 7.6 | Ventilatie WTW units | 7.5 |
| 8 | **8. Afbouw Fase 1** |  |
| 8.1 | Stucwerk blok 1-3 | 7.6 |
| 8.2 | Tegelwerk blok 1-3 | 8.1 |
| 8.3 | Keukens blok 1-3 | 8.2 |
| 8.4 | Schilderwerk blok 1-3 | 8.3 |
| 8.5 | Vloerafwerking blok 1-3 | 8.4 |
| 9 | **9. Afbouw Fase 2** |  |
| 9.1 | Stucwerk blok 4-5 | 8.5 |
| 9.2 | Tegelwerk blok 4-5 | 9.1 |
| 9.3 | Keukens blok 4-5 | 9.2 |
| 9.4 | Schilderwerk blok 4-5 | 9.3 |
| 9.5 | Vloerafwerking blok 4-5 | 9.4 |
| 10 | **10. Woonrijp maken** |  |
| 10.1 | Definitieve riolering aansluiten | 9.5 |
| 10.2 | Straatwerk en trottoirs | 10.1 |
| 10.3 | Parkeerplaatsen aanleggen | 10.2 |
| 10.4 | Groenvoorziening en bomen | 10.3 |
| 10.5 | Speelvoorzieningen | 10.4 |
| 10.6 | Straatverlichting | 10.5 |
| 11 | **11. Oplevering** |  |
| 11.1 | Vooroplevering fase 1 | 10.6 |
| 11.2 | Vooroplevering fase 2 | 11.1 |
| 11.3 | Oplevering woningen | 11.2 |
| 11.4 | Woonwijk gereed | 11.3 |

## Version 2 (saved 2026-07-03)

Note of the change: feat(examples): generator op echte writer+CPM, 3 showcase-planningen, rijkere topologie

Last finish none → 2028-06-27.

Changed:

| ID | Task | Start | Finish | Duration | Total float | Predecessors |
| --- | --- | --- | --- | --- | --- | --- |
| 1 | **1. Bouwrijp maken** | none → 2027-03-01 | none → 2027-04-26 | none → 5d | none → 0d |  |
| 1.1 | Terrein ontruimen en egaliseren | none → 2027-03-01 | none → 2027-03-10 | none → 8d | none → 0d |  |
| 1.2 | Hoofdriolering aanleggen | none → 2027-03-11 | none → 2027-03-30 | none → 12d | none → 281d |  |
| 1.3 | Nutsvoorzieningen hoofdleiding | none → 2027-03-31 | none → 2027-04-13 | none → 10d | none → 281d |  |
| 1.4 | Bouwwegen aanleggen | none → 2027-04-14 | none → 2027-04-23 | none → 8d | none → 281d |  |
| 1.5 | Start bouw | none → 2027-04-26 | none → 2027-04-26 | none → 0d | none → 281d |  |
| 2 | **2. Fundering Fase 1 (blok 1-3)** | none → 2027-03-30 | none → 2027-05-27 | none → 5d | none → 0d |  |
| 2.1 | Heien blok 1 (10 rijwoningen) | none → 2027-03-30 | none → 2027-04-08 | none → 8d | none → 0d | 1.5 → 1.1 SS+19d |
| 2.2 | Heien blok 2 (10 rijwoningen) | none → 2027-04-09 | none → 2027-04-20 | none → 8d | none → 262d |  |
| 2.3 | Heien blok 3 (10 rijwoningen) | none → 2027-04-14 | none → 2027-04-23 | none → 8d | none → 262d | 2.2 SS → 2.2 SS+3d |
| 2.4 | Funderingsbalken blok 1-3 | none → 2027-04-26 | none → 2027-05-12 | none → 10d | none → 262d |  |
| 2.5 | Begane grondvloer blok 1-3 | none → 2027-05-13 | none → 2027-05-27 | none → 10d | none → 262d |  |
| 3 | **3. Fundering Fase 2 (blok 4-5)** | none → 2027-04-02 | none → 2027-05-13 | none → 5d | none → 0d |  |
| 3.1 | Heien blok 4 (10 rijwoningen) | none → 2027-04-02 | none → 2027-04-13 | none → 8d | none → 0d | 2.5 → 2.1 SS |
| 3.2 | Heien blok 5 (10 2-1-kap) | none → 2027-04-07 | none → 2027-04-16 | none → 8d | none → 0d | 3.1 SS → 3.1 SS+3d |
| 3.3 | Funderingsbalken blok 4-5 | none → 2027-04-19 | none → 2027-04-29 | none → 8d | none → 0d |  |
| 3.4 | Begane grondvloer blok 4-5 | none → 2027-04-30 | none → 2027-05-13 | none → 8d | none → 0d |  |
| 4 | **4. Ruwbouw Fase 1** | none → 2027-05-04 | none → 2027-08-23 | none → 5d | none → 0d |  |
| 4.1 | Metselwerk BG blok 1-3 | none → 2027-05-04 | none → 2027-05-27 | none → 15d | none → 0d | 3.4 → 3.4 FS-6d |
| 4.2 | Verdiepingsvloer blok 1-3 | none → 2027-05-28 | none → 2027-06-10 | none → 10d | none → 0d |  |
| 4.3 | Metselwerk verdieping blok 1-3 | none → 2027-06-11 | none → 2027-07-01 | none → 15d | none → 0d |  |
| 4.4 | Kapconstructie blok 1-3 | none → 2027-07-02 | none → 2027-07-19 | none → 12d | none → 0d |  |
| 4.5 | Dakpannen blok 1-3 | none → 2027-07-20 | none → 2027-08-23 | none → 10d | none → 0d |  |
| 4.6 | Hoogste punt fase 1 | none → 2027-08-23 | none → 2027-08-23 | none → 0d | none → 215d |  |
| 5 | **5. Ruwbouw Fase 2** | none → 2027-08-24 | none → 2027-11-04 | none → 5d | none → 0d |  |
| 5.1 | Metselwerk BG blok 4-5 | none → 2027-08-24 | none → 2027-09-13 | none → 15d | none → 0d | 4.6 → 4.5 |
| 5.2 | Verdiepingsvloer blok 4-5 | none → 2027-09-14 | none → 2027-09-23 | none → 8d | none → 160d |  |
| 5.3 | Metselwerk verdieping blok 4-5 | none → 2027-09-24 | none → 2027-10-11 | none → 12d | none → 160d |  |
| 5.4 | Kapconstructie blok 4-5 | none → 2027-10-12 | none → 2027-10-25 | none → 10d | none → 160d |  |
| 5.5 | Dakpannen blok 4-5 | none → 2027-10-26 | none → 2027-11-04 | none → 8d | none → 160d |  |
| 5.6 | Hoogste punt fase 2 | none → 2027-11-04 | none → 2027-11-04 | none → 0d | none → 162d |  |
| 6 | **6. Gevels & Daken** | none → 2027-09-30 | none → 2027-11-22 | none → 5d | none → 0d |  |
| 6.1 | Kozijnen blok 1-3 | none → 2027-09-30 | none → 2027-10-13 | none → 10d | none → 0d | 5.6 → 5.1 SS+27d |
| 6.2 | Kozijnen blok 4-5 | none → 2027-10-14 | none → 2027-10-25 | none → 8d | none → 150d |  |
| 6.3 | Geveldichting en isolatie | none → 2027-10-26 | none → 2027-11-10 | none → 12d | none → 150d |  |
| 6.4 | Dakgoten en HWA | none → 2027-11-11 | none → 2027-11-22 | none → 8d | none → 150d | 6.3 → 6.3, 5.5 FF+2d |
| 6.5 | Wind- en waterdicht alle blokken | none → 2027-11-22 | none → 2027-11-22 | none → 0d | none → 150d |  |
| 7 | **7. Installaties** | none → 2027-10-06 | none → 2027-12-22 | none → 5d | none → 0d |  |
| 7.1 | Elektra blok 1-3 | none → 2027-10-06 | none → 2027-10-21 | none → 12d | none → 0d | 6.5 → 6.1 SS |
| 7.2 | Elektra blok 4-5 | none → 2027-10-13 | none → 2027-10-22 | none → 8d | none → 0d | 7.1 SS → 7.1 SS+5d |
| 7.3 | Loodgieter blok 1-3 | none → 2027-10-25 | none → 2027-11-05 | none → 10d | none → 0d |  |
| 7.4 | Loodgieter blok 4-5 | none → 2027-11-08 | none → 2027-11-17 | none → 8d | none → 0d |  |
| 7.5 | Warmtepompen alle woningen | none → 2027-11-18 | none → 2027-12-08 | none → 15d | none → 0d |  |
| 7.6 | Ventilatie WTW units | none → 2027-12-09 | none → 2027-12-22 | none → 10d | none → 0d |  |
| 8 | **8. Afbouw Fase 1** | none → 2027-12-06 | none → 2028-02-14 | none → 5d | none → 0d |  |
| 8.1 | Stucwerk blok 1-3 | none → 2027-12-06 | none → 2027-12-24 | none → 15d | none → 0d | 7.6 → 7.6 FS-13d |
| 8.2 | Tegelwerk blok 1-3 | none → 2027-12-27 | none → 2028-01-07 | none → 10d | none → 0d |  |
| 8.3 | Keukens blok 1-3 | none → 2028-01-10 | none → 2028-01-19 | none → 8d | none → 0d |  |
| 8.4 | Schilderwerk blok 1-3 | none → 2028-01-20 | none → 2028-02-02 | none → 10d | none → 0d |  |
| 8.5 | Vloerafwerking blok 1-3 | none → 2028-02-03 | none → 2028-02-14 | none → 8d | none → 0d |  |
| 9 | **9. Afbouw Fase 2** | none → 2028-02-15 | none → 2028-04-06 | none → 5d | none → 0d |  |
| 9.1 | Stucwerk blok 4-5 | none → 2028-02-15 | none → 2028-03-01 | none → 12d | none → 0d |  |
| 9.2 | Tegelwerk blok 4-5 | none → 2028-03-02 | none → 2028-03-13 | none → 8d | none → 52d |  |
| 9.3 | Keukens blok 4-5 | none → 2028-03-14 | none → 2028-03-20 | none → 5d | none → 52d |  |
| 9.4 | Schilderwerk blok 4-5 | none → 2028-03-21 | none → 2028-03-30 | none → 8d | none → 52d |  |
| 9.5 | Vloerafwerking blok 4-5 | none → 2028-03-31 | none → 2028-04-06 | none → 5d | none → 52d |  |
| 10 | **10. Woonrijp maken** | none → 2028-03-13 | none → 2028-05-29 | none → 5d | none → 0d |  |
| 10.1 | Definitieve riolering aansluiten | none → 2028-03-13 | none → 2028-03-22 | none → 8d | none → 0d | 9.5 → 9.1 SS+19d |
| 10.2 | Straatwerk en trottoirs | none → 2028-03-23 | none → 2028-04-12 | none → 15d | none → 0d |  |
| 10.3 | Parkeerplaatsen aanleggen | none → 2028-04-13 | none → 2028-04-26 | none → 8d | none → 0d |  |
| 10.4 | Groenvoorziening en bomen | none → 2028-04-28 | none → 2028-05-12 | none → 10d | none → 0d |  |
| 10.5 | Speelvoorzieningen | none → 2028-05-15 | none → 2028-05-19 | none → 5d | none → 0d |  |
| 10.6 | Straatverlichting | none → 2028-05-22 | none → 2028-05-29 | none → 5d | none → 0d |  |
| 11 | **11. Oplevering** | none → 2028-05-30 | none → 2028-06-27 | none → 5d | none → 0d |  |
| 11.1 | Vooroplevering fase 1 | none → 2028-05-30 | none → 2028-06-06 | none → 5d | none → 0d |  |
| 11.2 | Vooroplevering fase 2 | none → 2028-06-07 | none → 2028-06-13 | none → 5d | none → 0d |  |
| 11.3 | Oplevering woningen | none → 2028-06-14 | none → 2028-06-27 | none → 10d | none → 0d |  |
| 11.4 | Woonwijk gereed | none → 2028-06-27 | none → 2028-06-27 | none → 0d | none → 0d |  |

## Version 3 (saved 2026-09-04)

Note of the change: Merge remote-tracking branch 'origin/main' into claude/contour-engine-planner-mnrsy3

Last finish stays 2028-06-27.

Changed:

| ID | Task | Other |
| --- | --- | --- |
| 1 | **1. Site preparation** | was named 1. Bouwrijp maken |
| 1.1 | Clear and level site | was named Terrein ontruimen en egaliseren |
| 1.2 | Install main sewer | was named Hoofdriolering aanleggen; resources none → Civils contractor |
| 1.3 | Utility main | was named Nutsvoorzieningen hoofdleiding; resources none → Civils contractor |
| 1.4 | Construct site roads | was named Bouwwegen aanleggen; resources none → Civils contractor |
| 1.5 | Start of construction | was named Start bouw |
| 2 | **2. Foundations phase 1 (blocks 1-3)** | was named 2. Fundering Fase 1 (blok 1-3) |
| 2.1 | Piling block 1 (10 terraced houses) | was named Heien blok 1 (10 rijwoningen) |
| 2.2 | Piling block 2 (10 terraced houses) | was named Heien blok 2 (10 rijwoningen) |
| 2.3 | Piling block 3 (10 terraced houses) | was named Heien blok 3 (10 rijwoningen) |
| 2.4 | Foundation beams, blocks 1-3 | was named Funderingsbalken blok 1-3; resources none → Concrete C20/25 |
| 2.5 | Ground floor slab, blocks 1-3 | was named Begane grondvloer blok 1-3; resources none → Concrete C20/25 |
| 3 | **3. Foundations phase 2 (blocks 4-5)** | was named 3. Fundering Fase 2 (blok 4-5) |
| 3.1 | Piling block 4 (10 terraced houses) | was named Heien blok 4 (10 rijwoningen) |
| 3.2 | Piling block 5 (10 semi-detached) | was named Heien blok 5 (10 2-1-kap) |
| 3.3 | Foundation beams, blocks 4-5 | was named Funderingsbalken blok 4-5; resources none → Concrete C20/25 |
| 3.4 | Ground floor slab, blocks 4-5 | was named Begane grondvloer blok 4-5; resources none → Concrete C20/25 |
| 4 | **4. Structural works phase 1** | was named 4. Ruwbouw Fase 1 |
| 4.1 | Masonry ground floor, blocks 1-3 | was named Metselwerk BG blok 1-3; resources none → Bricklayers |
| 4.2 | Upper floor slab, blocks 1-3 | was named Verdiepingsvloer blok 1-3 |
| 4.3 | Masonry upper floor, blocks 1-3 | was named Metselwerk verdieping blok 1-3; resources none → Bricklayers |
| 4.4 | Roof structure, blocks 1-3 | was named Kapconstructie blok 1-3; resources none → Carpenters |
| 4.5 | Roof tiles, blocks 1-3 | was named Dakpannen blok 1-3; resources none → Carpenters |
| 4.6 | Topping out, phase 1 | was named Hoogste punt fase 1 |
| 5 | **5. Structural works phase 2** | was named 5. Ruwbouw Fase 2 |
| 5.1 | Masonry ground floor, blocks 4-5 | was named Metselwerk BG blok 4-5; resources none → Bricklayers |
| 5.2 | Upper floor slab, blocks 4-5 | was named Verdiepingsvloer blok 4-5 |
| 5.3 | Masonry upper floor, blocks 4-5 | was named Metselwerk verdieping blok 4-5; resources none → Bricklayers |
| 5.4 | Roof structure, blocks 4-5 | was named Kapconstructie blok 4-5; resources none → Carpenters |
| 5.5 | Roof tiles, blocks 4-5 | was named Dakpannen blok 4-5; resources none → Carpenters |
| 5.6 | Topping out, phase 2 | was named Hoogste punt fase 2 |
| 6 | **6. Facades & roofs** | was named 6. Gevels & Daken |
| 6.1 | Window frames, blocks 1-3 | was named Kozijnen blok 1-3; resources none → Carpenters |
| 6.2 | Window frames, blocks 4-5 | was named Kozijnen blok 4-5; resources none → Carpenters |
| 6.3 | Facade sealing and insulation | was named Geveldichting en isolatie |
| 6.4 | Gutters and rainwater downpipes | was named Dakgoten en HWA |
| 6.5 | Wind and weathertight, all blocks | was named Wind- en waterdicht alle blokken |
| 7 | **7. Building services** | was named 7. Installaties |
| 7.1 | Electrical, blocks 1-3 | was named Elektra blok 1-3; resources none → MEP fitters |
| 7.2 | Electrical, blocks 4-5 | was named Elektra blok 4-5; resources none → MEP fitters |
| 7.3 | Plumbing, blocks 1-3 | was named Loodgieter blok 1-3; resources none → MEP fitters |
| 7.4 | Plumbing, blocks 4-5 | was named Loodgieter blok 4-5; resources none → MEP fitters |
| 7.5 | Heat pumps, all dwellings | was named Warmtepompen alle woningen; resources none → MEP fitters |
| 7.6 | Heat recovery ventilation units | was named Ventilatie WTW units; resources none → MEP fitters |
| 8 | **8. Fit-out phase 1** | was named 8. Afbouw Fase 1 |
| 8.1 | Plastering, blocks 1-3 | was named Stucwerk blok 1-3; resources none → Plasterers |
| 8.2 | Tiling, blocks 1-3 | was named Tegelwerk blok 1-3; resources none → Tilers |
| 8.3 | Kitchens, blocks 1-3 | was named Keukens blok 1-3; resources none → Kitchen fitters |
| 8.4 | Painting, blocks 1-3 | was named Schilderwerk blok 1-3; resources none → Painters |
| 8.5 | Floor finishes, blocks 1-3 | was named Vloerafwerking blok 1-3 |
| 9 | **9. Fit-out phase 2** | was named 9. Afbouw Fase 2 |
| 9.1 | Plastering, blocks 4-5 | was named Stucwerk blok 4-5; resources none → Plasterers |
| 9.2 | Tiling, blocks 4-5 | was named Tegelwerk blok 4-5; resources none → Tilers |
| 9.3 | Kitchens, blocks 4-5 | was named Keukens blok 4-5; resources none → Kitchen fitters |
| 9.4 | Painting, blocks 4-5 | was named Schilderwerk blok 4-5; resources none → Painters |
| 9.5 | Floor finishes, blocks 4-5 | was named Vloerafwerking blok 4-5 |
| 10 | **10. Final site works** | was named 10. Woonrijp maken |
| 10.1 | Connect permanent sewer | was named Definitieve riolering aansluiten; resources none → Civils contractor |
| 10.2 | Paving and pavements | was named Straatwerk en trottoirs; resources none → Civils contractor |
| 10.3 | Construct parking spaces | was named Parkeerplaatsen aanleggen; resources none → Civils contractor |
| 10.4 | Landscaping and trees | was named Groenvoorziening en bomen; resources none → Civils contractor |
| 10.5 | Play equipment | was named Speelvoorzieningen |
| 10.6 | Street lighting | was named Straatverlichting |
| 11 | **11. Handover** | was named 11. Oplevering |
| 11.1 | Pre-handover inspection, phase 1 | was named Vooroplevering fase 1 |
| 11.2 | Pre-handover inspection, phase 2 | was named Vooroplevering fase 2 |
| 11.3 | Handover of dwellings | was named Oplevering woningen |
| 11.4 | Residential district complete | was named Woonwijk gereed |

## Version 4 (saved 2026-09-28)

Note of the change: Merge pull request #241 from OpenAEC-Foundation/claude/future-bottlenecks-bugs-1ybv83

Last finish stays 2028-06-27.

Changed:

| ID | Task | Duration |
| --- | --- | --- |
| 1 | **1. Site preparation** | 5d → 39d |
| 2 | **2. Foundations phase 1 (blocks 1-3)** | 5d → 39d |
| 3 | **3. Foundations phase 2 (blocks 4-5)** | 5d → 27d |
| 4 | **4. Structural works phase 1** | 5d → 62d |
| 5 | **5. Structural works phase 2** | 5d → 53d |
| 6 | **6. Facades & roofs** | 5d → 38d |
| 7 | **7. Building services** | 5d → 56d |
| 8 | **8. Fit-out phase 1** | 5d → 51d |
| 9 | **9. Fit-out phase 2** | 5d → 38d |
| 10 | **10. Final site works** | 5d → 51d |
| 11 | **11. Handover** | 5d → 20d |

## Version 5 (saved 2026-10-29)

Note of the change: Merge remote-tracking branch 'origin/main' into afmaken/pr-654

Last finish 2028-06-27 → 2028-06-28 (+1d).

Changed:

| ID | Task | Start | Finish | Duration |
| --- | --- | --- | --- | --- |
| 1 | **1. Site preparation** |  |  | 39d → 38d |
| 3 | **3. Foundations phase 2 (blocks 4-5)** |  | 2027-05-13 → 2027-05-14 (+1d) |  |
| 3.1 | Piling block 4 (10 terraced houses) |  | 2027-04-13 → 2027-04-14 (+1d) |  |
| 3.2 | Piling block 5 (10 semi-detached) |  | 2027-04-16 → 2027-04-19 (+3d) |  |
| 3.3 | Foundation beams, blocks 4-5 |  | 2027-04-29 → 2027-04-30 (+1d) |  |
| 3.4 | Ground floor slab, blocks 4-5 |  | 2027-05-13 → 2027-05-14 (+1d) |  |
| 4 | **4. Structural works phase 1** |  | 2027-08-23 → 2027-08-24 (+1d) |  |
| 4.1 | Masonry ground floor, blocks 1-3 |  | 2027-05-27 → 2027-05-28 (+1d) |  |
| 4.2 | Upper floor slab, blocks 1-3 |  | 2027-06-10 → 2027-06-11 (+1d) |  |
| 4.3 | Masonry upper floor, blocks 1-3 |  | 2027-07-01 → 2027-07-02 (+1d) |  |
| 4.4 | Roof structure, blocks 1-3 |  | 2027-07-19 → 2027-07-20 (+1d) |  |
| 4.5 | Roof tiles, blocks 1-3 |  | 2027-08-23 → 2027-08-24 (+1d) |  |
| 4.6 | Topping out, phase 1 | 2027-08-23 → 2027-08-24 (+1d) | 2027-08-23 → 2027-08-24 (+1d) |  |
| 5 | **5. Structural works phase 2** |  | 2027-11-04 → 2027-11-05 (+1d) |  |
| 5.1 | Masonry ground floor, blocks 4-5 |  | 2027-09-13 → 2027-09-14 (+1d) |  |
| 5.2 | Upper floor slab, blocks 4-5 |  | 2027-09-23 → 2027-09-24 (+1d) |  |
| 5.3 | Masonry upper floor, blocks 4-5 |  | 2027-10-11 → 2027-10-12 (+1d) |  |
| 5.4 | Roof structure, blocks 4-5 |  | 2027-10-25 → 2027-10-26 (+1d) |  |
| 5.5 | Roof tiles, blocks 4-5 |  | 2027-11-04 → 2027-11-05 (+1d) |  |
| 5.6 | Topping out, phase 2 | 2027-11-04 → 2027-11-05 (+1d) | 2027-11-04 → 2027-11-05 (+1d) |  |
| 6 | **6. Facades & roofs** |  | 2027-11-22 → 2027-11-23 (+1d) |  |
| 6.1 | Window frames, blocks 1-3 |  | 2027-10-13 → 2027-10-14 (+1d) |  |
| 6.2 | Window frames, blocks 4-5 |  | 2027-10-25 → 2027-10-26 (+1d) |  |
| 6.3 | Facade sealing and insulation |  | 2027-11-10 → 2027-11-11 (+1d) |  |
| 6.4 | Gutters and rainwater downpipes |  | 2027-11-22 → 2027-11-23 (+1d) |  |
| 6.5 | Wind and weathertight, all blocks | 2027-11-22 → 2027-11-23 (+1d) | 2027-11-22 → 2027-11-23 (+1d) |  |
| 7 | **7. Building services** |  | 2027-12-22 → 2027-12-23 (+1d) |  |
| 7.1 | Electrical, blocks 1-3 |  | 2027-10-21 → 2027-10-22 (+1d) |  |
| 7.2 | Electrical, blocks 4-5 |  | 2027-10-22 → 2027-10-25 (+3d) |  |
| 7.3 | Plumbing, blocks 1-3 |  | 2027-11-05 → 2027-11-08 (+3d) |  |
| 7.4 | Plumbing, blocks 4-5 |  | 2027-11-17 → 2027-11-18 (+1d) |  |
| 7.5 | Heat pumps, all dwellings |  | 2027-12-08 → 2027-12-09 (+1d) |  |
| 7.6 | Heat recovery ventilation units |  | 2027-12-22 → 2027-12-23 (+1d) |  |
| 8 | **8. Fit-out phase 1** |  | 2028-02-14 → 2028-02-15 (+1d) |  |
| 8.1 | Plastering, blocks 1-3 |  | 2027-12-24 → 2027-12-27 (+3d) |  |
| 8.2 | Tiling, blocks 1-3 |  | 2028-01-07 → 2028-01-10 (+3d) |  |
| 8.3 | Kitchens, blocks 1-3 |  | 2028-01-19 → 2028-01-20 (+1d) |  |
| 8.4 | Painting, blocks 1-3 |  | 2028-02-02 → 2028-02-03 (+1d) |  |
| 8.5 | Floor finishes, blocks 1-3 |  | 2028-02-14 → 2028-02-15 (+1d) |  |
| 9 | **9. Fit-out phase 2** |  | 2028-04-06 → 2028-04-07 (+1d) |  |
| 9.1 | Plastering, blocks 4-5 |  | 2028-03-01 → 2028-03-02 (+1d) |  |
| 9.2 | Tiling, blocks 4-5 |  | 2028-03-13 → 2028-03-14 (+1d) |  |
| 9.3 | Kitchens, blocks 4-5 |  | 2028-03-20 → 2028-03-21 (+1d) |  |
| 9.4 | Painting, blocks 4-5 |  | 2028-03-30 → 2028-03-31 (+1d) |  |
| 9.5 | Floor finishes, blocks 4-5 |  | 2028-04-06 → 2028-04-07 (+1d) |  |
| 10 | **10. Final site works** |  | 2028-05-29 → 2028-05-30 (+1d) |  |
| 10.1 | Connect permanent sewer |  | 2028-03-22 → 2028-03-23 (+1d) |  |
| 10.2 | Paving and pavements |  | 2028-04-12 → 2028-04-13 (+1d) |  |
| 10.3 | Construct parking spaces |  | 2028-04-26 → 2028-04-28 (+2d) |  |
| 10.4 | Landscaping and trees |  | 2028-05-12 → 2028-05-15 (+3d) |  |
| 10.5 | Play equipment |  | 2028-05-19 → 2028-05-22 (+3d) |  |
| 10.6 | Street lighting |  | 2028-05-29 → 2028-05-30 (+1d) |  |
| 11 | **11. Handover** |  | 2028-06-27 → 2028-06-28 (+1d) |  |
| 11.1 | Pre-handover inspection, phase 1 |  | 2028-06-06 → 2028-06-07 (+1d) |  |
| 11.2 | Pre-handover inspection, phase 2 |  | 2028-06-13 → 2028-06-14 (+1d) |  |
| 11.3 | Handover of dwellings |  | 2028-06-27 → 2028-06-28 (+1d) |  |
| 11.4 | Residential district complete | 2028-06-27 → 2028-06-28 (+1d) | 2028-06-27 → 2028-06-28 (+1d) |  |
