# Bouwplanning v1.0

How a schedule from an IFC model changed from version to version. A marks actual dates.

## Version 1 (saved 2026-07-07)

Note of the change: feat(2.10): golf 2 — geavanceerde schema-uitbreidingen + GROOT-showcase + externe koppeling

| ID | Task | Duration | Start | Finish | Predecessors | Complete | Total float |
| --- | --- | --- | --- | --- | --- | --- | --- |
| 1 | Start project Appartementencomplex | 0d | 2027-05-24 | 2027-05-24 |  |  | 0d |
| 2 | **1. Voorbereiding & bouwrijp maken** | 5d | 2027-03-01 | 2027-05-24 |  |  | 0d |
| 2.1 | Sonderingen & grondonderzoek | 3d | 2027-03-01 A | 2027-03-04 A | 1 | 100% | 0d |
| 2.2 | Omgevingsvergunning verkrijgen | 10d | 2027-03-04 A | 2027-03-18 A | 2.1 | 100% | 0d |
| 2.3 | Wegafzetting gemeente (vergunde stremmingsperiode) | 3d | 2027-03-11 A | 2027-03-16 A | 1 | 100% | 0d |
| 2.4 | Bouwweg aanleggen | 4d | 2027-03-18 A | 2027-03-24 A | 2.2, 2.3 | 100% | 0d |
| 2.5 | Bouwketen plaatsen | 2d | 2027-03-24 A | 2027-03-26 A | 2.4 | 100% | 0d |
| 2.6 | Nutsaansluitingen aanleggen | 4d | 2027-03-26 A | 2027-04-01 A | 2.5 | 100% | 0d |
| 2.7 | Bemaling plaatsen | 5d | 2027-04-01 A | 2027-04-08 A | 2.6 | 100% | 0d |
| 2.8 | Terrein bouwrijp | 0d | 2027-05-24 | 2027-05-24 | 2.7 |  | 0d |
| 3 | **2. Fundering & kelder/parkeergarage** | 5d | 2027-04-08 | 2027-06-23 |  |  | 0d |
| 3.1 | Bemaling in bedrijf stellen | 2d | 2027-04-08 A | 2027-04-12 A | 2.8 | 100% | 0d |
| 3.2 | Grondwerk bouwput | 6d | 2027-04-12 A | 2027-04-20 A | 3.1 | 100% | 0d |
| 3.3 | Damwanden plaatsen | 5d | 2027-04-20 A | 2027-04-27 A | 3.2 | 100% | 0d |
| 3.4 | Funderingsbalken storten (gezamenlijk) | 4d | 2027-04-27 A | 2027-05-03 A | 3.3 | 100% | 0d |
| 3.5 | Grondwerk kelder â Toren A | 3d | 2027-05-03 A | 2027-05-06 A | 3.4 | 100% | 0d |
| 3.6 | Vlechtwerk wapening keldervloer â Toren A | 8h | 2027-05-24 | 2027-05-24 | 3.5 |  | 0d |
| 3.7 | Stort keldervloer â Toren A | 6h | 2027-05-25 | 2027-05-25 | 3.6 |  | 0d |
| 3.8 | Vlechtwerk wapening kelderwanden â Toren A | 8h | 2027-05-25 | 2027-05-26 | 3.7 |  | 0d |
| 3.9 | Stort kelderwanden â Toren A | 4h | 2027-05-26 | 2027-05-27 | 3.8 |  | 0d |
| 3.10 | Grondwerk kelder â Toren B | 3d | 2027-05-03 A | 2027-05-06 A | 3.4 | 100% | 0d |
| 3.11 | Vlechtwerk wapening keldervloer â Toren B | 8h | 2027-05-24 | 2027-05-24 | 3.10 |  | 0d |
| 3.12 | Stort keldervloer â Toren B | 6h | 2027-05-25 | 2027-05-25 | 3.11 |  | 0d |
| 3.13 | Vlechtwerk wapening kelderwanden â Toren B | 8h | 2027-05-25 | 2027-05-26 | 3.12 |  | 0d |
| 3.14 | Stort kelderwanden â Toren B | 4h | 2027-05-26 | 2027-05-27 | 3.13 |  | 0d |
| 3.15 | Grondwerk kelder â Toren C | 3d | 2027-05-03 A | 2027-05-06 A | 3.4 | 100% | 0d |
| 3.16 | Vlechtwerk wapening keldervloer â Toren C | 8h | 2027-05-24 | 2027-05-24 | 3.15 |  | 0d |
| 3.17 | Stort keldervloer â Toren C | 6h | 2027-05-25 | 2027-05-25 | 3.16 |  | 0d |
| 3.18 | Vlechtwerk wapening kelderwanden â Toren C | 8h | 2027-05-25 | 2027-05-26 | 3.17 |  | 0d |
| 3.19 | Stort kelderwanden â Toren C | 4h | 2027-05-26 | 2027-05-27 | 3.18 |  | 0d |
| 3.20 | Afdichting kelder | 3d | 2027-05-28 | 2027-06-01 | 3.9, 3.14, 3.19 |  | 0d |
| 3.21 | Terugstorten grond rondom kelder | 3d | 2027-06-02 | 2027-06-04 | 3.20 |  | 0d |
| 3.22 | Parkeerdek storten (afdek begane grond) | 5d | 2027-06-07 | 2027-06-11 | 3.21 |  | 0d |
| 3.23 | Damwanden verwijderen | 2d | 2027-06-14 | 2027-06-15 | 3.22 |  | 0d |
| 3.24 | Kelder waterdicht â keuring | 0d | 2027-06-15 | 2027-06-15 | 3.23 |  | 0d |
| 3.25 | Meerwerk: extra bergingen kelder | 6d | 2027-06-16 | 2027-06-23 | 3.24 |  | 181d |
| 4 | **3. Ruwbouw torens A/B/C (parallel)** | 5d | 2027-05-18 | 2027-09-24 |  |  | 0d |
| 4.1 | Torenkraan opbouwen | 3d | 2027-05-17 A | 2027-05-20 A | 3.24 | 100% | 5d |
| 4.2 | **Ruwbouw â Toren A** | 5d | 2027-05-28 | 2027-09-22 |  |  | 0d |
| 4.2.1 | Begane grondvloer storten â Toren A | 4d | 2027-05-28 | 2027-06-02 | 4.1, 3.9 |  | 0d |
| 4.2.2 | Wanden verdieping 1 â Toren A | 4d | 2027-06-03 | 2027-06-08 | 4.2.1 |  | 0d |
| 4.2.3 | Vloer verdieping 1 â Toren A | 3d | 2027-06-07 | 2027-06-09 | 4.2.2 SS+2d |  | 0d |
| 4.2.4 | Wanden verdieping 2 â Toren A | 4d | 2027-06-10 | 2027-06-15 | 4.2.3 |  | 0d |
| 4.2.5 | Vloer verdieping 2 â Toren A | 3d | 2027-06-14 | 2027-06-16 | 4.2.4 SS+2d |  | 0d |
| 4.2.6 | Wanden verdieping 3 â Toren A | 4d | 2027-06-17 | 2027-06-22 | 4.2.5 |  | 0d |
| 4.2.7 | Vloer verdieping 3 â Toren A | 3d | 2027-06-21 | 2027-06-23 | 4.2.6 SS+2d |  | 0d |
| 4.2.8 | Wanden verdieping 4 â Toren A | 4d | 2027-06-24 | 2027-06-29 | 4.2.7 |  | 0d |
| 4.2.9 | Vloer verdieping 4 â Toren A | 3d | 2027-06-28 | 2027-06-30 | 4.2.8 SS+2d |  | 0d |
| 4.2.10 | Wanden verdieping 5 â Toren A | 4d | 2027-07-01 | 2027-07-06 | 4.2.9 |  | 0d |
| 4.2.11 | Vloer verdieping 5 â Toren A | 3d | 2027-07-05 | 2027-07-07 | 4.2.10 SS+2d |  | 0d |
| 4.2.12 | Wanden verdieping 6 â Toren A | 4d | 2027-07-08 | 2027-07-13 | 4.2.11 |  | 0d |
| 4.2.13 | Vloer verdieping 6 â Toren A | 3d | 2027-07-12 | 2027-07-14 | 4.2.12 SS+2d |  | 0d |
| 4.2.14 | Wanden verdieping 7 â Toren A | 4d | 2027-07-15 | 2027-07-20 | 4.2.13 |  | 0d |
| 4.2.15 | Vloer verdieping 7 â Toren A | 3d | 2027-07-19 | 2027-07-21 | 4.2.14 SS+2d |  | 0d |
| 4.2.16 | Wanden verdieping 8 â Toren A | 4d | 2027-07-22 | 2027-08-17 | 4.2.15 |  | 0d |
| 4.2.17 | Vloer verdieping 8 â Toren A | 3d | 2027-08-16 | 2027-08-18 | 4.2.16 SS+2d |  | 0d |
| 4.2.18 | Wanden verdieping 9 â Toren A | 4d | 2027-08-19 | 2027-08-24 | 4.2.17 |  | 0d |
| 4.2.19 | Vloer verdieping 9 â Toren A | 3d | 2027-08-23 | 2027-08-25 | 4.2.18 SS+2d |  | 0d |
| 4.2.20 | Wanden verdieping 10 â Toren A | 4d | 2027-08-26 | 2027-08-31 | 4.2.19 |  | 0d |
| 4.2.21 | Vloer verdieping 10 â Toren A | 3d | 2027-08-30 | 2027-09-01 | 4.2.20 SS+2d |  | 0d |
| 4.2.22 | Wanden verdieping 11 â Toren A | 4d | 2027-09-02 | 2027-09-07 | 4.2.21 |  | 0d |
| 4.2.23 | Vloer verdieping 11 â Toren A | 3d | 2027-09-06 | 2027-09-08 | 4.2.22 SS+2d |  | 0d |
| 4.2.24 | Wanden verdieping 12 â Toren A | 4d | 2027-09-09 | 2027-09-14 | 4.2.23 |  | 0d |
| 4.2.25 | Vloer verdieping 12 â Toren A | 3d | 2027-09-13 | 2027-09-15 | 4.2.24 SS+2d |  | 0d |
| 4.2.26 | Trappenhuis & liftschacht â Toren A | 36d | 2027-05-28 | 2027-07-16 | 4.2.1 SS |  | 164d |
| 4.2.27 | Dakconstructie plaatsen â Toren A | 5d | 2027-09-16 | 2027-09-22 | 4.2.25 |  | 0d |
| 4.2.28 | Ruwbouw gereed â Toren A | 0d | 2027-09-22 | 2027-09-22 | 4.2.26, 4.2.27 |  | 131d |
| 4.2.29 | Ruwbouw toren A (LOE) | 69d | 2027-05-28 | 2027-09-22 | 4.2.1 SS, 4.2.27 FF |  | 0d |
| 4.3 | **Ruwbouw â Toren B** | 5d | 2027-05-28 | 2027-09-22 |  |  | 0d |
| 4.3.1 | Begane grondvloer storten â Toren B | 4d | 2027-05-28 | 2027-06-02 | 4.1, 3.14 |  | 0d |

| ID | Task | Duration | Start | Finish | Predecessors | Total float |
| --- | --- | --- | --- | --- | --- | --- |
| 4.3.2 | Wanden verdieping 1 â Toren B | 4d | 2027-06-03 | 2027-06-08 | 4.3.1 | 0d |
| 4.3.3 | Vloer verdieping 1 â Toren B | 3d | 2027-06-07 | 2027-06-09 | 4.3.2 SS+2d | 0d |
| 4.3.4 | Wanden verdieping 2 â Toren B | 4d | 2027-06-10 | 2027-06-15 | 4.3.3 | 0d |
| 4.3.5 | Vloer verdieping 2 â Toren B | 3d | 2027-06-14 | 2027-06-16 | 4.3.4 SS+2d | 0d |
| 4.3.6 | Wanden verdieping 3 â Toren B | 4d | 2027-06-17 | 2027-06-22 | 4.3.5 | 0d |
| 4.3.7 | Vloer verdieping 3 â Toren B | 3d | 2027-06-21 | 2027-06-23 | 4.3.6 SS+2d | 0d |
| 4.3.8 | Wanden verdieping 4 â Toren B | 4d | 2027-06-24 | 2027-06-29 | 4.3.7 | 0d |
| 4.3.9 | Vloer verdieping 4 â Toren B | 3d | 2027-06-28 | 2027-06-30 | 4.3.8 SS+2d | 0d |
| 4.3.10 | Wanden verdieping 5 â Toren B | 4d | 2027-07-01 | 2027-07-06 | 4.3.9 | 0d |
| 4.3.11 | Vloer verdieping 5 â Toren B | 3d | 2027-07-05 | 2027-07-07 | 4.3.10 SS+2d | 0d |
| 4.3.12 | Wanden verdieping 6 â Toren B | 4d | 2027-07-08 | 2027-07-13 | 4.3.11 | 0d |
| 4.3.13 | Vloer verdieping 6 â Toren B | 3d | 2027-07-12 | 2027-07-14 | 4.3.12 SS+2d | 0d |
| 4.3.14 | Wanden verdieping 7 â Toren B | 4d | 2027-07-15 | 2027-07-20 | 4.3.13 | 0d |
| 4.3.15 | Vloer verdieping 7 â Toren B | 3d | 2027-07-19 | 2027-07-21 | 4.3.14 SS+2d | 0d |
| 4.3.16 | Wanden verdieping 8 â Toren B | 4d | 2027-07-22 | 2027-08-17 | 4.3.15 | 0d |
| 4.3.17 | Vloer verdieping 8 â Toren B | 3d | 2027-08-16 | 2027-08-18 | 4.3.16 SS+2d | 0d |
| 4.3.18 | Wanden verdieping 9 â Toren B | 4d | 2027-08-19 | 2027-08-24 | 4.3.17 | 0d |
| 4.3.19 | Vloer verdieping 9 â Toren B | 3d | 2027-08-23 | 2027-08-25 | 4.3.18 SS+2d | 0d |
| 4.3.20 | Wanden verdieping 10 â Toren B | 4d | 2027-08-26 | 2027-08-31 | 4.3.19 | 0d |
| 4.3.21 | Vloer verdieping 10 â Toren B | 3d | 2027-08-30 | 2027-09-01 | 4.3.20 SS+2d | 0d |
| 4.3.22 | Wanden verdieping 11 â Toren B | 4d | 2027-09-02 | 2027-09-07 | 4.3.21 | 0d |
| 4.3.23 | Vloer verdieping 11 â Toren B | 3d | 2027-09-06 | 2027-09-08 | 4.3.22 SS+2d | 0d |
| 4.3.24 | Wanden verdieping 12 â Toren B | 4d | 2027-09-09 | 2027-09-14 | 4.3.23 | 0d |
| 4.3.25 | Vloer verdieping 12 â Toren B | 3d | 2027-09-13 | 2027-09-15 | 4.3.24 SS+2d | 0d |
| 4.3.26 | Trappenhuis & liftschacht â Toren B | 36d | 2027-05-28 | 2027-07-16 | 4.3.1 SS | 164d |
| 4.3.27 | Dakconstructie plaatsen â Toren B | 5d | 2027-09-16 | 2027-09-22 | 4.3.25 | 0d |
| 4.3.28 | Ruwbouw gereed â Toren B | 0d | 2027-09-22 | 2027-09-22 | 4.3.26, 4.3.27 | 131d |
| 4.4 | **Ruwbouw â Toren C** | 5d | 2027-05-28 | 2027-09-22 |  | 3d |
| 4.4.1 | Begane grondvloer storten â Toren C | 4d | 2027-05-28 | 2027-06-02 | 4.1, 3.19 | 3d |
| 4.4.2 | Wanden verdieping 1 â Toren C | 4d | 2027-06-03 | 2027-06-08 | 4.4.1 | 3d |
| 4.4.3 | Vloer verdieping 1 â Toren C | 3d | 2027-06-07 | 2027-06-09 | 4.4.2 SS+2d | 3d |
| 4.4.4 | Wanden verdieping 2 â Toren C | 4d | 2027-06-10 | 2027-06-15 | 4.4.3 | 3d |
| 4.4.5 | Vloer verdieping 2 â Toren C | 3d | 2027-06-14 | 2027-06-16 | 4.4.4 SS+2d | 3d |
| 4.4.6 | Wanden verdieping 3 â Toren C | 4d | 2027-06-17 | 2027-06-22 | 4.4.5 | 3d |
| 4.4.7 | Vloer verdieping 3 â Toren C | 3d | 2027-06-21 | 2027-06-23 | 4.4.6 SS+2d | 3d |
| 4.4.8 | Wanden verdieping 4 â Toren C | 4d | 2027-06-24 | 2027-06-29 | 4.4.7 | 3d |
| 4.4.9 | Vloer verdieping 4 â Toren C | 3d | 2027-06-28 | 2027-06-30 | 4.4.8 SS+2d | 3d |
| 4.4.10 | Wanden verdieping 5 â Toren C | 4d | 2027-07-01 | 2027-07-06 | 4.4.9 | 3d |
| 4.4.11 | Vloer verdieping 5 â Toren C | 3d | 2027-07-05 | 2027-07-07 | 4.4.10 SS+2d | 3d |
| 4.4.12 | Wanden verdieping 6 â Toren C | 4d | 2027-07-08 | 2027-07-13 | 4.4.11 | 3d |
| 4.4.13 | Vloer verdieping 6 â Toren C | 3d | 2027-07-12 | 2027-07-14 | 4.4.12 SS+2d | 3d |
| 4.4.14 | Wanden verdieping 7 â Toren C | 4d | 2027-07-15 | 2027-07-20 | 4.4.13 | 3d |
| 4.4.15 | Vloer verdieping 7 â Toren C | 3d | 2027-07-19 | 2027-07-21 | 4.4.14 SS+2d | 3d |
| 4.4.16 | Wanden verdieping 8 â Toren C | 4d | 2027-07-22 | 2027-08-17 | 4.4.15 | 3d |
| 4.4.17 | Vloer verdieping 8 â Toren C | 3d | 2027-08-16 | 2027-08-18 | 4.4.16 SS+2d | 3d |
| 4.4.18 | Wanden verdieping 9 â Toren C | 4d | 2027-08-19 | 2027-08-24 | 4.4.17 | 3d |
| 4.4.19 | Vloer verdieping 9 â Toren C | 3d | 2027-08-23 | 2027-08-25 | 4.4.18 SS+2d | 3d |
| 4.4.20 | Wanden verdieping 10 â Toren C | 4d | 2027-08-26 | 2027-08-31 | 4.4.19 | 3d |
| 4.4.21 | Vloer verdieping 10 â Toren C | 3d | 2027-08-30 | 2027-09-01 | 4.4.20 SS+2d | 3d |
| 4.4.22 | Wanden verdieping 11 â Toren C | 4d | 2027-09-02 | 2027-09-07 | 4.4.21 | 3d |
| 4.4.23 | Vloer verdieping 11 â Toren C | 3d | 2027-09-06 | 2027-09-08 | 4.4.22 SS+2d | 3d |
| 4.4.24 | Wanden verdieping 12 â Toren C | 4d | 2027-09-09 | 2027-09-14 | 4.4.23 | 3d |
| 4.4.25 | Vloer verdieping 12 â Toren C | 3d | 2027-09-13 | 2027-09-15 | 4.4.24 SS+2d | 3d |
| 4.4.26 | Trappenhuis & liftschacht â Toren C | 36d | 2027-05-28 | 2027-07-16 | 4.4.1 SS | 164d |
| 4.4.27 | Dakconstructie plaatsen â Toren C | 5d | 2027-09-16 | 2027-09-22 | 4.4.25 | 3d |
| 4.4.28 | Ruwbouw gereed â Toren C | 0d | 2027-09-22 | 2027-09-22 | 4.4.26, 4.4.27 | 131d |
| 4.5 | Torenkraan afbreken | 2d | 2027-09-23 | 2027-09-24 | 4.2.28, 4.3.28, 4.4.28, 3.25 | 131d |
| 5 | **4. Gevel & dak** | 5d | 2027-06-14 | 2027-11-15 |  | 0d |
| 5.1 | **Gevel & dak â Toren A** | 5d | 2027-09-23 | 2027-11-09 |  | 0d |
| 5.1.1 | Steigerwerk plaatsen â Toren A | 3d | 2027-09-23 | 2027-09-27 | 4.2.27 | 0d |
| 5.1.2 | Gevelisolatie aanbrengen â Toren A | 8d | 2027-09-28 | 2027-10-07 | 5.1.1 | 0d |
| 5.1.3 | Gevelbekleding monteren â Toren A | 10d | 2027-10-08 | 2027-10-21 | 5.1.2 | 0d |
| 5.1.4 | Kozijnen plaatsen â Toren A | 6d | 2027-10-22 | 2027-10-29 | 5.1.3 | 0d |
| 5.1.5 | Dakisolatie aanbrengen â Toren A | 5d | 2027-09-23 | 2027-09-29 | 4.2.27 | 19d |
| 5.1.6 | Dakbedekking aanbrengen â Toren A | 5d | 2027-09-30 | 2027-10-06 | 5.1.5 | 19d |
| 5.1.7 | Balkonhekwerken monteren â Toren A | 5d | 2027-11-01 | 2027-11-05 | 5.1.4 | 0d |
| 5.1.8 | Regenwaterafvoer aansluiten â Toren A | 3d | 2027-10-07 | 2027-10-11 | 5.1.6 | 19d |
| 5.1.9 | Steigerwerk verwijderen â Toren A | 2d | 2027-11-08 | 2027-11-09 | 5.1.7, 5.1.8 | 0d |
| 5.2 | **Gevel & dak â Toren B** | 5d | 2027-09-23 | 2027-11-09 |  | 0d |
| 5.2.1 | Steigerwerk plaatsen â Toren B | 3d | 2027-09-23 | 2027-09-27 | 4.3.27 | 0d |

| ID | Task | Duration | Start | Finish | Predecessors | Total float |
| --- | --- | --- | --- | --- | --- | --- |
| 5.2.2 | Gevelisolatie aanbrengen â Toren B | 8d | 2027-09-28 | 2027-10-07 | 5.2.1 | 0d |
| 5.2.3 | Gevelbekleding monteren â Toren B | 10d | 2027-10-08 | 2027-10-21 | 5.2.2 | 0d |
| 5.2.4 | Kozijnen plaatsen â Toren B | 6d | 2027-10-22 | 2027-10-29 | 5.2.3 | 0d |
| 5.2.5 | Dakisolatie aanbrengen â Toren B | 5d | 2027-09-23 | 2027-09-29 | 4.3.27 | 19d |
| 5.2.6 | Dakbedekking aanbrengen â Toren B | 5d | 2027-09-30 | 2027-10-06 | 5.2.5 | 19d |
| 5.2.7 | Balkonhekwerken monteren â Toren B | 5d | 2027-11-01 | 2027-11-05 | 5.2.4 | 0d |
| 5.2.8 | Regenwaterafvoer aansluiten â Toren B | 3d | 2027-10-07 | 2027-10-11 | 5.2.6 | 19d |
| 5.2.9 | Steigerwerk verwijderen â Toren B | 2d | 2027-11-08 | 2027-11-09 | 5.2.7, 5.2.8 | 0d |
| 5.3 | **Gevel & dak â Toren C** | 5d | 2027-09-23 | 2027-11-09 |  | 3d |
| 5.3.1 | Steigerwerk plaatsen â Toren C | 3d | 2027-09-23 | 2027-09-27 | 4.4.27 | 3d |
| 5.3.2 | Gevelisolatie aanbrengen â Toren C | 8d | 2027-09-28 | 2027-10-07 | 5.3.1 | 3d |
| 5.3.3 | Gevelbekleding monteren â Toren C | 10d | 2027-10-08 | 2027-10-21 | 5.3.2 | 3d |
| 5.3.4 | Kozijnen plaatsen â Toren C | 6d | 2027-10-22 | 2027-10-29 | 5.3.3 | 3d |
| 5.3.5 | Dakisolatie aanbrengen â Toren C | 5d | 2027-09-23 | 2027-09-29 | 4.4.27 | 22d |
| 5.3.6 | Dakbedekking aanbrengen â Toren C | 5d | 2027-09-30 | 2027-10-06 | 5.3.5 | 22d |
| 5.3.7 | Balkonhekwerken monteren â Toren C | 5d | 2027-11-01 | 2027-11-05 | 5.3.4 | 3d |
| 5.3.8 | Regenwaterafvoer aansluiten â Toren C | 3d | 2027-10-07 | 2027-10-11 | 5.3.6 | 22d |
| 5.3.9 | Steigerwerk verwijderen â Toren C | 2d | 2027-11-08 | 2027-11-09 | 5.3.7, 5.3.8 | 3d |
| 5.4 | Gevelbeplating hoofdentree | 4d | 2027-11-10 | 2027-11-15 | 5.1.9 | 71d |
| 5.5 | Overkapping parkeerdek plaatsen | 5d | 2027-06-14 | 2027-06-18 | 3.22 | 152d |
| 6 | **5. Installaties (MEP)** | 5d | 2027-11-10 | 2027-12-30 |  | 0d |
| 6.1 | Warmtecentrale plaatsen | 6d | 2027-11-16 | 2027-11-23 | 5.4 | 78d |
| 6.2 | Hoofdverdeler elektra aansluiten | 4d | 2027-11-24 | 2027-11-29 | 6.1 | 78d |
| 6.3 | Noodstroomaggregaat plaatsen & testen | 3d | 2027-11-30 | 2027-12-02 | 6.2 | 78d |
| 6.4 | Datacentrum serverruimte inrichten | 4d | 2027-12-03 | 2027-12-08 | 6.3 | 78d |
| 6.5 | **Installaties â Toren A** | 5d | 2027-11-10 | 2027-12-30 |  | 0d |
| 6.5.1 | Werktuigbouwkundige installatie â Toren A | 8d | 2027-11-10 | 2027-11-19 | 5.1.9 | 0d |
| 6.5.2 | Elektra aanleggen â Toren A | 7d | 2027-11-12 | 2027-11-22 | 6.5.1 SS+2d | 0d |
| 6.5.3 | Ventilatiekanalen aansluiten â Toren A | 5d | 2027-11-23 | 2027-11-29 | 6.5.2 | 0d |
| 6.5.4 | Sprinklerinstallatie aanleggen â Toren A | 5d | 2027-11-30 | 2027-12-06 | 6.5.3 | 0d |
| 6.5.5 | Data/ICT-bekabeling aanleggen â Toren A | 4d | 2027-12-07 | 2027-12-10 | 6.5.4 | 0d |
| 6.5.6 | Brandmeldinstallatie aanleggen â Toren A | 4d | 2027-12-13 | 2027-12-16 | 6.5.5 | 0d |
| 6.5.7 | Levering & installatie liftinstallatie â Toren A | 10d | 2027-12-17 | 2027-12-30 | 6.5.6 | 0d |
| 6.5.8 | Oplevermeting installaties â Toren A | 0d | 2027-12-30 | 2027-12-30 | 6.5.7 | 0d |
| 6.6 | **Installaties â Toren B** | 5d | 2027-11-10 | 2027-12-30 |  | 0d |
| 6.6.1 | Werktuigbouwkundige installatie â Toren B | 8d | 2027-11-10 | 2027-11-19 | 5.2.9 | 0d |
| 6.6.2 | Elektra aanleggen â Toren B | 7d | 2027-11-12 | 2027-11-22 | 6.6.1 SS+2d | 0d |
| 6.6.3 | Ventilatiekanalen aansluiten â Toren B | 5d | 2027-11-23 | 2027-11-29 | 6.6.2 | 0d |
| 6.6.4 | Sprinklerinstallatie aanleggen â Toren B | 5d | 2027-11-30 | 2027-12-06 | 6.6.3 | 0d |
| 6.6.5 | Data/ICT-bekabeling aanleggen â Toren B | 4d | 2027-12-07 | 2027-12-10 | 6.6.4 | 0d |
| 6.6.6 | Brandmeldinstallatie aanleggen â Toren B | 4d | 2027-12-13 | 2027-12-16 | 6.6.5 | 0d |
| 6.6.7 | Levering & installatie liftinstallatie â Toren B | 10d | 2027-12-17 | 2027-12-30 | 6.6.6 | 0d |
| 6.6.8 | Oplevermeting installaties â Toren B | 0d | 2027-12-30 | 2027-12-30 | 6.6.7 | 0d |
| 6.7 | **Installaties â Toren C** | 5d | 2027-11-10 | 2027-12-30 |  | 3d |
| 6.7.1 | Werktuigbouwkundige installatie â Toren C | 8d | 2027-11-10 | 2027-11-19 | 5.3.9 | 3d |
| 6.7.2 | Elektra aanleggen â Toren C | 7d | 2027-11-12 | 2027-11-22 | 6.7.1 SS+2d | 3d |
| 6.7.3 | Ventilatiekanalen aansluiten â Toren C | 5d | 2027-11-23 | 2027-11-29 | 6.7.2 | 3d |
| 6.7.4 | Sprinklerinstallatie aanleggen â Toren C | 5d | 2027-11-30 | 2027-12-06 | 6.7.3 | 3d |
| 6.7.5 | Data/ICT-bekabeling aanleggen â Toren C | 4d | 2027-12-07 | 2027-12-10 | 6.7.4 | 3d |
| 6.7.6 | Brandmeldinstallatie aanleggen â Toren C | 4d | 2027-12-13 | 2027-12-16 | 6.7.5 | 3d |
| 6.7.7 | Levering & installatie liftinstallatie â Toren C | 10d | 2027-12-17 | 2027-12-30 | 6.7.6 | 3d |
| 6.7.8 | Oplevermeting installaties â Toren C | 0d | 2027-12-30 | 2027-12-30 | 6.7.7 | 3d |
| 7 | **6. Afbouw** | 5d | 2027-11-16 | 2028-03-27 |  | 0d |
| 7.1 | **Afbouw â Toren A** | 5d | 2027-12-31 | 2028-03-27 |  | 0d |
| 7.1.1 | Stucwerk â Toren A | 15d | 2027-12-31 | 2028-01-20 | 6.5.8 | 0d |
| 7.1.2 | Tegelwerk â Toren A | 10d | 2028-01-21 | 2028-02-03 | 7.1.1 | 0d |
| 7.1.3 | Keukens plaatsen â Toren A | 8d | 2028-02-04 | 2028-02-15 | 7.1.2 | 0d |
| 7.1.4 | Sanitair plaatsen â Toren A | 7d | 2028-02-16 | 2028-02-24 | 7.1.3 | 0d |
| 7.1.5 | Schilderwerk â Toren A | 8d | 2028-02-25 | 2028-03-07 | 7.1.4 | 0d |
| 7.1.6 | Vloerafwerking â Toren A | 5d | 2028-03-08 | 2028-03-14 | 7.1.5 | 0d |
| 7.1.7 | Plafonds afwerken â Toren A | 5d | 2028-03-15 | 2028-03-21 | 7.1.6 | 0d |
| 7.1.8 | Deuren hang- en sluitwerk â Toren A | 4d | 2028-03-22 | 2028-03-27 | 7.1.7 | 0d |
| 7.2 | **Afbouw â Toren B** | 5d | 2027-12-31 | 2028-03-27 |  | 0d |
| 7.2.1 | Stucwerk â Toren B | 15d | 2027-12-31 | 2028-01-20 | 6.6.8 | 0d |
| 7.2.2 | Tegelwerk â Toren B | 10d | 2028-01-21 | 2028-02-03 | 7.2.1 | 0d |
| 7.2.3 | Keukens plaatsen â Toren B | 8d | 2028-02-04 | 2028-02-15 | 7.2.2 | 0d |
| 7.2.4 | Sanitair plaatsen â Toren B | 7d | 2028-02-16 | 2028-02-24 | 7.2.3 | 0d |
| 7.2.5 | Schilderwerk â Toren B | 8d | 2028-02-25 | 2028-03-07 | 7.2.4 | 0d |
| 7.2.6 | Vloerafwerking â Toren B | 5d | 2028-03-08 | 2028-03-14 | 7.2.5 | 0d |
| 7.2.7 | Plafonds afwerken â Toren B | 5d | 2028-03-15 | 2028-03-21 | 7.2.6 | 0d |

| ID | Task | Duration | Start | Finish | Predecessors | Total float |
| --- | --- | --- | --- | --- | --- | --- |
| 7.2.8 | Deuren hang- en sluitwerk â Toren B | 4d | 2028-03-22 | 2028-03-27 | 7.2.7 | 0d |
| 7.3 | **Afbouw â Toren C** | 5d | 2027-12-31 | 2028-03-22 |  | 3d |
| 7.3.1 | Stucwerk â Toren C | 12d | 2027-12-31 | 2028-01-17 | 6.7.8 | 3d |
| 7.3.2 | Tegelwerk â Toren C | 10d | 2028-01-18 | 2028-01-31 | 7.3.1 | 3d |
| 7.3.3 | Keukens plaatsen â Toren C | 8d | 2028-02-01 | 2028-02-10 | 7.3.2 | 3d |
| 7.3.4 | Sanitair plaatsen â Toren C | 7d | 2028-02-11 | 2028-02-21 | 7.3.3 | 3d |
| 7.3.5 | Schilderwerk â Toren C | 8d | 2028-02-22 | 2028-03-02 | 7.3.4 | 3d |
| 7.3.6 | Vloerafwerking â Toren C | 5d | 2028-03-03 | 2028-03-09 | 7.3.5 | 3d |
| 7.3.7 | Plafonds afwerken â Toren C | 5d | 2028-03-10 | 2028-03-16 | 7.3.6 | 3d |
| 7.3.8 | Deuren hang- en sluitwerk â Toren C | 4d | 2028-03-17 | 2028-03-22 | 7.3.7 | 3d |
| 7.4 | Entreehal afwerken | 6d | 2027-11-16 | 2027-11-23 | 5.4 | 71d |
| 7.5 | Fietsenstalling afwerken | 4d | 2027-11-24 | 2027-11-29 | 7.4 | 85d |
| 7.6 | Liftlobby's afwerken | 4d | 2027-11-24 | 2027-11-29 | 7.4 | 71d |
| 7.7 | Gemeenschappelijke trappenhuizen afwerken | 5d | 2027-11-30 | 2027-12-06 | 7.6 | 71d |
| 7.8 | Buitenschilderwerk plint gevel | 4d | 2027-12-07 | 2027-12-10 | 7.7 | 71d |
| 7.9 | Signage & bewegwijzering plaatsen | 2d | 2027-12-13 | 2027-12-14 | 7.8 | 71d |
| 7.10 | Eindschoonmaak gemeenschappelijke ruimtes | 3d | 2027-12-15 | 2027-12-17 | 7.9 | 71d |
| 8 | **7. Terrein & parkeergarage-koppeling** | 5d | 2027-06-21 | 2027-07-23 |  | 152d |
| 8.1 | Nieuwe hoofdontsluiting aanleggen | 4d | 2027-06-21 | 2027-06-24 | 5.5 | 152d |
| 8.2 | Nieuwe hoofdontsluiting in gebruik genomen | 0d | 2027-06-25 | 2027-06-25 | 8.1 | 152d |
| 8.3 | Tijdelijke bouwweg opbreken | 3d | 2027-06-23 | 2027-06-25 | 8.2 SF | 172d |
| 8.4 | Rioolaansluiting terrein hoofdgebouw | 4d | 2027-06-25 | 2027-06-30 | 8.2 | 152d |
| 8.5 | Bestrating parkeerterrein | 6d | 2027-07-01 | 2027-07-08 | 8.4 | 152d |
| 8.6 | Fietsenstalling buiten plaatsen | 3d | 2027-07-09 | 2027-07-13 | 8.5 | 160d |
| 8.7 | Groenvoorziening hoofdterrein aanleggen | 5d | 2027-07-09 | 2027-07-15 | 8.5 | 152d |
| 8.8 | Buitenverlichting plaatsen | 3d | 2027-07-16 | 2027-07-20 | 8.7 | 152d |
| 8.9 | Erfafscheiding plaatsen | 2d | 2027-07-21 | 2027-07-22 | 8.8 | 152d |
| 8.10 | Parkeervakken markeren | 1d | 2027-07-23 | 2027-07-23 | 8.9 | 152d |
| 8.11 | Oplevering terrein â eindinspectie | 0d | 2027-07-23 | 2027-07-23 | 8.10, 8.3, 8.6 | 152d |
| 9 | **8. Oplevering** | 5d | 2027-08-16 | 2028-03-27 |  | 0d |
| 9.1 | Opleverkeuring â Toren A | 0d | 2028-03-27 | 2028-03-27 | 7.1.8, 8.11 | 0d |
| 9.2 | Opleverkeuring â Toren B | 0d | 2028-03-27 | 2028-03-27 | 7.2.8, 8.11 | 0d |
| 9.3 | Opleverkeuring â Toren C | 0d | 2028-03-22 | 2028-03-22 | 7.3.8, 8.11 | 3d |
| 9.4 | Documentatie-overdracht (revisietekeningen) | 3d | 2027-08-16 | 2027-08-18 | 8.11 | 152d |
| 9.5 | Sleuteloverdracht beheerder | 2d | 2027-08-24 | 2027-08-25 | 9.6 | 152d |
| 9.6 | Eindschoonmaak algemene ruimtes | 3d | 2027-08-19 | 2027-08-23 | 9.4 | 152d |
| 9.7 | Projectadministratie & contractuele afronding | 0d | 2027-08-25 | 2027-08-25 | 9.5 | 152d |
| 9.8 | Nazorgperiode gestart | 0d | 2027-08-26 | 2027-08-26 | 9.7 | 152d |
| 9.9 | Onderhoudscontract technische installaties starten | 1d | 2027-08-26 | 2027-08-26 | 9.8 | 152d |

## Version 2 (saved 2026-09-28)

Note of the change: Merge pull request #241 from OpenAEC-Foundation/claude/future-bottlenecks-bugs-1ybv83

Last finish 2028-03-27 → 2028-05-09 (+43d). Complete tasks 15 → 34.

Added:

| ID | Task | Duration | Start | Finish | Predecessors |
| --- | --- | --- | --- | --- | --- |
| 8.12 | Construct new main access road | 4d | 2028-03-17 | 2028-03-22 | 8.11 |
| 8.13 | New main access road in use | 0d | 2028-03-23 | 2028-03-23 | 8.12 |
| 8.14 | Break up temporary site road | 3d | 2028-03-21 | 2028-03-23 | 8.13 SF |
| 8.15 | Site sewer connection, main building | 4d | 2028-03-23 | 2028-03-28 | 8.13 |
| 8.16 | Car park paving | 6d | 2028-03-29 | 2028-04-05 | 8.15 |
| 8.17 | Install outdoor bicycle shelter | 3d | 2028-04-06 | 2028-04-10 | 8.16 |
| 8.18 | Install landscaping, main site | 5d | 2028-04-06 | 2028-04-12 | 8.16 |
| 8.19 | Install external lighting | 3d | 2028-04-13 | 2028-04-19 | 8.18 |
| 8.20 | Install boundary fencing | 2d | 2028-04-20 | 2028-04-21 | 8.19 |
| 8.21 | Mark out parking bays | 1d | 2028-04-24 | 2028-04-24 | 8.20 |
| 8.22 | Site handover — final inspection | 0d | 2028-04-24 | 2028-04-24 | 8.21, 8.14, 8.17 |

Changed:

| ID | Task | Start | Finish | Duration | Complete | Total float | Other |
| --- | --- | --- | --- | --- | --- | --- | --- |
| 1 | Start of Apartment Complex project | 2027-05-24 → 2027-03-01 A (-84d) | 2027-05-24 → 2027-03-01 A (-84d) |  | 0% → 100% | 0d → 1d | was named Start project Appartementencomplex |
| 2 | **1. Preparation & site clearance** | 2027-03-01 A | 2027-05-24 → 2027-04-09 A (-45d) | 5d → 28d | 0% → 100% |  | was named 1. Voorbereiding & bouwrijp maken |
| 2.1 | CPT soundings & soil investigation |  | 2027-03-04 A → 2027-03-03 A (-1d) |  |  | 0d → 1d | was named Sonderingen & grondonderzoek |
| 2.2 | Obtain building permit |  | 2027-03-18 A → 2027-03-17 A (-1d) |  |  | 0d → 1d | was named Omgevingsvergunning verkrijgen |
| 2.3 | Municipal road closure (permitted closure period) |  | 2027-03-16 A → 2027-03-15 A (-1d) |  |  |  | was named Wegafzetting gemeente (vergunde stremmingsperiode) |
| 2.4 | Construct site road |  | 2027-03-24 A → 2027-03-23 A (-1d) |  |  | 0d → 1d | was named Bouwweg aanleggen |
| 2.5 | Place site huts |  | 2027-03-26 A → 2027-03-25 A (-1d) |  |  | 0d → 1d | was named Bouwketen plaatsen |
| 2.6 | Install utility connections | 2027-03-26 A → 2027-03-30 A (+4d) | 2027-04-01 A → 2027-04-02 A (+1d) |  |  | 0d → 1d | was named Nutsaansluitingen aanleggen |
| 2.7 | Install dewatering | 2027-04-01 A → 2027-04-05 A (+4d) | 2027-04-08 A → 2027-04-09 A (+1d) |  |  | 0d → 1d | was named Bemaling plaatsen |
| 2.8 | Site ready for construction | 2027-05-24 → 2027-04-09 A (-45d) | 2027-05-24 → 2027-04-09 A (-45d) |  | 0% → 100% | 0d → 1d | was named Terrein bouwrijp |
| 3 | **2. Foundations & basement/car park** | 2027-04-08 → 2027-04-12 A (+4d) | 2027-06-23 → 2027-07-12 (+19d) | 5d → 62d | 0% → 94% |  | was named 2. Fundering & kelder/parkeergarage |
| 3.1 | Commission dewatering | 2027-04-08 A → 2027-04-12 A (+4d) | 2027-04-12 A → 2027-04-13 A (+1d) |  |  | 0d → 1d | was named Bemaling in bedrijf stellen |
| 3.2 | Excavation, building pit | 2027-04-12 A → 2027-04-14 A (+2d) | 2027-04-20 A → 2027-04-21 A (+1d) |  |  | 0d → 1d | was named Grondwerk bouwput |
| 3.3 | Install sheet piling | 2027-04-20 A → 2027-04-22 A (+2d) | 2027-04-27 A → 2027-04-29 A (+2d) |  |  | 0d → 1d | was named Damwanden plaatsen |
| 3.4 | Pour foundation beams (shared) | 2027-04-27 A → 2027-04-30 A (+3d) | 2027-05-03 A → 2027-05-07 A (+4d) |  |  | 0d → 1d | was named Funderingsbalken storten (gezamenlijk); resources Beton C30/37 → Concrete C30/37 |
| 3.5 | Basement earthworks — Tower A | 2027-05-03 A → 2027-05-10 A (+7d) | 2027-05-06 A → 2027-05-12 A (+6d) |  |  | 0d → 1d | was named Grondwerk kelder â Toren A |
| 3.6 | Rebar fixing, basement floor — Tower A | 2027-05-24 → 2027-05-13 A (-11d) | 2027-05-24 → 2027-05-20 A (-4d) | 8h → 5d | 0% → 100% | 0d → 1d | was named Vlechtwerk wapening keldervloer â Toren A |
| 3.7 | Pour basement floor — Tower A | 2027-05-25 → 2027-05-21 A (-4d) | 2027-05-25 → 2027-05-27 A (+2d) | 6h → 5d | 0% → 100% | 0d → 1d | was named Stort keldervloer â Toren A; resources Beton C30/37 → Concrete C30/37 |
| 3.8 | Rebar fixing, basement walls — Tower A | 2027-05-25 → 2027-05-28 A (+3d) | 2027-05-26 → 2027-06-03 A (+8d) | 8h → 5d | 0% → 100% | 0d → 1d | was named Vlechtwerk wapening kelderwanden â Toren A |
| 3.9 | Pour basement walls — Tower A | 2027-05-26 → 2027-06-04 A (+9d) | 2027-05-27 → 2027-06-10 A (+14d) | 4h → 5d | 0% → 100% | 0d → 1d | was named Stort kelderwanden â Toren A; resources Beton C30/37 → Concrete C30/37 |
| 3.10 | Basement earthworks — Tower B | 2027-05-03 A → 2027-05-10 A (+7d) | 2027-05-06 A → 2027-05-12 A (+6d) |  |  | 0d → 1d | was named Grondwerk kelder â Toren B |
| 3.11 | Rebar fixing, basement floor — Tower B | 2027-05-24 → 2027-05-13 A (-11d) | 2027-05-24 → 2027-05-20 A (-4d) | 8h → 5d | 0% → 100% | 0d → 1d | was named Vlechtwerk wapening keldervloer â Toren B |
| 3.12 | Pour basement floor — Tower B | 2027-05-25 → 2027-05-21 A (-4d) | 2027-05-25 → 2027-05-27 A (+2d) | 6h → 5d | 0% → 100% | 0d → 1d | was named Stort keldervloer â Toren B; resources Beton C30/37 → Concrete C30/37 |
| 3.13 | Rebar fixing, basement walls — Tower B | 2027-05-25 → 2027-05-28 A (+3d) | 2027-05-26 → 2027-06-03 A (+8d) | 8h → 5d | 0% → 100% | 0d → 1d | was named Vlechtwerk wapening kelderwanden â Toren B |
| 3.14 | Pour basement walls — Tower B | 2027-05-26 → 2027-06-04 A (+9d) | 2027-05-27 → 2027-06-10 A (+14d) | 4h → 5d | 0% → 100% | 0d → 1d | was named Stort kelderwanden â Toren B; resources Beton C30/37 → Concrete C30/37 |
| 3.15 | Basement earthworks — Tower C | 2027-05-03 A → 2027-05-10 A (+7d) | 2027-05-06 A → 2027-05-12 A (+6d) |  |  | 0d → 1d | was named Grondwerk kelder â Toren C |
| 3.16 | Rebar fixing, basement floor — Tower C | 2027-05-24 → 2027-05-13 A (-11d) | 2027-05-24 → 2027-05-20 A (-4d) | 8h → 5d | 0% → 100% | 0d → 1d | was named Vlechtwerk wapening keldervloer â Toren C |
| 3.17 | Pour basement floor — Tower C | 2027-05-25 → 2027-05-21 A (-4d) | 2027-05-25 → 2027-05-27 A (+2d) | 6h → 5d | 0% → 100% | 0d → 1d | was named Stort keldervloer â Toren C; resources Beton C30/37 → Concrete C30/37 |
| 3.18 | Rebar fixing, basement walls — Tower C | 2027-05-25 → 2027-05-28 A (+3d) | 2027-05-26 → 2027-06-03 A (+8d) | 8h → 5d | 0% → 100% | 0d → 1d | was named Vlechtwerk wapening kelderwanden â Toren C |
| 3.19 | Pour basement walls — Tower C | 2027-05-26 → 2027-06-04 A (+9d) | 2027-05-27 → 2027-06-10 A (+14d) | 4h → 5d | 0% → 100% | 0d → 1d | was named Stort kelderwanden â Toren C; resources Beton C30/37 → Concrete C30/37 |
| 3.20 | Basement sealing | 2027-05-28 → 2027-06-14 A (+17d) | 2027-06-01 → 2027-06-16 A (+15d) |  | 0% → 100% |  | was named Afdichting kelder |
| 3.21 | Backfill around basement | 2027-06-02 → 2027-06-17 A (+15d) | 2027-06-04 → 2027-06-21 A (+17d) |  | 0% → 100% |  | was named Terugstorten grond rondom kelder |
| 3.22 | Pour parking deck (ground floor cover) | 2027-06-07 → 2027-06-22 A (+15d) | 2027-06-11 → 2027-06-28 A (+17d) |  | 0% → 100% |  | was named Parkeerdek storten (afdek begane grond); resources Beton C30/37 → Concrete C30/37 |
| 3.23 | Remove sheet piling | 2027-06-14 → 2027-06-29 A (+15d) | 2027-06-15 → 2027-06-30 A (+15d) |  | 0% → 100% |  | was named Damwanden verwijderen |
| 3.24 | Basement watertight — inspection | 2027-06-15 → 2027-06-30 A (+15d) | 2027-06-15 → 2027-06-30 A (+15d) |  | 0% → 100% |  | was named Kelder waterdicht â keuring |
| 3.25 | Variation: additional basement storage units | 2027-06-16 → 2027-07-05 (+19d) | 2027-06-23 → 2027-07-12 (+19d) |  |  | 181d → 195d | was named Meerwerk: extra bergingen kelder |
| 4 | **3. Structural works, towers A/B/C (parallel)** | 2027-05-18 → 2027-07-01 A (+44d) | 2027-09-24 → 2027-11-02 (+39d) | 5d → 74d | 0% → 1% |  | was named 3. Ruwbouw torens A/B/C (parallel) |
| 4.1 | Erect tower crane | 2027-05-17 A → 2027-07-01 A (+45d) | 2027-05-20 A → 2027-07-05 A (+46d) |  |  | 5d → 0d | was named Torenkraan opbouwen |
| 4.2 | **Structural works — Tower A** | 2027-05-28 → 2027-07-06 (+39d) | 2027-09-22 → 2027-10-29 (+37d) | 5d → 69d |  |  | was named Ruwbouw â Toren A |
| 4.2.1 | Pour ground floor slab — Tower A | 2027-05-28 → 2027-07-06 (+39d) | 2027-06-02 → 2027-07-09 (+37d) |  |  |  | was named Begane grondvloer storten â Toren A; resources Beton C30/37 → Concrete C30/37 |
| 4.2.2 | Walls, floor 1 — Tower A | 2027-06-03 → 2027-07-12 (+39d) | 2027-06-08 → 2027-07-15 (+37d) |  |  |  | was named Wanden verdieping 1 â Toren A; resources Betonvlechters; Torenkraan → Steel fixers; Tower crane |
| 4.2.3 | Slab, floor 1 — Tower A | 2027-06-07 → 2027-07-14 (+37d) | 2027-06-09 → 2027-07-16 (+37d) |  |  |  | was named Vloer verdieping 1 â Toren A; resources Timmerlieden; Torenkraan → Carpenters; Tower crane |
| 4.2.4 | Walls, floor 2 — Tower A | 2027-06-10 → 2027-07-19 (+39d) | 2027-06-15 → 2027-07-22 (+37d) |  |  |  | was named Wanden verdieping 2 â Toren A; resources Betonvlechters; Torenkraan → Steel fixers; Tower crane |
| 4.2.5 | Slab, floor 2 — Tower A | 2027-06-14 → 2027-07-21 (+37d) | 2027-06-16 → 2027-07-23 (+37d) |  |  |  | was named Vloer verdieping 2 â Toren A; resources Timmerlieden; Torenkraan → Carpenters; Tower crane |
| 4.2.6 | Walls, floor 3 — Tower A | 2027-06-17 → 2027-08-16 (+60d) | 2027-06-22 → 2027-08-19 (+58d) |  |  |  | was named Wanden verdieping 3 â Toren A; resources Betonvlechters; Torenkraan → Steel fixers; Tower crane |
| 4.2.7 | Slab, floor 3 — Tower A | 2027-06-21 → 2027-08-18 (+58d) | 2027-06-23 → 2027-08-20 (+58d) |  |  |  | was named Vloer verdieping 3 â Toren A; resources Timmerlieden; Torenkraan → Carpenters; Tower crane |
| 4.2.8 | Walls, floor 4 — Tower A | 2027-06-24 → 2027-08-23 (+60d) | 2027-06-29 → 2027-08-26 (+58d) |  |  |  | was named Wanden verdieping 4 â Toren A; resources Betonvlechters; Torenkraan → Steel fixers; Tower crane |
| 4.2.9 | Slab, floor 4 — Tower A | 2027-06-28 → 2027-08-25 (+58d) | 2027-06-30 → 2027-08-27 (+58d) |  |  |  | was named Vloer verdieping 4 â Toren A; resources Timmerlieden; Torenkraan → Carpenters; Tower crane |
| 4.2.10 | Walls, floor 5 — Tower A | 2027-07-01 → 2027-08-30 (+60d) | 2027-07-06 → 2027-09-02 (+58d) |  |  |  | was named Wanden verdieping 5 â Toren A; resources Betonvlechters; Torenkraan → Steel fixers; Tower crane |
| 4.2.11 | Slab, floor 5 — Tower A | 2027-07-05 → 2027-09-01 (+58d) | 2027-07-07 → 2027-09-03 (+58d) |  |  |  | was named Vloer verdieping 5 â Toren A; resources Timmerlieden; Torenkraan → Carpenters; Tower crane |
| 4.2.12 | Walls, floor 6 — Tower A | 2027-07-08 → 2027-09-06 (+60d) | 2027-07-13 → 2027-09-09 (+58d) |  |  |  | was named Wanden verdieping 6 â Toren A; resources Betonvlechters; Torenkraan → Steel fixers; Tower crane |
| 4.2.13 | Slab, floor 6 — Tower A | 2027-07-12 → 2027-09-08 (+58d) | 2027-07-14 → 2027-09-10 (+58d) |  |  |  | was named Vloer verdieping 6 â Toren A; resources Timmerlieden; Torenkraan → Carpenters; Tower crane |
| 4.2.14 | Walls, floor 7 — Tower A | 2027-07-15 → 2027-09-13 (+60d) | 2027-07-20 → 2027-09-16 (+58d) |  |  |  | was named Wanden verdieping 7 â Toren A; resources Betonvlechters; Torenkraan → Steel fixers; Tower crane |
| 4.2.15 | Slab, floor 7 — Tower A | 2027-07-19 → 2027-09-15 (+58d) | 2027-07-21 → 2027-09-17 (+58d) |  |  |  | was named Vloer verdieping 7 â Toren A; resources Timmerlieden; Torenkraan → Carpenters; Tower crane |
| 4.2.16 | Walls, floor 8 — Tower A | 2027-07-22 → 2027-09-20 (+60d) | 2027-08-17 → 2027-09-23 (+37d) |  |  |  | was named Wanden verdieping 8 â Toren A; resources Betonvlechters; Torenkraan → Steel fixers; Tower crane |
| 4.2.17 | Slab, floor 8 — Tower A | 2027-08-16 → 2027-09-22 (+37d) | 2027-08-18 → 2027-09-24 (+37d) |  |  |  | was named Vloer verdieping 8 â Toren A; resources Timmerlieden; Torenkraan → Carpenters; Tower crane |
| 4.2.18 | Walls, floor 9 — Tower A | 2027-08-19 → 2027-09-27 (+39d) | 2027-08-24 → 2027-09-30 (+37d) |  |  |  | was named Wanden verdieping 9 â Toren A; resources Betonvlechters; Torenkraan → Steel fixers; Tower crane |
| 4.2.19 | Slab, floor 9 — Tower A | 2027-08-23 → 2027-09-29 (+37d) | 2027-08-25 → 2027-10-01 (+37d) |  |  |  | was named Vloer verdieping 9 â Toren A; resources Timmerlieden; Torenkraan → Carpenters; Tower crane |
| 4.2.20 | Walls, floor 10 — Tower A | 2027-08-26 → 2027-10-04 (+39d) | 2027-08-31 → 2027-10-07 (+37d) |  |  |  | was named Wanden verdieping 10 â Toren A; resources Betonvlechters; Torenkraan → Steel fixers; Tower crane |
| 4.2.21 | Slab, floor 10 — Tower A | 2027-08-30 → 2027-10-06 (+37d) | 2027-09-01 → 2027-10-08 (+37d) |  |  |  | was named Vloer verdieping 10 â Toren A; resources Timmerlieden; Torenkraan → Carpenters; Tower crane |
| 4.2.22 | Walls, floor 11 — Tower A | 2027-09-02 → 2027-10-11 (+39d) | 2027-09-07 → 2027-10-14 (+37d) |  |  |  | was named Wanden verdieping 11 â Toren A; resources Betonvlechters; Torenkraan → Steel fixers; Tower crane |
| 4.2.23 | Slab, floor 11 — Tower A | 2027-09-06 → 2027-10-13 (+37d) | 2027-09-08 → 2027-10-15 (+37d) |  |  |  | was named Vloer verdieping 11 â Toren A; resources Timmerlieden; Torenkraan → Carpenters; Tower crane |
| 4.2.24 | Walls, floor 12 — Tower A | 2027-09-09 → 2027-10-18 (+39d) | 2027-09-14 → 2027-10-21 (+37d) |  |  |  | was named Wanden verdieping 12 â Toren A; resources Betonvlechters; Torenkraan → Steel fixers; Tower crane |
| 4.2.25 | Slab, floor 12 — Tower A | 2027-09-13 → 2027-10-20 (+37d) | 2027-09-15 → 2027-10-22 (+37d) |  |  |  | was named Vloer verdieping 12 â Toren A; resources Timmerlieden; Torenkraan → Carpenters; Tower crane |
| 4.2.26 | Stair core & lift shaft — Tower A | 2027-05-28 → 2027-07-06 (+39d) | 2027-07-16 → 2027-09-14 (+60d) |  |  |  | was named Trappenhuis & liftschacht â Toren A; resources Timmerlieden → Carpenters |
| 4.2.27 | Install roof structure — Tower A | 2027-09-16 → 2027-10-25 (+39d) | 2027-09-22 → 2027-10-29 (+37d) |  |  |  | was named Dakconstructie plaatsen â Toren A; resources Timmerlieden; Torenkraan → Carpenters; Tower crane |
| 4.2.28 | Structural works complete — Tower A | 2027-09-22 → 2027-10-29 (+37d) | 2027-09-22 → 2027-10-29 (+37d) |  |  |  | was named Ruwbouw gereed â Toren A |
| 4.2.29 | Structural works tower A (LOE) | 2027-05-28 → 2027-07-06 (+39d) | 2027-09-22 → 2027-10-29 (+37d) |  |  |  | was named Ruwbouw toren A (LOE) |
| 4.3 | **Structural works — Tower B** | 2027-05-28 → 2027-07-06 (+39d) | 2027-09-22 → 2027-10-29 (+37d) | 5d → 69d |  |  | was named Ruwbouw â Toren B |
| 4.3.1 | Pour ground floor slab — Tower B | 2027-05-28 → 2027-07-06 (+39d) | 2027-06-02 → 2027-07-09 (+37d) |  |  |  | was named Begane grondvloer storten â Toren B; resources Beton C30/37 → Concrete C30/37 |

| ID | Task | Start | Finish | Duration | Other |
| --- | --- | --- | --- | --- | --- |
| 4.3.2 | Walls, floor 1 — Tower B | 2027-06-03 → 2027-07-12 (+39d) | 2027-06-08 → 2027-07-15 (+37d) |  | was named Wanden verdieping 1 â Toren B; resources Betonvlechters; Torenkraan → Steel fixers; Tower crane |
| 4.3.3 | Slab, floor 1 — Tower B | 2027-06-07 → 2027-07-14 (+37d) | 2027-06-09 → 2027-07-16 (+37d) |  | was named Vloer verdieping 1 â Toren B; resources Timmerlieden; Torenkraan → Carpenters; Tower crane |
| 4.3.4 | Walls, floor 2 — Tower B | 2027-06-10 → 2027-07-19 (+39d) | 2027-06-15 → 2027-07-22 (+37d) |  | was named Wanden verdieping 2 â Toren B; resources Betonvlechters; Torenkraan → Steel fixers; Tower crane |
| 4.3.5 | Slab, floor 2 — Tower B | 2027-06-14 → 2027-07-21 (+37d) | 2027-06-16 → 2027-07-23 (+37d) |  | was named Vloer verdieping 2 â Toren B; resources Timmerlieden; Torenkraan → Carpenters; Tower crane |
| 4.3.6 | Walls, floor 3 — Tower B | 2027-06-17 → 2027-08-16 (+60d) | 2027-06-22 → 2027-08-19 (+58d) |  | was named Wanden verdieping 3 â Toren B; resources Betonvlechters; Torenkraan → Steel fixers; Tower crane |
| 4.3.7 | Slab, floor 3 — Tower B | 2027-06-21 → 2027-08-18 (+58d) | 2027-06-23 → 2027-08-20 (+58d) |  | was named Vloer verdieping 3 â Toren B; resources Timmerlieden; Torenkraan → Carpenters; Tower crane |
| 4.3.8 | Walls, floor 4 — Tower B | 2027-06-24 → 2027-08-23 (+60d) | 2027-06-29 → 2027-08-26 (+58d) |  | was named Wanden verdieping 4 â Toren B; resources Betonvlechters; Torenkraan → Steel fixers; Tower crane |
| 4.3.9 | Slab, floor 4 — Tower B | 2027-06-28 → 2027-08-25 (+58d) | 2027-06-30 → 2027-08-27 (+58d) |  | was named Vloer verdieping 4 â Toren B; resources Timmerlieden; Torenkraan → Carpenters; Tower crane |
| 4.3.10 | Walls, floor 5 — Tower B | 2027-07-01 → 2027-08-30 (+60d) | 2027-07-06 → 2027-09-02 (+58d) |  | was named Wanden verdieping 5 â Toren B; resources Betonvlechters; Torenkraan → Steel fixers; Tower crane |
| 4.3.11 | Slab, floor 5 — Tower B | 2027-07-05 → 2027-09-01 (+58d) | 2027-07-07 → 2027-09-03 (+58d) |  | was named Vloer verdieping 5 â Toren B; resources Timmerlieden; Torenkraan → Carpenters; Tower crane |
| 4.3.12 | Walls, floor 6 — Tower B | 2027-07-08 → 2027-09-06 (+60d) | 2027-07-13 → 2027-09-09 (+58d) |  | was named Wanden verdieping 6 â Toren B; resources Betonvlechters; Torenkraan → Steel fixers; Tower crane |
| 4.3.13 | Slab, floor 6 — Tower B | 2027-07-12 → 2027-09-08 (+58d) | 2027-07-14 → 2027-09-10 (+58d) |  | was named Vloer verdieping 6 â Toren B; resources Timmerlieden; Torenkraan → Carpenters; Tower crane |
| 4.3.14 | Walls, floor 7 — Tower B | 2027-07-15 → 2027-09-13 (+60d) | 2027-07-20 → 2027-09-16 (+58d) |  | was named Wanden verdieping 7 â Toren B; resources Betonvlechters; Torenkraan → Steel fixers; Tower crane |
| 4.3.15 | Slab, floor 7 — Tower B | 2027-07-19 → 2027-09-15 (+58d) | 2027-07-21 → 2027-09-17 (+58d) |  | was named Vloer verdieping 7 â Toren B; resources Timmerlieden; Torenkraan → Carpenters; Tower crane |
| 4.3.16 | Walls, floor 8 — Tower B | 2027-07-22 → 2027-09-20 (+60d) | 2027-08-17 → 2027-09-23 (+37d) |  | was named Wanden verdieping 8 â Toren B; resources Betonvlechters; Torenkraan → Steel fixers; Tower crane |
| 4.3.17 | Slab, floor 8 — Tower B | 2027-08-16 → 2027-09-22 (+37d) | 2027-08-18 → 2027-09-24 (+37d) |  | was named Vloer verdieping 8 â Toren B; resources Timmerlieden; Torenkraan → Carpenters; Tower crane |
| 4.3.18 | Walls, floor 9 — Tower B | 2027-08-19 → 2027-09-27 (+39d) | 2027-08-24 → 2027-09-30 (+37d) |  | was named Wanden verdieping 9 â Toren B; resources Betonvlechters; Torenkraan → Steel fixers; Tower crane |
| 4.3.19 | Slab, floor 9 — Tower B | 2027-08-23 → 2027-09-29 (+37d) | 2027-08-25 → 2027-10-01 (+37d) |  | was named Vloer verdieping 9 â Toren B; resources Timmerlieden; Torenkraan → Carpenters; Tower crane |
| 4.3.20 | Walls, floor 10 — Tower B | 2027-08-26 → 2027-10-04 (+39d) | 2027-08-31 → 2027-10-07 (+37d) |  | was named Wanden verdieping 10 â Toren B; resources Betonvlechters; Torenkraan → Steel fixers; Tower crane |
| 4.3.21 | Slab, floor 10 — Tower B | 2027-08-30 → 2027-10-06 (+37d) | 2027-09-01 → 2027-10-08 (+37d) |  | was named Vloer verdieping 10 â Toren B; resources Timmerlieden; Torenkraan → Carpenters; Tower crane |
| 4.3.22 | Walls, floor 11 — Tower B | 2027-09-02 → 2027-10-11 (+39d) | 2027-09-07 → 2027-10-14 (+37d) |  | was named Wanden verdieping 11 â Toren B; resources Betonvlechters; Torenkraan → Steel fixers; Tower crane |
| 4.3.23 | Slab, floor 11 — Tower B | 2027-09-06 → 2027-10-13 (+37d) | 2027-09-08 → 2027-10-15 (+37d) |  | was named Vloer verdieping 11 â Toren B; resources Timmerlieden; Torenkraan → Carpenters; Tower crane |
| 4.3.24 | Walls, floor 12 — Tower B | 2027-09-09 → 2027-10-18 (+39d) | 2027-09-14 → 2027-10-21 (+37d) |  | was named Wanden verdieping 12 â Toren B; resources Betonvlechters; Torenkraan → Steel fixers; Tower crane |
| 4.3.25 | Slab, floor 12 — Tower B | 2027-09-13 → 2027-10-20 (+37d) | 2027-09-15 → 2027-10-22 (+37d) |  | was named Vloer verdieping 12 â Toren B; resources Timmerlieden; Torenkraan → Carpenters; Tower crane |
| 4.3.26 | Stair core & lift shaft — Tower B | 2027-05-28 → 2027-07-06 (+39d) | 2027-07-16 → 2027-09-14 (+60d) |  | was named Trappenhuis & liftschacht â Toren B; resources Timmerlieden → Carpenters |
| 4.3.27 | Install roof structure — Tower B | 2027-09-16 → 2027-10-25 (+39d) | 2027-09-22 → 2027-10-29 (+37d) |  | was named Dakconstructie plaatsen â Toren B; resources Timmerlieden; Torenkraan → Carpenters; Tower crane |
| 4.3.28 | Structural works complete — Tower B | 2027-09-22 → 2027-10-29 (+37d) | 2027-09-22 → 2027-10-29 (+37d) |  | was named Ruwbouw gereed â Toren B |
| 4.4 | **Structural works — Tower C** | 2027-05-28 → 2027-07-06 (+39d) | 2027-09-22 → 2027-10-29 (+37d) | 5d → 69d | was named Ruwbouw â Toren C |
| 4.4.1 | Pour ground floor slab — Tower C | 2027-05-28 → 2027-07-06 (+39d) | 2027-06-02 → 2027-07-09 (+37d) |  | was named Begane grondvloer storten â Toren C; resources Beton C30/37 → Concrete C30/37 |
| 4.4.2 | Walls, floor 1 — Tower C | 2027-06-03 → 2027-07-12 (+39d) | 2027-06-08 → 2027-07-15 (+37d) |  | was named Wanden verdieping 1 â Toren C; resources Betonvlechters; Torenkraan → Steel fixers; Tower crane |
| 4.4.3 | Slab, floor 1 — Tower C | 2027-06-07 → 2027-07-14 (+37d) | 2027-06-09 → 2027-07-16 (+37d) |  | was named Vloer verdieping 1 â Toren C; resources Timmerlieden; Torenkraan → Carpenters; Tower crane |
| 4.4.4 | Walls, floor 2 — Tower C | 2027-06-10 → 2027-07-19 (+39d) | 2027-06-15 → 2027-07-22 (+37d) |  | was named Wanden verdieping 2 â Toren C; resources Betonvlechters; Torenkraan → Steel fixers; Tower crane |
| 4.4.5 | Slab, floor 2 — Tower C | 2027-06-14 → 2027-07-21 (+37d) | 2027-06-16 → 2027-07-23 (+37d) |  | was named Vloer verdieping 2 â Toren C; resources Timmerlieden; Torenkraan → Carpenters; Tower crane |
| 4.4.6 | Walls, floor 3 — Tower C | 2027-06-17 → 2027-08-16 (+60d) | 2027-06-22 → 2027-08-19 (+58d) |  | was named Wanden verdieping 3 â Toren C; resources Betonvlechters; Torenkraan → Steel fixers; Tower crane |
| 4.4.7 | Slab, floor 3 — Tower C | 2027-06-21 → 2027-08-18 (+58d) | 2027-06-23 → 2027-08-20 (+58d) |  | was named Vloer verdieping 3 â Toren C; resources Timmerlieden; Torenkraan → Carpenters; Tower crane |
| 4.4.8 | Walls, floor 4 — Tower C | 2027-06-24 → 2027-08-23 (+60d) | 2027-06-29 → 2027-08-26 (+58d) |  | was named Wanden verdieping 4 â Toren C; resources Betonvlechters; Torenkraan → Steel fixers; Tower crane |
| 4.4.9 | Slab, floor 4 — Tower C | 2027-06-28 → 2027-08-25 (+58d) | 2027-06-30 → 2027-08-27 (+58d) |  | was named Vloer verdieping 4 â Toren C; resources Timmerlieden; Torenkraan → Carpenters; Tower crane |
| 4.4.10 | Walls, floor 5 — Tower C | 2027-07-01 → 2027-08-30 (+60d) | 2027-07-06 → 2027-09-02 (+58d) |  | was named Wanden verdieping 5 â Toren C; resources Betonvlechters; Torenkraan → Steel fixers; Tower crane |
| 4.4.11 | Slab, floor 5 — Tower C | 2027-07-05 → 2027-09-01 (+58d) | 2027-07-07 → 2027-09-03 (+58d) |  | was named Vloer verdieping 5 â Toren C; resources Timmerlieden; Torenkraan → Carpenters; Tower crane |
| 4.4.12 | Walls, floor 6 — Tower C | 2027-07-08 → 2027-09-06 (+60d) | 2027-07-13 → 2027-09-09 (+58d) |  | was named Wanden verdieping 6 â Toren C; resources Betonvlechters; Torenkraan → Steel fixers; Tower crane |
| 4.4.13 | Slab, floor 6 — Tower C | 2027-07-12 → 2027-09-08 (+58d) | 2027-07-14 → 2027-09-10 (+58d) |  | was named Vloer verdieping 6 â Toren C; resources Timmerlieden; Torenkraan → Carpenters; Tower crane |
| 4.4.14 | Walls, floor 7 — Tower C | 2027-07-15 → 2027-09-13 (+60d) | 2027-07-20 → 2027-09-16 (+58d) |  | was named Wanden verdieping 7 â Toren C; resources Betonvlechters; Torenkraan → Steel fixers; Tower crane |
| 4.4.15 | Slab, floor 7 — Tower C | 2027-07-19 → 2027-09-15 (+58d) | 2027-07-21 → 2027-09-17 (+58d) |  | was named Vloer verdieping 7 â Toren C; resources Timmerlieden; Torenkraan → Carpenters; Tower crane |
| 4.4.16 | Walls, floor 8 — Tower C | 2027-07-22 → 2027-09-20 (+60d) | 2027-08-17 → 2027-09-23 (+37d) |  | was named Wanden verdieping 8 â Toren C; resources Betonvlechters; Torenkraan → Steel fixers; Tower crane |
| 4.4.17 | Slab, floor 8 — Tower C | 2027-08-16 → 2027-09-22 (+37d) | 2027-08-18 → 2027-09-24 (+37d) |  | was named Vloer verdieping 8 â Toren C; resources Timmerlieden; Torenkraan → Carpenters; Tower crane |
| 4.4.18 | Walls, floor 9 — Tower C | 2027-08-19 → 2027-09-27 (+39d) | 2027-08-24 → 2027-09-30 (+37d) |  | was named Wanden verdieping 9 â Toren C; resources Betonvlechters; Torenkraan → Steel fixers; Tower crane |
| 4.4.19 | Slab, floor 9 — Tower C | 2027-08-23 → 2027-09-29 (+37d) | 2027-08-25 → 2027-10-01 (+37d) |  | was named Vloer verdieping 9 â Toren C; resources Timmerlieden; Torenkraan → Carpenters; Tower crane |
| 4.4.20 | Walls, floor 10 — Tower C | 2027-08-26 → 2027-10-04 (+39d) | 2027-08-31 → 2027-10-07 (+37d) |  | was named Wanden verdieping 10 â Toren C; resources Betonvlechters; Torenkraan → Steel fixers; Tower crane |
| 4.4.21 | Slab, floor 10 — Tower C | 2027-08-30 → 2027-10-06 (+37d) | 2027-09-01 → 2027-10-08 (+37d) |  | was named Vloer verdieping 10 â Toren C; resources Timmerlieden; Torenkraan → Carpenters; Tower crane |
| 4.4.22 | Walls, floor 11 — Tower C | 2027-09-02 → 2027-10-11 (+39d) | 2027-09-07 → 2027-10-14 (+37d) |  | was named Wanden verdieping 11 â Toren C; resources Betonvlechters; Torenkraan → Steel fixers; Tower crane |
| 4.4.23 | Slab, floor 11 — Tower C | 2027-09-06 → 2027-10-13 (+37d) | 2027-09-08 → 2027-10-15 (+37d) |  | was named Vloer verdieping 11 â Toren C; resources Timmerlieden; Torenkraan → Carpenters; Tower crane |
| 4.4.24 | Walls, floor 12 — Tower C | 2027-09-09 → 2027-10-18 (+39d) | 2027-09-14 → 2027-10-21 (+37d) |  | was named Wanden verdieping 12 â Toren C; resources Betonvlechters; Torenkraan → Steel fixers; Tower crane |
| 4.4.25 | Slab, floor 12 — Tower C | 2027-09-13 → 2027-10-20 (+37d) | 2027-09-15 → 2027-10-22 (+37d) |  | was named Vloer verdieping 12 â Toren C; resources Timmerlieden; Torenkraan → Carpenters; Tower crane |
| 4.4.26 | Stair core & lift shaft — Tower C | 2027-05-28 → 2027-07-06 (+39d) | 2027-07-16 → 2027-09-14 (+60d) |  | was named Trappenhuis & liftschacht â Toren C; resources Timmerlieden → Carpenters |
| 4.4.27 | Install roof structure — Tower C | 2027-09-16 → 2027-10-25 (+39d) | 2027-09-22 → 2027-10-29 (+37d) |  | was named Dakconstructie plaatsen â Toren C; resources Timmerlieden; Torenkraan → Carpenters; Tower crane |
| 4.4.28 | Structural works complete — Tower C | 2027-09-22 → 2027-10-29 (+37d) | 2027-09-22 → 2027-10-29 (+37d) |  | was named Ruwbouw gereed â Toren C |
| 4.5 | Dismantle tower crane | 2027-09-23 → 2027-11-01 (+39d) | 2027-09-24 → 2027-11-02 (+39d) |  | was named Torenkraan afbreken |
| 5 | **4. Facade & roof** | 2027-06-14 → 2027-07-05 (+21d) | 2027-11-15 → 2027-12-22 (+37d) | 5d → 108d | was named 4. Gevel & dak |
| 5.1 | **Facade & roof — Tower A** | 2027-09-23 → 2027-11-01 (+39d) | 2027-11-09 → 2027-12-16 (+37d) | 5d → 34d | was named Gevel & dak â Toren A |
| 5.1.1 | Erect scaffolding — Tower A | 2027-09-23 → 2027-11-01 (+39d) | 2027-09-27 → 2027-11-03 (+37d) |  | was named Steigerwerk plaatsen â Toren A |
| 5.1.2 | Apply facade insulation — Tower A | 2027-09-28 → 2027-11-04 (+37d) | 2027-10-07 → 2027-11-15 (+39d) |  | was named Gevelisolatie aanbrengen â Toren A; resources Gevelbouwer → Facade contractor |
| 5.1.3 | Install facade cladding — Tower A | 2027-10-08 → 2027-11-16 (+39d) | 2027-10-21 → 2027-11-29 (+39d) |  | was named Gevelbekleding monteren â Toren A; resources Gevelbouwer → Facade contractor |
| 5.1.4 | Install window frames — Tower A | 2027-10-22 → 2027-11-30 (+39d) | 2027-10-29 → 2027-12-07 (+39d) |  | was named Kozijnen plaatsen â Toren A |
| 5.1.5 | Apply roof insulation — Tower A | 2027-09-23 → 2027-11-01 (+39d) | 2027-09-29 → 2027-11-05 (+37d) |  | was named Dakisolatie aanbrengen â Toren A |
| 5.1.6 | Apply roofing — Tower A | 2027-09-30 → 2027-11-08 (+39d) | 2027-10-06 → 2027-11-12 (+37d) |  | was named Dakbedekking aanbrengen â Toren A |
| 5.1.7 | Install balcony balustrades — Tower A | 2027-11-01 → 2027-12-08 (+37d) | 2027-11-05 → 2027-12-14 (+39d) |  | was named Balkonhekwerken monteren â Toren A |
| 5.1.8 | Connect rainwater drainage — Tower A | 2027-10-07 → 2027-11-15 (+39d) | 2027-10-11 → 2027-11-17 (+37d) |  | was named Regenwaterafvoer aansluiten â Toren A |
| 5.1.9 | Strike scaffolding — Tower A | 2027-11-08 → 2027-12-15 (+37d) | 2027-11-09 → 2027-12-16 (+37d) |  | was named Steigerwerk verwijderen â Toren A |
| 5.2 | **Facade & roof — Tower B** | 2027-09-23 → 2027-11-01 (+39d) | 2027-11-09 → 2027-12-16 (+37d) | 5d → 34d | was named Gevel & dak â Toren B |
| 5.2.1 | Erect scaffolding — Tower B | 2027-09-23 → 2027-11-01 (+39d) | 2027-09-27 → 2027-11-03 (+37d) |  | was named Steigerwerk plaatsen â Toren B |

| ID | Task | Start | Finish | Duration | Total float | Other |
| --- | --- | --- | --- | --- | --- | --- |
| 5.2.2 | Apply facade insulation — Tower B | 2027-09-28 → 2027-11-04 (+37d) | 2027-10-07 → 2027-11-15 (+39d) |  |  | was named Gevelisolatie aanbrengen â Toren B; resources Gevelbouwer → Facade contractor |
| 5.2.3 | Install facade cladding — Tower B | 2027-10-08 → 2027-11-16 (+39d) | 2027-10-21 → 2027-11-29 (+39d) |  |  | was named Gevelbekleding monteren â Toren B; resources Gevelbouwer → Facade contractor |
| 5.2.4 | Install window frames — Tower B | 2027-10-22 → 2027-11-30 (+39d) | 2027-10-29 → 2027-12-07 (+39d) |  |  | was named Kozijnen plaatsen â Toren B |
| 5.2.5 | Apply roof insulation — Tower B | 2027-09-23 → 2027-11-01 (+39d) | 2027-09-29 → 2027-11-05 (+37d) |  |  | was named Dakisolatie aanbrengen â Toren B |
| 5.2.6 | Apply roofing — Tower B | 2027-09-30 → 2027-11-08 (+39d) | 2027-10-06 → 2027-11-12 (+37d) |  |  | was named Dakbedekking aanbrengen â Toren B |
| 5.2.7 | Install balcony balustrades — Tower B | 2027-11-01 → 2027-12-08 (+37d) | 2027-11-05 → 2027-12-14 (+39d) |  |  | was named Balkonhekwerken monteren â Toren B |
| 5.2.8 | Connect rainwater drainage — Tower B | 2027-10-07 → 2027-11-15 (+39d) | 2027-10-11 → 2027-11-17 (+37d) |  |  | was named Regenwaterafvoer aansluiten â Toren B |
| 5.2.9 | Strike scaffolding — Tower B | 2027-11-08 → 2027-12-15 (+37d) | 2027-11-09 → 2027-12-16 (+37d) |  |  | was named Steigerwerk verwijderen â Toren B |
| 5.3 | **Facade & roof — Tower C** | 2027-09-23 → 2027-11-01 (+39d) | 2027-11-09 → 2027-12-16 (+37d) | 5d → 34d |  | was named Gevel & dak â Toren C |
| 5.3.1 | Erect scaffolding — Tower C | 2027-09-23 → 2027-11-01 (+39d) | 2027-09-27 → 2027-11-03 (+37d) |  |  | was named Steigerwerk plaatsen â Toren C |
| 5.3.2 | Apply facade insulation — Tower C | 2027-09-28 → 2027-11-04 (+37d) | 2027-10-07 → 2027-11-15 (+39d) |  |  | was named Gevelisolatie aanbrengen â Toren C; resources Gevelbouwer → Facade contractor |
| 5.3.3 | Install facade cladding — Tower C | 2027-10-08 → 2027-11-16 (+39d) | 2027-10-21 → 2027-11-29 (+39d) |  |  | was named Gevelbekleding monteren â Toren C; resources Gevelbouwer → Facade contractor |
| 5.3.4 | Install window frames — Tower C | 2027-10-22 → 2027-11-30 (+39d) | 2027-10-29 → 2027-12-07 (+39d) |  |  | was named Kozijnen plaatsen â Toren C |
| 5.3.5 | Apply roof insulation — Tower C | 2027-09-23 → 2027-11-01 (+39d) | 2027-09-29 → 2027-11-05 (+37d) |  |  | was named Dakisolatie aanbrengen â Toren C |
| 5.3.6 | Apply roofing — Tower C | 2027-09-30 → 2027-11-08 (+39d) | 2027-10-06 → 2027-11-12 (+37d) |  |  | was named Dakbedekking aanbrengen â Toren C |
| 5.3.7 | Install balcony balustrades — Tower C | 2027-11-01 → 2027-12-08 (+37d) | 2027-11-05 → 2027-12-14 (+39d) |  |  | was named Balkonhekwerken monteren â Toren C |
| 5.3.8 | Connect rainwater drainage — Tower C | 2027-10-07 → 2027-11-15 (+39d) | 2027-10-11 → 2027-11-17 (+37d) |  |  | was named Regenwaterafvoer aansluiten â Toren C |
| 5.3.9 | Strike scaffolding — Tower C | 2027-11-08 → 2027-12-15 (+37d) | 2027-11-09 → 2027-12-16 (+37d) |  |  | was named Steigerwerk verwijderen â Toren C |
| 5.4 | Facade cladding, main entrance | 2027-11-10 → 2027-12-17 (+37d) | 2027-11-15 → 2027-12-22 (+37d) |  |  | was named Gevelbeplating hoofdentree |
| 5.5 | Install parking deck canopy | 2027-06-14 → 2027-07-05 (+21d) | 2027-06-18 → 2027-07-09 (+21d) |  | 152d → 0d | was named Overkapping parkeerdek plaatsen |
| 6 | **5. Building services (MEP)** | 2027-11-10 → 2027-12-17 (+37d) | 2027-12-30 → 2028-02-07 (+39d) | 5d → 37d |  | was named 5. Installaties (MEP) |
| 6.1 | Install heating plant room | 2027-11-16 → 2027-12-23 (+37d) | 2027-11-23 → 2027-12-30 (+37d) |  |  | was named Warmtecentrale plaatsen |
| 6.2 | Connect main electrical distribution board | 2027-11-24 → 2027-12-31 (+37d) | 2027-11-29 → 2028-01-05 (+37d) |  |  | was named Hoofdverdeler elektra aansluiten |
| 6.3 | Install & test emergency generator | 2027-11-30 → 2028-01-06 (+37d) | 2027-12-02 → 2028-01-10 (+39d) |  |  | was named Noodstroomaggregaat plaatsen & testen |
| 6.4 | Fit out data centre server room | 2027-12-03 → 2028-01-11 (+39d) | 2027-12-08 → 2028-01-14 (+37d) |  |  | was named Datacentrum serverruimte inrichten |
| 6.5 | **Building services — Tower A** | 2027-11-10 → 2027-12-17 (+37d) | 2027-12-30 → 2028-02-07 (+39d) | 5d → 37d |  | was named Installaties â Toren A |
| 6.5.1 | Mechanical services — Tower A | 2027-11-10 → 2027-12-17 (+37d) | 2027-11-19 → 2027-12-28 (+39d) |  |  | was named Werktuigbouwkundige installatie â Toren A; resources Installateurs → MEP fitters |
| 6.5.2 | Install electrical services — Tower A | 2027-11-12 → 2027-12-21 (+39d) | 2027-11-22 → 2027-12-29 (+37d) |  |  | was named Elektra aanleggen â Toren A; resources Installateurs → MEP fitters |
| 6.5.3 | Connect ventilation ductwork — Tower A | 2027-11-23 → 2027-12-30 (+37d) | 2027-11-29 → 2028-01-05 (+37d) |  |  | was named Ventilatiekanalen aansluiten â Toren A |
| 6.5.4 | Install sprinkler system — Tower A | 2027-11-30 → 2028-01-06 (+37d) | 2027-12-06 → 2028-01-12 (+37d) |  |  | was named Sprinklerinstallatie aanleggen â Toren A |
| 6.5.5 | Install data/ICT cabling — Tower A | 2027-12-07 → 2028-01-13 (+37d) | 2027-12-10 → 2028-01-18 (+39d) |  |  | was named Data/ICT-bekabeling aanleggen â Toren A |
| 6.5.6 | Install fire alarm system — Tower A | 2027-12-13 → 2028-01-19 (+37d) | 2027-12-16 → 2028-01-24 (+39d) |  |  | was named Brandmeldinstallatie aanleggen â Toren A |
| 6.5.7 | Lift supply & installation — Tower A | 2027-12-17 → 2028-01-25 (+39d) | 2027-12-30 → 2028-02-07 (+39d) |  |  | was named Levering & installatie liftinstallatie â Toren A; resources Liftleverancier → Lift supplier |
| 6.5.8 | Services commissioning inspection — Tower A | 2027-12-30 → 2028-02-07 (+39d) | 2027-12-30 → 2028-02-07 (+39d) |  |  | was named Oplevermeting installaties â Toren A |
| 6.6 | **Building services — Tower B** | 2027-11-10 → 2027-12-17 (+37d) | 2027-12-30 → 2028-02-07 (+39d) | 5d → 37d |  | was named Installaties â Toren B |
| 6.6.1 | Mechanical services — Tower B | 2027-11-10 → 2027-12-17 (+37d) | 2027-11-19 → 2027-12-28 (+39d) |  |  | was named Werktuigbouwkundige installatie â Toren B; resources Installateurs → MEP fitters |
| 6.6.2 | Install electrical services — Tower B | 2027-11-12 → 2027-12-21 (+39d) | 2027-11-22 → 2027-12-29 (+37d) |  |  | was named Elektra aanleggen â Toren B; resources Installateurs → MEP fitters |
| 6.6.3 | Connect ventilation ductwork — Tower B | 2027-11-23 → 2027-12-30 (+37d) | 2027-11-29 → 2028-01-05 (+37d) |  |  | was named Ventilatiekanalen aansluiten â Toren B |
| 6.6.4 | Install sprinkler system — Tower B | 2027-11-30 → 2028-01-06 (+37d) | 2027-12-06 → 2028-01-12 (+37d) |  |  | was named Sprinklerinstallatie aanleggen â Toren B |
| 6.6.5 | Install data/ICT cabling — Tower B | 2027-12-07 → 2028-01-13 (+37d) | 2027-12-10 → 2028-01-18 (+39d) |  |  | was named Data/ICT-bekabeling aanleggen â Toren B |
| 6.6.6 | Install fire alarm system — Tower B | 2027-12-13 → 2028-01-19 (+37d) | 2027-12-16 → 2028-01-24 (+39d) |  |  | was named Brandmeldinstallatie aanleggen â Toren B |
| 6.6.7 | Lift supply & installation — Tower B | 2027-12-17 → 2028-01-25 (+39d) | 2027-12-30 → 2028-02-07 (+39d) |  |  | was named Levering & installatie liftinstallatie â Toren B; resources Liftleverancier → Lift supplier |
| 6.6.8 | Services commissioning inspection — Tower B | 2027-12-30 → 2028-02-07 (+39d) | 2027-12-30 → 2028-02-07 (+39d) |  |  | was named Oplevermeting installaties â Toren B |
| 6.7 | **Building services — Tower C** | 2027-11-10 → 2027-12-17 (+37d) | 2027-12-30 → 2028-02-07 (+39d) | 5d → 37d |  | was named Installaties â Toren C |
| 6.7.1 | Mechanical services — Tower C | 2027-11-10 → 2027-12-17 (+37d) | 2027-11-19 → 2027-12-28 (+39d) |  |  | was named Werktuigbouwkundige installatie â Toren C; resources Installateurs → MEP fitters |
| 6.7.2 | Install electrical services — Tower C | 2027-11-12 → 2027-12-21 (+39d) | 2027-11-22 → 2027-12-29 (+37d) |  |  | was named Elektra aanleggen â Toren C; resources Installateurs → MEP fitters |
| 6.7.3 | Connect ventilation ductwork — Tower C | 2027-11-23 → 2027-12-30 (+37d) | 2027-11-29 → 2028-01-05 (+37d) |  |  | was named Ventilatiekanalen aansluiten â Toren C |
| 6.7.4 | Install sprinkler system — Tower C | 2027-11-30 → 2028-01-06 (+37d) | 2027-12-06 → 2028-01-12 (+37d) |  |  | was named Sprinklerinstallatie aanleggen â Toren C |
| 6.7.5 | Install data/ICT cabling — Tower C | 2027-12-07 → 2028-01-13 (+37d) | 2027-12-10 → 2028-01-18 (+39d) |  |  | was named Data/ICT-bekabeling aanleggen â Toren C |
| 6.7.6 | Install fire alarm system — Tower C | 2027-12-13 → 2028-01-19 (+37d) | 2027-12-16 → 2028-01-24 (+39d) |  |  | was named Brandmeldinstallatie aanleggen â Toren C |
| 6.7.7 | Lift supply & installation — Tower C | 2027-12-17 → 2028-01-25 (+39d) | 2027-12-30 → 2028-02-07 (+39d) |  |  | was named Levering & installatie liftinstallatie â Toren C; resources Liftleverancier → Lift supplier |
| 6.7.8 | Services commissioning inspection — Tower C | 2027-12-30 → 2028-02-07 (+39d) | 2027-12-30 → 2028-02-07 (+39d) |  |  | was named Oplevermeting installaties â Toren C |
| 7 | **6. Fit-out** | 2027-11-16 → 2027-12-23 (+37d) | 2028-03-27 → 2028-05-09 (+43d) | 5d → 95d |  | was named 6. Afbouw |
| 7.1 | **Fit-out — Tower A** | 2027-12-31 → 2028-02-08 (+39d) | 2028-03-27 → 2028-05-09 (+43d) | 5d → 62d |  | was named Afbouw â Toren A |
| 7.1.1 | Plastering — Tower A | 2027-12-31 → 2028-02-08 (+39d) | 2028-01-20 → 2028-02-28 (+39d) |  |  | was named Stucwerk â Toren A; resources Stukadoors → Plasterers |
| 7.1.2 | Tiling — Tower A | 2028-01-21 → 2028-02-29 (+39d) | 2028-02-03 → 2028-03-13 (+39d) |  |  | was named Tegelwerk â Toren A; resources Tegelzetters → Tilers |
| 7.1.3 | Install kitchens — Tower A | 2028-02-04 → 2028-03-14 (+39d) | 2028-02-15 → 2028-03-23 (+37d) |  |  | was named Keukens plaatsen â Toren A; resources Keukenmonteurs → Kitchen fitters |
| 7.1.4 | Install sanitary fittings — Tower A | 2028-02-16 → 2028-03-24 (+37d) | 2028-02-24 → 2028-04-03 (+39d) |  |  | was named Sanitair plaatsen â Toren A; resources Installateurs → MEP fitters |
| 7.1.5 | Painting — Tower A | 2028-02-25 → 2028-04-04 (+39d) | 2028-03-07 → 2028-04-13 (+37d) |  |  | was named Schilderwerk â Toren A; resources Schilders → Painters |
| 7.1.6 | Floor finishes — Tower A | 2028-03-08 → 2028-04-18 (+41d) | 2028-03-14 → 2028-04-24 (+41d) |  |  | was named Vloerafwerking â Toren A; resources Tegelzetters → Tilers |
| 7.1.7 | Finish ceilings — Tower A | 2028-03-15 → 2028-04-25 (+41d) | 2028-03-21 → 2028-05-02 (+42d) |  |  | was named Plafonds afwerken â Toren A |
| 7.1.8 | Doors and ironmongery — Tower A | 2028-03-22 → 2028-05-03 (+42d) | 2028-03-27 → 2028-05-09 (+43d) |  |  | was named Deuren hang- en sluitwerk â Toren A |
| 7.2 | **Fit-out — Tower B** | 2027-12-31 → 2028-02-08 (+39d) | 2028-03-27 → 2028-05-09 (+43d) | 5d → 62d |  | was named Afbouw â Toren B |
| 7.2.1 | Plastering — Tower B | 2027-12-31 → 2028-02-08 (+39d) | 2028-01-20 → 2028-02-28 (+39d) |  |  | was named Stucwerk â Toren B; resources Stukadoors → Plasterers |
| 7.2.2 | Tiling — Tower B | 2028-01-21 → 2028-02-29 (+39d) | 2028-02-03 → 2028-03-13 (+39d) |  |  | was named Tegelwerk â Toren B; resources Tegelzetters → Tilers |
| 7.2.3 | Install kitchens — Tower B | 2028-02-04 → 2028-03-14 (+39d) | 2028-02-15 → 2028-03-23 (+37d) |  |  | was named Keukens plaatsen â Toren B; resources Keukenmonteurs → Kitchen fitters |
| 7.2.4 | Install sanitary fittings — Tower B | 2028-02-16 → 2028-03-24 (+37d) | 2028-02-24 → 2028-04-03 (+39d) |  |  | was named Sanitair plaatsen â Toren B; resources Installateurs → MEP fitters |
| 7.2.5 | Painting — Tower B | 2028-02-25 → 2028-04-04 (+39d) | 2028-03-07 → 2028-04-13 (+37d) |  |  | was named Schilderwerk â Toren B; resources Schilders → Painters |
| 7.2.6 | Floor finishes — Tower B | 2028-03-08 → 2028-04-18 (+41d) | 2028-03-14 → 2028-04-24 (+41d) |  |  | was named Vloerafwerking â Toren B; resources Tegelzetters → Tilers |
| 7.2.7 | Finish ceilings — Tower B | 2028-03-15 → 2028-04-25 (+41d) | 2028-03-21 → 2028-05-02 (+42d) |  |  | was named Plafonds afwerken â Toren B |

| ID | Task | Start | Finish | Duration | Total float | Predecessors | Other |
| --- | --- | --- | --- | --- | --- | --- | --- |
| 7.2.8 | Doors and ironmongery — Tower B | 2028-03-22 → 2028-05-03 (+42d) | 2028-03-27 → 2028-05-09 (+43d) |  |  |  | was named Deuren hang- en sluitwerk â Toren B |
| 7.3 | **Fit-out — Tower C** | 2027-12-31 → 2028-02-08 (+39d) | 2028-03-22 → 2028-05-03 (+42d) | 5d → 59d |  |  | was named Afbouw â Toren C |
| 7.3.1 | Plastering — Tower C | 2027-12-31 → 2028-02-08 (+39d) | 2028-01-17 → 2028-02-23 (+37d) |  |  |  | was named Stucwerk â Toren C; resources Stukadoors → Plasterers |
| 7.3.2 | Tiling — Tower C | 2028-01-18 → 2028-02-24 (+37d) | 2028-01-31 → 2028-03-08 (+37d) |  |  |  | was named Tegelwerk â Toren C; resources Tegelzetters → Tilers |
| 7.3.3 | Install kitchens — Tower C | 2028-02-01 → 2028-03-09 (+37d) | 2028-02-10 → 2028-03-20 (+39d) |  |  |  | was named Keukens plaatsen â Toren C; resources Keukenmonteurs → Kitchen fitters |
| 7.3.4 | Install sanitary fittings — Tower C | 2028-02-11 → 2028-03-21 (+39d) | 2028-02-21 → 2028-03-29 (+37d) |  |  |  | was named Sanitair plaatsen â Toren C; resources Installateurs → MEP fitters |
| 7.3.5 | Painting — Tower C | 2028-02-22 → 2028-03-30 (+37d) | 2028-03-02 → 2028-04-10 (+39d) |  |  |  | was named Schilderwerk â Toren C; resources Schilders → Painters |
| 7.3.6 | Floor finishes — Tower C | 2028-03-03 → 2028-04-11 (+39d) | 2028-03-09 → 2028-04-19 (+41d) |  |  |  | was named Vloerafwerking â Toren C; resources Tegelzetters → Tilers |
| 7.3.7 | Finish ceilings — Tower C | 2028-03-10 → 2028-04-20 (+41d) | 2028-03-16 → 2028-04-26 (+41d) |  |  |  | was named Plafonds afwerken â Toren C |
| 7.3.8 | Doors and ironmongery — Tower C | 2028-03-17 → 2028-04-28 (+42d) | 2028-03-22 → 2028-05-03 (+42d) |  |  |  | was named Deuren hang- en sluitwerk â Toren C |
| 7.4 | Finish entrance hall | 2027-11-16 → 2027-12-23 (+37d) | 2027-11-23 → 2027-12-30 (+37d) |  |  |  | was named Entreehal afwerken |
| 7.5 | Finish bicycle store | 2027-11-24 → 2027-12-31 (+37d) | 2027-11-29 → 2028-01-05 (+37d) |  |  |  | was named Fietsenstalling afwerken |
| 7.6 | Finish lift lobbies | 2027-11-24 → 2027-12-31 (+37d) | 2027-11-29 → 2028-01-05 (+37d) |  |  |  | was named Liftlobby's afwerken |
| 7.7 | Finish communal stair cores | 2027-11-30 → 2028-01-06 (+37d) | 2027-12-06 → 2028-01-12 (+37d) |  |  |  | was named Gemeenschappelijke trappenhuizen afwerken |
| 7.8 | External painting, facade plinth | 2027-12-07 → 2028-01-13 (+37d) | 2027-12-10 → 2028-01-18 (+39d) |  |  |  | was named Buitenschilderwerk plint gevel |
| 7.9 | Install signage & wayfinding | 2027-12-13 → 2028-01-19 (+37d) | 2027-12-14 → 2028-01-20 (+37d) |  |  |  | was named Signage & bewegwijzering plaatsen |
| 7.10 | Final cleaning of communal areas | 2027-12-15 → 2028-01-21 (+37d) | 2027-12-17 → 2028-01-25 (+39d) |  |  |  | was named Eindschoonmaak gemeenschappelijke ruimtes |
| 8 | **7. Car park & site works** | 2027-06-21 → 2027-07-12 (+21d) | 2027-07-23 → 2028-04-24 (+276d) | 5d → 189d | 152d → 0d |  | was named 7. Terrein & parkeergarage-koppeling |
| 8.1 | Internal walls, storage units & stair cores, car park | 2027-06-21 → 2027-07-12 (+21d) | 2027-06-24 → 2027-09-10 (+78d) | 4d → 30d | 152d → 0d |  | was named Nieuwe hoofdontsluiting aanleggen |
| 8.2 | Pipework & cable trays, car park | 2027-06-25 → 2027-09-13 (+80d) | 2027-06-25 → 2027-10-14 (+111d) | 0d → 24d | 152d → 0d |  | was named Nieuwe hoofdontsluiting in gebruik genomen |
| 8.3 | Ventilation & smoke extraction system, car park | 2027-06-23 → 2027-10-15 (+114d) | 2027-06-25 → 2027-11-15 (+143d) | 3d → 22d | 172d → 0d | 8.2 SF → 8.2 | was named Tijdelijke bouwweg opbreken |
| 8.4 | Sprinkler & dry riser, car park | 2027-06-25 → 2027-11-16 (+144d) | 2027-06-30 → 2027-12-07 (+160d) | 4d → 16d | 152d → 0d | 8.2 → 8.3 | was named Rioolaansluiting terrein hoofdgebouw |
| 8.5 | Power, lighting & emergency lighting, car park | 2027-07-01 → 2027-12-08 (+160d) | 2027-07-08 → 2027-12-29 (+174d) | 6d → 16d | 152d → 0d |  | was named Bestrating parkeerterrein |
| 8.6 | Fire alarm & evacuation system, car park | 2027-07-09 → 2027-12-30 (+174d) | 2027-07-13 → 2028-01-12 (+183d) | 3d → 10d | 160d → 0d |  | was named Fietsenstalling buiten plaatsen |
| 8.7 | EV charging infrastructure | 2027-07-09 → 2028-01-13 (+188d) | 2027-07-15 → 2028-01-26 (+195d) | 5d → 10d | 152d → 0d | 8.5 → 8.6 | was named Groenvoorziening hoofdterrein aanleggen |
| 8.8 | Floor coating & line marking, car park | 2027-07-16 → 2028-01-27 (+195d) | 2027-07-20 → 2028-02-15 (+210d) | 3d → 14d | 152d → 0d |  | was named Buitenverlichting plaatsen |
| 8.9 | Access control, barriers & parking management system | 2027-07-21 → 2028-02-16 (+210d) | 2027-07-22 → 2028-02-29 (+222d) | 2d → 10d | 152d → 0d |  | was named Erfafscheiding plaatsen |
| 8.10 | Commission & test car park services | 2027-07-23 → 2028-03-01 (+222d) | 2027-07-23 → 2028-03-16 (+237d) | 1d → 12d | 152d → 0d |  | was named Parkeervakken markeren |
| 8.11 | Car park safety inspection | 2027-07-23 → 2028-03-16 (+237d) | 2027-07-23 → 2028-03-16 (+237d) |  | 152d → 0d | 8.10, 8.3, 8.6 → 8.10 | was named Oplevering terrein â eindinspectie |
| 9 | **8. Handover** | 2027-08-16 → 2028-04-25 (+253d) | 2028-03-27 → 2028-05-09 (+43d) | 5d → 9d |  |  | was named 8. Oplevering |
| 9.1 | Handover inspection — Tower A | 2028-03-27 → 2028-05-09 (+43d) | 2028-03-27 → 2028-05-09 (+43d) |  |  | 7.1.8, 8.11 → 7.1.8, 8.22 | was named Opleverkeuring â Toren A |
| 9.2 | Handover inspection — Tower B | 2028-03-27 → 2028-05-09 (+43d) | 2028-03-27 → 2028-05-09 (+43d) |  |  | 7.2.8, 8.11 → 7.2.8, 8.22 | was named Opleverkeuring â Toren B |
| 9.3 | Handover inspection — Tower C | 2028-03-22 → 2028-05-03 (+42d) | 2028-03-22 → 2028-05-03 (+42d) |  |  | 7.3.8, 8.11 → 7.3.8, 8.22 | was named Opleverkeuring â Toren C |
| 9.4 | Documentation handover (as-built drawings) | 2027-08-16 → 2028-04-25 (+253d) | 2027-08-18 → 2028-04-28 (+254d) |  | 152d → 0d | 8.11 → 8.22 | was named Documentatie-overdracht (revisietekeningen) |
| 9.5 | Key handover to the building manager | 2027-08-24 → 2028-05-04 (+254d) | 2027-08-25 → 2028-05-08 (+257d) |  | 152d → 0d |  | was named Sleuteloverdracht beheerder |
| 9.6 | Final cleaning of communal areas, building | 2027-08-19 → 2028-05-01 (+256d) | 2027-08-23 → 2028-05-03 (+254d) |  | 152d → 0d |  | was named Eindschoonmaak algemene ruimtes |
| 9.7 | Project administration & contractual close-out | 2027-08-25 → 2028-05-08 (+257d) | 2027-08-25 → 2028-05-08 (+257d) |  | 152d → 0d |  | was named Projectadministratie & contractuele afronding |
| 9.8 | Aftercare period started | 2027-08-26 → 2028-05-09 (+257d) | 2027-08-26 → 2028-05-09 (+257d) |  | 152d → 0d |  | was named Nazorgperiode gestart |
| 9.9 | Start maintenance contract for building services | 2027-08-26 → 2028-05-09 (+257d) | 2027-08-26 → 2028-05-09 (+257d) |  | 152d → 0d |  | was named Onderhoudscontract technische installaties starten |

## Version 3 (saved 2026-10-27)

Note of the change: Merge remote-tracking branch 'origin/main' into review-ready-652-20261027

Last finish 2028-05-09 → 2028-05-08 (-1d).

Changed:

| ID | Task | Start | Finish | Duration |
| --- | --- | --- | --- | --- |
| 3.20 | Basement sealing | 2027-06-14 A → 2027-06-11 A (-3d) | 2027-06-16 A → 2027-06-15 A (-1d) |  |
| 3.21 | Backfill around basement | 2027-06-17 A → 2027-06-16 A (-1d) | 2027-06-21 A → 2027-06-18 A (-3d) |  |
| 3.22 | Pour parking deck (ground floor cover) | 2027-06-22 A → 2027-06-21 A (-1d) | 2027-06-28 A → 2027-06-25 A (-3d) |  |
| 3.23 | Remove sheet piling | 2027-06-29 A → 2027-06-28 A (-1d) | 2027-06-30 A → 2027-06-29 A (-1d) |  |
| 3.24 | Basement watertight — inspection | 2027-06-30 A → 2027-06-29 A (-1d) | 2027-06-30 A → 2027-06-29 A (-1d) |  |
| 4 | **3. Structural works, towers A/B/C (parallel)** | 2027-07-01 A → 2027-06-30 A (-1d) | 2027-11-02 → 2027-11-01 (-1d) |  |
| 4.1 | Erect tower crane | 2027-07-01 A → 2027-06-30 A (-1d) | 2027-07-05 A → 2027-07-02 A (-3d) |  |
| 4.2 | **Structural works — Tower A** | 2027-07-06 → 2027-07-05 (-1d) | 2027-10-29 → 2027-10-28 (-1d) |  |
| 4.2.1 | Pour ground floor slab — Tower A | 2027-07-06 → 2027-07-05 (-1d) | 2027-07-09 → 2027-07-08 (-1d) |  |
| 4.2.2 | Walls, floor 1 — Tower A | 2027-07-12 → 2027-07-09 (-3d) | 2027-07-15 → 2027-07-14 (-1d) |  |
| 4.2.3 | Slab, floor 1 — Tower A | 2027-07-14 → 2027-07-13 (-1d) | 2027-07-16 → 2027-07-15 (-1d) |  |
| 4.2.4 | Walls, floor 2 — Tower A | 2027-07-19 → 2027-07-16 (-3d) | 2027-07-22 → 2027-07-21 (-1d) |  |
| 4.2.5 | Slab, floor 2 — Tower A | 2027-07-21 → 2027-07-20 (-1d) | 2027-07-23 → 2027-07-22 (-1d) |  |
| 4.2.6 | Walls, floor 3 — Tower A | 2027-08-16 → 2027-07-23 (-24d) | 2027-08-19 → 2027-08-18 (-1d) |  |
| 4.2.7 | Slab, floor 3 — Tower A | 2027-08-18 → 2027-08-17 (-1d) | 2027-08-20 → 2027-08-19 (-1d) |  |
| 4.2.8 | Walls, floor 4 — Tower A | 2027-08-23 → 2027-08-20 (-3d) | 2027-08-26 → 2027-08-25 (-1d) |  |
| 4.2.9 | Slab, floor 4 — Tower A | 2027-08-25 → 2027-08-24 (-1d) | 2027-08-27 → 2027-08-26 (-1d) |  |
| 4.2.10 | Walls, floor 5 — Tower A | 2027-08-30 → 2027-08-27 (-3d) | 2027-09-02 → 2027-09-01 (-1d) |  |
| 4.2.11 | Slab, floor 5 — Tower A | 2027-09-01 → 2027-08-31 (-1d) | 2027-09-03 → 2027-09-02 (-1d) |  |
| 4.2.12 | Walls, floor 6 — Tower A | 2027-09-06 → 2027-09-03 (-3d) | 2027-09-09 → 2027-09-08 (-1d) |  |
| 4.2.13 | Slab, floor 6 — Tower A | 2027-09-08 → 2027-09-07 (-1d) | 2027-09-10 → 2027-09-09 (-1d) |  |
| 4.2.14 | Walls, floor 7 — Tower A | 2027-09-13 → 2027-09-10 (-3d) | 2027-09-16 → 2027-09-15 (-1d) |  |
| 4.2.15 | Slab, floor 7 — Tower A | 2027-09-15 → 2027-09-14 (-1d) | 2027-09-17 → 2027-09-16 (-1d) |  |
| 4.2.16 | Walls, floor 8 — Tower A | 2027-09-20 → 2027-09-17 (-3d) | 2027-09-23 → 2027-09-22 (-1d) |  |
| 4.2.17 | Slab, floor 8 — Tower A | 2027-09-22 → 2027-09-21 (-1d) | 2027-09-24 → 2027-09-23 (-1d) |  |
| 4.2.18 | Walls, floor 9 — Tower A | 2027-09-27 → 2027-09-24 (-3d) | 2027-09-30 → 2027-09-29 (-1d) |  |
| 4.2.19 | Slab, floor 9 — Tower A | 2027-09-29 → 2027-09-28 (-1d) | 2027-10-01 → 2027-09-30 (-1d) |  |
| 4.2.20 | Walls, floor 10 — Tower A | 2027-10-04 → 2027-10-01 (-3d) | 2027-10-07 → 2027-10-06 (-1d) |  |
| 4.2.21 | Slab, floor 10 — Tower A | 2027-10-06 → 2027-10-05 (-1d) | 2027-10-08 → 2027-10-07 (-1d) |  |
| 4.2.22 | Walls, floor 11 — Tower A | 2027-10-11 → 2027-10-08 (-3d) | 2027-10-14 → 2027-10-13 (-1d) |  |
| 4.2.23 | Slab, floor 11 — Tower A | 2027-10-13 → 2027-10-12 (-1d) | 2027-10-15 → 2027-10-14 (-1d) |  |
| 4.2.24 | Walls, floor 12 — Tower A | 2027-10-18 → 2027-10-15 (-3d) | 2027-10-21 → 2027-10-20 (-1d) |  |
| 4.2.25 | Slab, floor 12 — Tower A | 2027-10-20 → 2027-10-19 (-1d) | 2027-10-22 → 2027-10-21 (-1d) |  |
| 4.2.26 | Stair core & lift shaft — Tower A | 2027-07-06 → 2027-07-05 (-1d) | 2027-09-14 → 2027-09-13 (-1d) |  |
| 4.2.27 | Install roof structure — Tower A | 2027-10-25 → 2027-10-22 (-3d) | 2027-10-29 → 2027-10-28 (-1d) |  |
| 4.2.28 | Structural works complete — Tower A | 2027-10-29 → 2027-10-28 (-1d) | 2027-10-29 → 2027-10-28 (-1d) |  |
| 4.2.29 | Structural works tower A (LOE) | 2027-07-06 → 2027-07-05 (-1d) | 2027-10-29 → 2027-10-28 (-1d) | 69d → 552h |
| 4.3 | **Structural works — Tower B** | 2027-07-06 → 2027-07-05 (-1d) | 2027-10-29 → 2027-10-28 (-1d) |  |
| 4.3.1 | Pour ground floor slab — Tower B | 2027-07-06 → 2027-07-05 (-1d) | 2027-07-09 → 2027-07-08 (-1d) |  |
| 4.3.2 | Walls, floor 1 — Tower B | 2027-07-12 → 2027-07-09 (-3d) | 2027-07-15 → 2027-07-14 (-1d) |  |
| 4.3.3 | Slab, floor 1 — Tower B | 2027-07-14 → 2027-07-13 (-1d) | 2027-07-16 → 2027-07-15 (-1d) |  |
| 4.3.4 | Walls, floor 2 — Tower B | 2027-07-19 → 2027-07-16 (-3d) | 2027-07-22 → 2027-07-21 (-1d) |  |
| 4.3.5 | Slab, floor 2 — Tower B | 2027-07-21 → 2027-07-20 (-1d) | 2027-07-23 → 2027-07-22 (-1d) |  |
| 4.3.6 | Walls, floor 3 — Tower B | 2027-08-16 → 2027-07-23 (-24d) | 2027-08-19 → 2027-08-18 (-1d) |  |
| 4.3.7 | Slab, floor 3 — Tower B | 2027-08-18 → 2027-08-17 (-1d) | 2027-08-20 → 2027-08-19 (-1d) |  |
| 4.3.8 | Walls, floor 4 — Tower B | 2027-08-23 → 2027-08-20 (-3d) | 2027-08-26 → 2027-08-25 (-1d) |  |
| 4.3.9 | Slab, floor 4 — Tower B | 2027-08-25 → 2027-08-24 (-1d) | 2027-08-27 → 2027-08-26 (-1d) |  |
| 4.3.10 | Walls, floor 5 — Tower B | 2027-08-30 → 2027-08-27 (-3d) | 2027-09-02 → 2027-09-01 (-1d) |  |
| 4.3.11 | Slab, floor 5 — Tower B | 2027-09-01 → 2027-08-31 (-1d) | 2027-09-03 → 2027-09-02 (-1d) |  |
| 4.3.12 | Walls, floor 6 — Tower B | 2027-09-06 → 2027-09-03 (-3d) | 2027-09-09 → 2027-09-08 (-1d) |  |
| 4.3.13 | Slab, floor 6 — Tower B | 2027-09-08 → 2027-09-07 (-1d) | 2027-09-10 → 2027-09-09 (-1d) |  |
| 4.3.14 | Walls, floor 7 — Tower B | 2027-09-13 → 2027-09-10 (-3d) | 2027-09-16 → 2027-09-15 (-1d) |  |
| 4.3.15 | Slab, floor 7 — Tower B | 2027-09-15 → 2027-09-14 (-1d) | 2027-09-17 → 2027-09-16 (-1d) |  |
| 4.3.16 | Walls, floor 8 — Tower B | 2027-09-20 → 2027-09-17 (-3d) | 2027-09-23 → 2027-09-22 (-1d) |  |
| 4.3.17 | Slab, floor 8 — Tower B | 2027-09-22 → 2027-09-21 (-1d) | 2027-09-24 → 2027-09-23 (-1d) |  |
| 4.3.18 | Walls, floor 9 — Tower B | 2027-09-27 → 2027-09-24 (-3d) | 2027-09-30 → 2027-09-29 (-1d) |  |
| 4.3.19 | Slab, floor 9 — Tower B | 2027-09-29 → 2027-09-28 (-1d) | 2027-10-01 → 2027-09-30 (-1d) |  |
| 4.3.20 | Walls, floor 10 — Tower B | 2027-10-04 → 2027-10-01 (-3d) | 2027-10-07 → 2027-10-06 (-1d) |  |
| 4.3.21 | Slab, floor 10 — Tower B | 2027-10-06 → 2027-10-05 (-1d) | 2027-10-08 → 2027-10-07 (-1d) |  |
| 4.3.22 | Walls, floor 11 — Tower B | 2027-10-11 → 2027-10-08 (-3d) | 2027-10-14 → 2027-10-13 (-1d) |  |
| 4.3.23 | Slab, floor 11 — Tower B | 2027-10-13 → 2027-10-12 (-1d) | 2027-10-15 → 2027-10-14 (-1d) |  |
| 4.3.24 | Walls, floor 12 — Tower B | 2027-10-18 → 2027-10-15 (-3d) | 2027-10-21 → 2027-10-20 (-1d) |  |
| 4.3.25 | Slab, floor 12 — Tower B | 2027-10-20 → 2027-10-19 (-1d) | 2027-10-22 → 2027-10-21 (-1d) |  |
| 4.3.26 | Stair core & lift shaft — Tower B | 2027-07-06 → 2027-07-05 (-1d) | 2027-09-14 → 2027-09-13 (-1d) |  |
| 4.3.27 | Install roof structure — Tower B | 2027-10-25 → 2027-10-22 (-3d) | 2027-10-29 → 2027-10-28 (-1d) |  |
| 4.3.28 | Structural works complete — Tower B | 2027-10-29 → 2027-10-28 (-1d) | 2027-10-29 → 2027-10-28 (-1d) |  |
| 4.4 | **Structural works — Tower C** | 2027-07-06 → 2027-07-05 (-1d) | 2027-10-29 → 2027-10-28 (-1d) |  |
| 4.4.1 | Pour ground floor slab — Tower C | 2027-07-06 → 2027-07-05 (-1d) | 2027-07-09 → 2027-07-08 (-1d) |  |
| 4.4.2 | Walls, floor 1 — Tower C | 2027-07-12 → 2027-07-09 (-3d) | 2027-07-15 → 2027-07-14 (-1d) |  |
| 4.4.3 | Slab, floor 1 — Tower C | 2027-07-14 → 2027-07-13 (-1d) | 2027-07-16 → 2027-07-15 (-1d) |  |

| ID | Task | Start | Finish | Duration |
| --- | --- | --- | --- | --- |
| 4.4.4 | Walls, floor 2 — Tower C | 2027-07-19 → 2027-07-16 (-3d) | 2027-07-22 → 2027-07-21 (-1d) |  |
| 4.4.5 | Slab, floor 2 — Tower C | 2027-07-21 → 2027-07-20 (-1d) | 2027-07-23 → 2027-07-22 (-1d) |  |
| 4.4.6 | Walls, floor 3 — Tower C | 2027-08-16 → 2027-07-23 (-24d) | 2027-08-19 → 2027-08-18 (-1d) |  |
| 4.4.7 | Slab, floor 3 — Tower C | 2027-08-18 → 2027-08-17 (-1d) | 2027-08-20 → 2027-08-19 (-1d) |  |
| 4.4.8 | Walls, floor 4 — Tower C | 2027-08-23 → 2027-08-20 (-3d) | 2027-08-26 → 2027-08-25 (-1d) |  |
| 4.4.9 | Slab, floor 4 — Tower C | 2027-08-25 → 2027-08-24 (-1d) | 2027-08-27 → 2027-08-26 (-1d) |  |
| 4.4.10 | Walls, floor 5 — Tower C | 2027-08-30 → 2027-08-27 (-3d) | 2027-09-02 → 2027-09-01 (-1d) |  |
| 4.4.11 | Slab, floor 5 — Tower C | 2027-09-01 → 2027-08-31 (-1d) | 2027-09-03 → 2027-09-02 (-1d) |  |
| 4.4.12 | Walls, floor 6 — Tower C | 2027-09-06 → 2027-09-03 (-3d) | 2027-09-09 → 2027-09-08 (-1d) |  |
| 4.4.13 | Slab, floor 6 — Tower C | 2027-09-08 → 2027-09-07 (-1d) | 2027-09-10 → 2027-09-09 (-1d) |  |
| 4.4.14 | Walls, floor 7 — Tower C | 2027-09-13 → 2027-09-10 (-3d) | 2027-09-16 → 2027-09-15 (-1d) |  |
| 4.4.15 | Slab, floor 7 — Tower C | 2027-09-15 → 2027-09-14 (-1d) | 2027-09-17 → 2027-09-16 (-1d) |  |
| 4.4.16 | Walls, floor 8 — Tower C | 2027-09-20 → 2027-09-17 (-3d) | 2027-09-23 → 2027-09-22 (-1d) |  |
| 4.4.17 | Slab, floor 8 — Tower C | 2027-09-22 → 2027-09-21 (-1d) | 2027-09-24 → 2027-09-23 (-1d) |  |
| 4.4.18 | Walls, floor 9 — Tower C | 2027-09-27 → 2027-09-24 (-3d) | 2027-09-30 → 2027-09-29 (-1d) |  |
| 4.4.19 | Slab, floor 9 — Tower C | 2027-09-29 → 2027-09-28 (-1d) | 2027-10-01 → 2027-09-30 (-1d) |  |
| 4.4.20 | Walls, floor 10 — Tower C | 2027-10-04 → 2027-10-01 (-3d) | 2027-10-07 → 2027-10-06 (-1d) |  |
| 4.4.21 | Slab, floor 10 — Tower C | 2027-10-06 → 2027-10-05 (-1d) | 2027-10-08 → 2027-10-07 (-1d) |  |
| 4.4.22 | Walls, floor 11 — Tower C | 2027-10-11 → 2027-10-08 (-3d) | 2027-10-14 → 2027-10-13 (-1d) |  |
| 4.4.23 | Slab, floor 11 — Tower C | 2027-10-13 → 2027-10-12 (-1d) | 2027-10-15 → 2027-10-14 (-1d) |  |
| 4.4.24 | Walls, floor 12 — Tower C | 2027-10-18 → 2027-10-15 (-3d) | 2027-10-21 → 2027-10-20 (-1d) |  |
| 4.4.25 | Slab, floor 12 — Tower C | 2027-10-20 → 2027-10-19 (-1d) | 2027-10-22 → 2027-10-21 (-1d) |  |
| 4.4.26 | Stair core & lift shaft — Tower C | 2027-07-06 → 2027-07-05 (-1d) | 2027-09-14 → 2027-09-13 (-1d) |  |
| 4.4.27 | Install roof structure — Tower C | 2027-10-25 → 2027-10-22 (-3d) | 2027-10-29 → 2027-10-28 (-1d) |  |
| 4.4.28 | Structural works complete — Tower C | 2027-10-29 → 2027-10-28 (-1d) | 2027-10-29 → 2027-10-28 (-1d) |  |
| 4.5 | Dismantle tower crane | 2027-11-01 → 2027-10-29 (-3d) | 2027-11-02 → 2027-11-01 (-1d) |  |
| 5 | **4. Facade & roof** |  | 2027-12-22 → 2027-12-21 (-1d) | 108d → 107d |
| 5.1 | **Facade & roof — Tower A** | 2027-11-01 → 2027-10-29 (-3d) | 2027-12-16 → 2027-12-15 (-1d) |  |
| 5.1.1 | Erect scaffolding — Tower A | 2027-11-01 → 2027-10-29 (-3d) | 2027-11-03 → 2027-11-02 (-1d) |  |
| 5.1.2 | Apply facade insulation — Tower A | 2027-11-04 → 2027-11-03 (-1d) | 2027-11-15 → 2027-11-12 (-3d) |  |
| 5.1.3 | Install facade cladding — Tower A | 2027-11-16 → 2027-11-15 (-1d) | 2027-11-29 → 2027-11-26 (-3d) |  |
| 5.1.4 | Install window frames — Tower A | 2027-11-30 → 2027-11-29 (-1d) | 2027-12-07 → 2027-12-06 (-1d) |  |
| 5.1.5 | Apply roof insulation — Tower A | 2027-11-01 → 2027-10-29 (-3d) | 2027-11-05 → 2027-11-04 (-1d) |  |
| 5.1.6 | Apply roofing — Tower A | 2027-11-08 → 2027-11-05 (-3d) | 2027-11-12 → 2027-11-11 (-1d) |  |
| 5.1.7 | Install balcony balustrades — Tower A | 2027-12-08 → 2027-12-07 (-1d) | 2027-12-14 → 2027-12-13 (-1d) |  |
| 5.1.8 | Connect rainwater drainage — Tower A | 2027-11-15 → 2027-11-12 (-3d) | 2027-11-17 → 2027-11-16 (-1d) |  |
| 5.1.9 | Strike scaffolding — Tower A | 2027-12-15 → 2027-12-14 (-1d) | 2027-12-16 → 2027-12-15 (-1d) |  |
| 5.2 | **Facade & roof — Tower B** | 2027-11-01 → 2027-10-29 (-3d) | 2027-12-16 → 2027-12-15 (-1d) |  |
| 5.2.1 | Erect scaffolding — Tower B | 2027-11-01 → 2027-10-29 (-3d) | 2027-11-03 → 2027-11-02 (-1d) |  |
| 5.2.2 | Apply facade insulation — Tower B | 2027-11-04 → 2027-11-03 (-1d) | 2027-11-15 → 2027-11-12 (-3d) |  |
| 5.2.3 | Install facade cladding — Tower B | 2027-11-16 → 2027-11-15 (-1d) | 2027-11-29 → 2027-11-26 (-3d) |  |
| 5.2.4 | Install window frames — Tower B | 2027-11-30 → 2027-11-29 (-1d) | 2027-12-07 → 2027-12-06 (-1d) |  |
| 5.2.5 | Apply roof insulation — Tower B | 2027-11-01 → 2027-10-29 (-3d) | 2027-11-05 → 2027-11-04 (-1d) |  |
| 5.2.6 | Apply roofing — Tower B | 2027-11-08 → 2027-11-05 (-3d) | 2027-11-12 → 2027-11-11 (-1d) |  |
| 5.2.7 | Install balcony balustrades — Tower B | 2027-12-08 → 2027-12-07 (-1d) | 2027-12-14 → 2027-12-13 (-1d) |  |
| 5.2.8 | Connect rainwater drainage — Tower B | 2027-11-15 → 2027-11-12 (-3d) | 2027-11-17 → 2027-11-16 (-1d) |  |
| 5.2.9 | Strike scaffolding — Tower B | 2027-12-15 → 2027-12-14 (-1d) | 2027-12-16 → 2027-12-15 (-1d) |  |
| 5.3 | **Facade & roof — Tower C** | 2027-11-01 → 2027-10-29 (-3d) | 2027-12-16 → 2027-12-15 (-1d) |  |
| 5.3.1 | Erect scaffolding — Tower C | 2027-11-01 → 2027-10-29 (-3d) | 2027-11-03 → 2027-11-02 (-1d) |  |
| 5.3.2 | Apply facade insulation — Tower C | 2027-11-04 → 2027-11-03 (-1d) | 2027-11-15 → 2027-11-12 (-3d) |  |
| 5.3.3 | Install facade cladding — Tower C | 2027-11-16 → 2027-11-15 (-1d) | 2027-11-29 → 2027-11-26 (-3d) |  |
| 5.3.4 | Install window frames — Tower C | 2027-11-30 → 2027-11-29 (-1d) | 2027-12-07 → 2027-12-06 (-1d) |  |
| 5.3.5 | Apply roof insulation — Tower C | 2027-11-01 → 2027-10-29 (-3d) | 2027-11-05 → 2027-11-04 (-1d) |  |
| 5.3.6 | Apply roofing — Tower C | 2027-11-08 → 2027-11-05 (-3d) | 2027-11-12 → 2027-11-11 (-1d) |  |
| 5.3.7 | Install balcony balustrades — Tower C | 2027-12-08 → 2027-12-07 (-1d) | 2027-12-14 → 2027-12-13 (-1d) |  |
| 5.3.8 | Connect rainwater drainage — Tower C | 2027-11-15 → 2027-11-12 (-3d) | 2027-11-17 → 2027-11-16 (-1d) |  |
| 5.3.9 | Strike scaffolding — Tower C | 2027-12-15 → 2027-12-14 (-1d) | 2027-12-16 → 2027-12-15 (-1d) |  |
| 5.4 | Facade cladding, main entrance | 2027-12-17 → 2027-12-16 (-1d) | 2027-12-22 → 2027-12-21 (-1d) |  |
| 6 | **5. Building services (MEP)** | 2027-12-17 → 2027-12-16 (-1d) | 2028-02-07 → 2028-02-04 (-3d) |  |
| 6.1 | Install heating plant room | 2027-12-23 → 2027-12-22 (-1d) | 2027-12-30 → 2027-12-29 (-1d) |  |
| 6.2 | Connect main electrical distribution board | 2027-12-31 → 2027-12-30 (-1d) | 2028-01-05 → 2028-01-04 (-1d) |  |
| 6.3 | Install & test emergency generator | 2028-01-06 → 2028-01-05 (-1d) | 2028-01-10 → 2028-01-07 (-3d) |  |
| 6.4 | Fit out data centre server room | 2028-01-11 → 2028-01-10 (-1d) | 2028-01-14 → 2028-01-13 (-1d) |  |
| 6.5 | **Building services — Tower A** | 2027-12-17 → 2027-12-16 (-1d) | 2028-02-07 → 2028-02-04 (-3d) |  |
| 6.5.1 | Mechanical services — Tower A | 2027-12-17 → 2027-12-16 (-1d) | 2027-12-28 → 2027-12-27 (-1d) |  |
| 6.5.2 | Install electrical services — Tower A | 2027-12-21 → 2027-12-20 (-1d) | 2027-12-29 → 2027-12-28 (-1d) |  |
| 6.5.3 | Connect ventilation ductwork — Tower A | 2027-12-30 → 2027-12-29 (-1d) | 2028-01-05 → 2028-01-04 (-1d) |  |
| 6.5.4 | Install sprinkler system — Tower A | 2028-01-06 → 2028-01-05 (-1d) | 2028-01-12 → 2028-01-11 (-1d) |  |
| 6.5.5 | Install data/ICT cabling — Tower A | 2028-01-13 → 2028-01-12 (-1d) | 2028-01-18 → 2028-01-17 (-1d) |  |
| 6.5.6 | Install fire alarm system — Tower A | 2028-01-19 → 2028-01-18 (-1d) | 2028-01-24 → 2028-01-21 (-3d) |  |

| ID | Task | Start | Finish | Duration | Total float |
| --- | --- | --- | --- | --- | --- |
| 6.5.7 | Lift supply & installation — Tower A | 2028-01-25 → 2028-01-24 (-1d) | 2028-02-07 → 2028-02-04 (-3d) |  |  |
| 6.5.8 | Services commissioning inspection — Tower A | 2028-02-07 → 2028-02-04 (-3d) | 2028-02-07 → 2028-02-04 (-3d) |  |  |
| 6.6 | **Building services — Tower B** | 2027-12-17 → 2027-12-16 (-1d) | 2028-02-07 → 2028-02-04 (-3d) |  |  |
| 6.6.1 | Mechanical services — Tower B | 2027-12-17 → 2027-12-16 (-1d) | 2027-12-28 → 2027-12-27 (-1d) |  |  |
| 6.6.2 | Install electrical services — Tower B | 2027-12-21 → 2027-12-20 (-1d) | 2027-12-29 → 2027-12-28 (-1d) |  |  |
| 6.6.3 | Connect ventilation ductwork — Tower B | 2027-12-30 → 2027-12-29 (-1d) | 2028-01-05 → 2028-01-04 (-1d) |  |  |
| 6.6.4 | Install sprinkler system — Tower B | 2028-01-06 → 2028-01-05 (-1d) | 2028-01-12 → 2028-01-11 (-1d) |  |  |
| 6.6.5 | Install data/ICT cabling — Tower B | 2028-01-13 → 2028-01-12 (-1d) | 2028-01-18 → 2028-01-17 (-1d) |  |  |
| 6.6.6 | Install fire alarm system — Tower B | 2028-01-19 → 2028-01-18 (-1d) | 2028-01-24 → 2028-01-21 (-3d) |  |  |
| 6.6.7 | Lift supply & installation — Tower B | 2028-01-25 → 2028-01-24 (-1d) | 2028-02-07 → 2028-02-04 (-3d) |  |  |
| 6.6.8 | Services commissioning inspection — Tower B | 2028-02-07 → 2028-02-04 (-3d) | 2028-02-07 → 2028-02-04 (-3d) |  |  |
| 6.7 | **Building services — Tower C** | 2027-12-17 → 2027-12-16 (-1d) | 2028-02-07 → 2028-02-04 (-3d) |  |  |
| 6.7.1 | Mechanical services — Tower C | 2027-12-17 → 2027-12-16 (-1d) | 2027-12-28 → 2027-12-27 (-1d) |  |  |
| 6.7.2 | Install electrical services — Tower C | 2027-12-21 → 2027-12-20 (-1d) | 2027-12-29 → 2027-12-28 (-1d) |  |  |
| 6.7.3 | Connect ventilation ductwork — Tower C | 2027-12-30 → 2027-12-29 (-1d) | 2028-01-05 → 2028-01-04 (-1d) |  |  |
| 6.7.4 | Install sprinkler system — Tower C | 2028-01-06 → 2028-01-05 (-1d) | 2028-01-12 → 2028-01-11 (-1d) |  |  |
| 6.7.5 | Install data/ICT cabling — Tower C | 2028-01-13 → 2028-01-12 (-1d) | 2028-01-18 → 2028-01-17 (-1d) |  |  |
| 6.7.6 | Install fire alarm system — Tower C | 2028-01-19 → 2028-01-18 (-1d) | 2028-01-24 → 2028-01-21 (-3d) |  |  |
| 6.7.7 | Lift supply & installation — Tower C | 2028-01-25 → 2028-01-24 (-1d) | 2028-02-07 → 2028-02-04 (-3d) |  |  |
| 6.7.8 | Services commissioning inspection — Tower C | 2028-02-07 → 2028-02-04 (-3d) | 2028-02-07 → 2028-02-04 (-3d) |  |  |
| 7 | **6. Fit-out** | 2027-12-23 → 2027-12-22 (-1d) | 2028-05-09 → 2028-05-08 (-1d) |  |  |
| 7.1 | **Fit-out — Tower A** | 2028-02-08 → 2028-02-07 (-1d) | 2028-05-09 → 2028-05-08 (-1d) |  |  |
| 7.1.1 | Plastering — Tower A | 2028-02-08 → 2028-02-07 (-1d) | 2028-02-28 → 2028-02-25 (-3d) |  |  |
| 7.1.2 | Tiling — Tower A | 2028-02-29 → 2028-02-28 (-1d) | 2028-03-13 → 2028-03-10 (-3d) |  |  |
| 7.1.3 | Install kitchens — Tower A | 2028-03-14 → 2028-03-13 (-1d) | 2028-03-23 → 2028-03-22 (-1d) |  |  |
| 7.1.4 | Install sanitary fittings — Tower A | 2028-03-24 → 2028-03-23 (-1d) | 2028-04-03 → 2028-03-31 (-3d) |  |  |
| 7.1.5 | Painting — Tower A | 2028-04-04 → 2028-04-03 (-1d) | 2028-04-13 → 2028-04-12 (-1d) |  |  |
| 7.1.6 | Floor finishes — Tower A | 2028-04-18 → 2028-04-13 (-5d) | 2028-04-24 → 2028-04-21 (-3d) |  |  |
| 7.1.7 | Finish ceilings — Tower A | 2028-04-25 → 2028-04-24 (-1d) | 2028-05-02 → 2028-05-01 (-1d) |  |  |
| 7.1.8 | Doors and ironmongery — Tower A | 2028-05-03 → 2028-05-02 (-1d) | 2028-05-09 → 2028-05-08 (-1d) |  |  |
| 7.2 | **Fit-out — Tower B** | 2028-02-08 → 2028-02-07 (-1d) | 2028-05-09 → 2028-05-08 (-1d) |  |  |
| 7.2.1 | Plastering — Tower B | 2028-02-08 → 2028-02-07 (-1d) | 2028-02-28 → 2028-02-25 (-3d) |  |  |
| 7.2.2 | Tiling — Tower B | 2028-02-29 → 2028-02-28 (-1d) | 2028-03-13 → 2028-03-10 (-3d) |  |  |
| 7.2.3 | Install kitchens — Tower B | 2028-03-14 → 2028-03-13 (-1d) | 2028-03-23 → 2028-03-22 (-1d) |  |  |
| 7.2.4 | Install sanitary fittings — Tower B | 2028-03-24 → 2028-03-23 (-1d) | 2028-04-03 → 2028-03-31 (-3d) |  |  |
| 7.2.5 | Painting — Tower B | 2028-04-04 → 2028-04-03 (-1d) | 2028-04-13 → 2028-04-12 (-1d) |  |  |
| 7.2.6 | Floor finishes — Tower B | 2028-04-18 → 2028-04-13 (-5d) | 2028-04-24 → 2028-04-21 (-3d) |  |  |
| 7.2.7 | Finish ceilings — Tower B | 2028-04-25 → 2028-04-24 (-1d) | 2028-05-02 → 2028-05-01 (-1d) |  |  |
| 7.2.8 | Doors and ironmongery — Tower B | 2028-05-03 → 2028-05-02 (-1d) | 2028-05-09 → 2028-05-08 (-1d) |  |  |
| 7.3 | **Fit-out — Tower C** | 2028-02-08 → 2028-02-07 (-1d) | 2028-05-03 → 2028-05-02 (-1d) |  |  |
| 7.3.1 | Plastering — Tower C | 2028-02-08 → 2028-02-07 (-1d) | 2028-02-23 → 2028-02-22 (-1d) |  |  |
| 7.3.2 | Tiling — Tower C | 2028-02-24 → 2028-02-23 (-1d) | 2028-03-08 → 2028-03-07 (-1d) |  |  |
| 7.3.3 | Install kitchens — Tower C | 2028-03-09 → 2028-03-08 (-1d) | 2028-03-20 → 2028-03-17 (-3d) |  |  |
| 7.3.4 | Install sanitary fittings — Tower C | 2028-03-21 → 2028-03-20 (-1d) | 2028-03-29 → 2028-03-28 (-1d) |  |  |
| 7.3.5 | Painting — Tower C | 2028-03-30 → 2028-03-29 (-1d) | 2028-04-10 → 2028-04-07 (-3d) |  |  |
| 7.3.6 | Floor finishes — Tower C | 2028-04-11 → 2028-04-10 (-1d) | 2028-04-19 → 2028-04-18 (-1d) |  |  |
| 7.3.7 | Finish ceilings — Tower C | 2028-04-20 → 2028-04-19 (-1d) | 2028-04-26 → 2028-04-25 (-1d) |  |  |
| 7.3.8 | Doors and ironmongery — Tower C | 2028-04-28 → 2028-04-26 (-2d) | 2028-05-03 → 2028-05-02 (-1d) |  |  |
| 7.4 | Finish entrance hall | 2027-12-23 → 2027-12-22 (-1d) | 2027-12-30 → 2027-12-29 (-1d) |  |  |
| 7.5 | Finish bicycle store | 2027-12-31 → 2027-12-30 (-1d) | 2028-01-05 → 2028-01-04 (-1d) |  |  |
| 7.6 | Finish lift lobbies | 2027-12-31 → 2027-12-30 (-1d) | 2028-01-05 → 2028-01-04 (-1d) |  |  |
| 7.7 | Finish communal stair cores | 2028-01-06 → 2028-01-05 (-1d) | 2028-01-12 → 2028-01-11 (-1d) |  |  |
| 7.8 | External painting, facade plinth | 2028-01-13 → 2028-01-12 (-1d) | 2028-01-18 → 2028-01-17 (-1d) |  |  |
| 7.9 | Install signage & wayfinding | 2028-01-19 → 2028-01-18 (-1d) | 2028-01-20 → 2028-01-19 (-1d) |  |  |
| 7.10 | Final cleaning of communal areas | 2028-01-21 → 2028-01-20 (-1d) | 2028-01-25 → 2028-01-24 (-1d) |  |  |
| 8 | **7. Car park & site works** |  | 2028-04-24 → 2028-04-21 (-3d) | 189d → 188d |  |
| 8.1 | Internal walls, storage units & stair cores, car park |  | 2027-09-10 → 2027-09-09 (-1d) | 30d → 29d |  |
| 8.2 | Pipework & cable trays, car park | 2027-09-13 → 2027-09-10 (-3d) | 2027-10-14 → 2027-10-13 (-1d) |  |  |
| 8.3 | Ventilation & smoke extraction system, car park | 2027-10-15 → 2027-10-14 (-1d) | 2027-11-15 → 2027-11-12 (-3d) |  |  |
| 8.4 | Sprinkler & dry riser, car park | 2027-11-16 → 2027-11-15 (-1d) | 2027-12-07 → 2027-12-06 (-1d) |  |  |
| 8.5 | Power, lighting & emergency lighting, car park | 2027-12-08 → 2027-12-07 (-1d) | 2027-12-29 → 2027-12-28 (-1d) |  |  |
| 8.6 | Fire alarm & evacuation system, car park | 2027-12-30 → 2027-12-29 (-1d) | 2028-01-12 → 2028-01-11 (-1d) |  |  |
| 8.7 | EV charging infrastructure | 2028-01-13 → 2028-01-12 (-1d) | 2028-01-26 → 2028-01-25 (-1d) |  |  |
| 8.8 | Floor coating & line marking, car park | 2028-01-27 → 2028-01-26 (-1d) | 2028-02-15 → 2028-02-14 (-1d) |  |  |
| 8.9 | Access control, barriers & parking management system | 2028-02-16 → 2028-02-15 (-1d) | 2028-02-29 → 2028-02-28 (-1d) |  |  |
| 8.10 | Commission & test car park services | 2028-03-01 → 2028-02-29 (-1d) | 2028-03-16 → 2028-03-15 (-1d) |  |  |
| 8.11 | Car park safety inspection | 2028-03-16 → 2028-03-15 (-1d) | 2028-03-16 → 2028-03-15 (-1d) |  |  |
| 8.12 | Construct new main access road | 2028-03-17 → 2028-03-16 (-1d) | 2028-03-22 → 2028-03-21 (-1d) |  |  |
| 8.13 | New main access road in use | 2028-03-23 → 2028-03-22 (-1d) | 2028-03-23 → 2028-03-22 (-1d) |  |  |
| 8.14 | Break up temporary site road | 2028-03-21 → 2028-03-17 (-4d) | 2028-03-23 → 2028-03-22 (-1d) |  | 20d → 21d |

| ID | Task | Start | Finish |
| --- | --- | --- | --- |
| 8.15 | Site sewer connection, main building | 2028-03-23 → 2028-03-22 (-1d) | 2028-03-28 → 2028-03-27 (-1d) |
| 8.16 | Car park paving | 2028-03-29 → 2028-03-28 (-1d) | 2028-04-05 → 2028-04-04 (-1d) |
| 8.17 | Install outdoor bicycle shelter | 2028-04-06 → 2028-04-05 (-1d) | 2028-04-10 → 2028-04-07 (-3d) |
| 8.18 | Install landscaping, main site | 2028-04-06 → 2028-04-05 (-1d) | 2028-04-12 → 2028-04-11 (-1d) |
| 8.19 | Install external lighting | 2028-04-13 → 2028-04-12 (-1d) | 2028-04-19 → 2028-04-18 (-1d) |
| 8.20 | Install boundary fencing | 2028-04-20 → 2028-04-19 (-1d) | 2028-04-21 → 2028-04-20 (-1d) |
| 8.21 | Mark out parking bays | 2028-04-24 → 2028-04-21 (-3d) | 2028-04-24 → 2028-04-21 (-3d) |
| 8.22 | Site handover — final inspection | 2028-04-24 → 2028-04-21 (-3d) | 2028-04-24 → 2028-04-21 (-3d) |
| 9 | **8. Handover** | 2028-04-25 → 2028-04-24 (-1d) | 2028-05-09 → 2028-05-08 (-1d) |
| 9.1 | Handover inspection — Tower A | 2028-05-09 → 2028-05-08 (-1d) | 2028-05-09 → 2028-05-08 (-1d) |
| 9.2 | Handover inspection — Tower B | 2028-05-09 → 2028-05-08 (-1d) | 2028-05-09 → 2028-05-08 (-1d) |
| 9.3 | Handover inspection — Tower C | 2028-05-03 → 2028-05-02 (-1d) | 2028-05-03 → 2028-05-02 (-1d) |
| 9.4 | Documentation handover (as-built drawings) | 2028-04-25 → 2028-04-24 (-1d) | 2028-04-28 → 2028-04-26 (-2d) |
| 9.5 | Key handover to the building manager | 2028-05-04 → 2028-05-03 (-1d) | 2028-05-08 → 2028-05-04 (-4d) |
| 9.6 | Final cleaning of communal areas, building | 2028-05-01 → 2028-04-28 (-3d) | 2028-05-03 → 2028-05-02 (-1d) |
| 9.7 | Project administration & contractual close-out | 2028-05-08 → 2028-05-04 (-4d) | 2028-05-08 → 2028-05-04 (-4d) |
| 9.8 | Aftercare period started | 2028-05-09 → 2028-05-08 (-1d) | 2028-05-09 → 2028-05-08 (-1d) |
| 9.9 | Start maintenance contract for building services | 2028-05-09 → 2028-05-08 (-1d) | 2028-05-09 → 2028-05-08 (-1d) |
