# Bouwplanning v1.0

How a schedule from an IFC model changed from version to version. A marks actual dates.

## Version 1 (saved 2026-07-07)

Note of the change: feat(2.10): showcase-schema-uitbreidingen + KLEIN/MIDDEL-showcases (onderdeel 4, golf 1)

| ID | Task | Duration | Start | Finish | Predecessors | Total float |
| --- | --- | --- | --- | --- | --- | --- |
| 1 | **1. Voorbereiding & Omleidingen** | 5d | 2027-03-01 | 2027-03-25 |  | 0d |
| 1.1 | Verkeersmaatregelen instellen | 5d | 2027-03-01 | 2027-03-05 |  | 0d |
| 1.2 | Tijdelijke omleidingsroute | 8d | 2027-03-06 | 2027-03-15 | 1.1 | 128d |
| 1.3 | Bouwplaats inrichten | 5d | 2027-03-16 | 2027-03-20 | 1.2 | 128d |
| 1.4 | Vaarbeperkingen instellen | 3d | 2027-03-22 | 2027-03-24 | 1.3 | 128d |
| 1.5 | Start werkzaamheden | 0d | 2027-03-25 | 2027-03-25 | 1.4 | 128d |
| 2 | **2. Sloop oude brug** | 5d | 2027-03-13 | 2027-04-28 |  | 0d |
| 2.1 | Leidingen omleggen | 8d | 2027-03-13 | 2027-03-22 | 1.1 SS+11d | 0d |
| 2.2 | Asfalt verwijderen | 3d | 2027-03-23 | 2027-03-25 | 2.1 | 102d |
| 2.3 | Brugleuningen demonteren | 3d | 2027-03-27 | 2027-03-31 | 2.2 | 102d |
| 2.4 | Brugdek slopen | 10d | 2027-04-01 | 2027-04-12 | 2.3 | 102d |
| 2.5 | Landhoofden slopen | 8d | 2027-04-13 | 2027-04-21 | 2.4 | 102d |
| 2.6 | Puin afvoeren | 5d | 2027-04-22 | 2027-04-28 | 2.5 | 102d |
| 3 | **3. Fundering nieuw** | 5d | 2027-03-17 | 2027-05-07 |  | 0d |
| 3.1 | Damwanden slaan | 10d | 2027-03-17 | 2027-03-30 | 2.1 SS | 0d |
| 3.2 | Onderwaterbeton | 8d | 2027-03-31 | 2027-04-08 | 3.1 | 0d |
| 3.3 | Droogzetten bouwkuip | 5d | 2027-04-09 | 2027-04-14 | 3.2 | 0d |
| 3.4 | Paalfundering boren | 12d | 2027-04-15 | 2027-04-29 | 3.3 | 0d |
| 3.5 | Grondverbetering | 5d | 2027-04-30 | 2027-05-07 | 3.4 | 0d |
| 4 | **4. Betonconstructie** | 5d | 2027-04-26 | 2027-07-17 |  | 0d |
| 4.1 | Landhoofd west wapenen en storten | 15d | 2027-04-26 | 2027-05-15 | 3.5 FS-8d | 0d |
| 4.2 | Landhoofd oost wapenen en storten | 15d | 2027-05-03 | 2027-05-22 | 4.1 SS+5d | 0d |
| 4.3 | Pijler midden storten | 10d | 2027-05-24 | 2027-06-03 | 4.2 | 0d |
| 4.4 | Prefab liggers plaatsen | 8d | 2027-06-04 | 2027-06-12 | 4.3 | 0d |
| 4.5 | Brugdek wapening | 10d | 2027-06-14 | 2027-06-24 | 4.4 | 0d |
| 4.6 | Brugdek storten | 5d | 2027-06-25 | 2027-06-30 | 4.5 | 0d |
| 4.7 | Uitharding beton | 15d | 2027-07-01 | 2027-07-17 | 4.6, 3.5 FF+2d | 0d |
| 5 | **5. Afwerking** | 5d | 2027-07-19 | 2027-09-04 |  | 0d |
| 5.1 | Brugleuningen monteren | 5d | 2027-07-19 | 2027-07-23 | 4.7 | 0d |
| 5.2 | Waterdichting brugdek | 5d | 2027-07-24 | 2027-08-19 | 5.1 | 0d |
| 5.3 | Asfalt brugdek | 3d | 2027-08-20 | 2027-08-23 | 5.2 | 0d |
| 5.4 | Asfalt aansluitingen | 5d | 2027-08-24 | 2027-08-28 | 5.3 | 0d |
| 5.5 | Verlichting | 3d | 2027-08-30 | 2027-09-01 | 5.4 | 0d |
| 5.6 | Geleiderail | 3d | 2027-09-02 | 2027-09-04 | 5.5 | 0d |
| 6 | **6. Oplevering** | 5d | 2027-09-06 | 2027-09-18 |  | 0d |
| 6.1 | Proefbelasting | 3d | 2027-09-06 | 2027-09-08 | 5.6 | 0d |
| 6.2 | Omleidingen opheffen | 3d | 2027-09-09 | 2027-09-11 | 6.1 | 0d |
| 6.3 | Bouwplaats opruimen | 5d | 2027-09-13 | 2027-09-17 | 6.2 | 0d |
| 6.4 | Openstelling brug | 0d | 2027-09-18 | 2027-09-18 | 6.3 | 0d |

## Version 2 (saved 2026-09-12)

Note of the change: Merge remote-tracking branch 'origin/main' into t3code/issue-27-xlsx

Last finish stays 2027-09-18.

Changed:

| ID | Task | Other |
| --- | --- | --- |
| 1 | **1. Preparation & diversions** | was named 1. Voorbereiding & Omleidingen |
| 1.1 | Implement traffic management | was named Verkeersmaatregelen instellen; resources none → Traffic management contractor |
| 1.2 | Temporary diversion route | was named Tijdelijke omleidingsroute; resources none → Traffic management contractor |
| 1.3 | Set up site | was named Bouwplaats inrichten |
| 1.4 | Impose shipping restrictions | was named Vaarbeperkingen instellen |
| 1.5 | Start of works | was named Start werkzaamheden |
| 2 | **2. Demolition of old bridge** | was named 2. Sloop oude brug |
| 2.1 | Divert services | was named Leidingen omleggen |
| 2.2 | Remove asphalt | was named Asfalt verwijderen; resources none → Demolition contractor |
| 2.3 | Remove bridge railings | was named Brugleuningen demonteren; resources none → Demolition contractor |
| 2.4 | Demolish bridge deck | was named Brugdek slopen; resources none → Demolition contractor; Crawler crane 250 t |
| 2.5 | Demolish abutments | was named Landhoofden slopen; resources none → Demolition contractor |
| 2.6 | Remove rubble | was named Puin afvoeren; resources none → Demolition contractor |
| 3 | **3. New foundations** | was named 3. Fundering nieuw |
| 3.1 | Drive sheet piling | was named Damwanden slaan; resources none → Piling rig |
| 3.2 | Underwater concrete | was named Onderwaterbeton; resources none → Concrete C35/45 |
| 3.3 | Dewater excavation pit | was named Droogzetten bouwkuip |
| 3.4 | Bore pile foundation | was named Paalfundering boren; resources none → Piling rig |
| 3.5 | Ground improvement | was named Grondverbetering |
| 4 | **4. Concrete structure** | was named 4. Betonconstructie |
| 4.1 | West abutment: rebar and pour | was named Landhoofd west wapenen en storten; resources none → Steel fixers; Concrete crew; Concrete C35/45 |
| 4.2 | East abutment: rebar and pour | was named Landhoofd oost wapenen en storten; resources none → Steel fixers; Concrete crew; Concrete C35/45 |
| 4.3 | Pour central pier | was named Pijler midden storten; resources none → Concrete crew; Concrete C35/45 |
| 4.4 | Place precast beams | was named Prefab liggers plaatsen; resources none → Crawler crane 250 t; Concrete crew |
| 4.5 | Bridge deck reinforcement | was named Brugdek wapening; resources none → Steel fixers |
| 4.6 | Pour bridge deck | was named Brugdek storten; resources none → Concrete crew; Concrete C35/45 |
| 4.7 | Concrete curing | was named Uitharding beton |
| 5 | **5. Finishing** | was named 5. Afwerking |
| 5.1 | Install bridge railings | was named Brugleuningen monteren; resources none → Concrete crew |
| 5.2 | Bridge deck waterproofing | was named Waterdichting brugdek |
| 5.3 | Asphalt bridge deck | was named Asfalt brugdek; resources none → Asphalt contractor |
| 5.4 | Asphalt tie-ins | was named Asfalt aansluitingen; resources none → Asphalt contractor |
| 5.5 | Lighting | was named Verlichting |
| 5.6 | Crash barrier | was named Geleiderail |
| 6 | **6. Handover** | was named 6. Oplevering |
| 6.1 | Load test | was named Proefbelasting |
| 6.2 | Remove diversions | was named Omleidingen opheffen |
| 6.3 | Clear site | was named Bouwplaats opruimen |
| 6.4 | Bridge open to traffic | was named Openstelling brug |
