# Bouwplanning v1.0

How a schedule from an IFC model changed from version to version. A marks actual dates.

## Version 1 (saved 2026-07-03)

Note of the change: feat(backstage): Voorbeelden-sectie — meegeleverde voorbeeldprojecten openen vanuit de app

| ID | Task | Predecessors |
| --- | --- | --- |
| 1 | **1. Voorbereiding** |  |
| 1.1 | Bouwplaats inrichten |  |
| 1.2 | Grondonderzoek aanvullend | 1.1 |
| 1.3 | Bomen kappen en verplanten | 1.2 |
| 1.4 | Start bouw | 1.3 |
| 2 | **2. Fundering** |  |
| 2.1 | Heien funderingspalen | 1.4 |
| 2.2 | Funderingsbalken | 2.1 |
| 2.3 | Riolering en grondleidingen | 2.2 |
| 2.4 | Begane grondvloer storten | 2.3 |
| 3 | **3. Ruwbouw** |  |
| 3.1 | Begane grond draagstructuur | 2.4 |
| 3.2 | Verdieping 1 beton | 3.1 |
| 3.3 | Verdieping 2 beton | 3.2 |
| 3.4 | Metselwerk gevels | 3.3 |
| 3.5 | Binnenwanden kalkzandsteen | 3.4 |
| 3.6 | Dakconstructie | 3.5 |
| 3.7 | Hoogste punt | 3.6 |
| 4 | **4. Gevel & Dak** |  |
| 4.1 | Gevelisolatie en afwerking | 3.7 |
| 4.2 | Kozijnen en puien | 4.1 |
| 4.3 | Dakisolatie en bedekking | 4.2 |
| 4.4 | Dakranden en hemelwaterafvoer | 4.3 |
| 4.5 | Wind- en waterdicht | 4.4 |
| 5 | **5. Installaties** |  |
| 5.1 | Elektra hoofdverdeling | 4.5 |
| 5.2 | Noodstroomvoorziening | 5.1 |
| 5.3 | Zuurstof en medische gassen | 5.2 |
| 5.4 | CV en koeling | 5.3 SS |
| 5.5 | Ventilatie met HEPA filters | 5.4 |
| 5.6 | Sprinkler en BMI | 5.5 |
| 5.7 | Liftinstallatie | 5.6 |
| 5.8 | Zuster-oproepsysteem | 5.7 |
| 5.9 | ICT bekabeling | 5.8 |
| 6 | **6. Afbouw** |  |
| 6.1 | Scheidingswanden | 5.9 |
| 6.2 | Plafonds en wanden afwerken | 6.1 |
| 6.3 | Tegelwerk natte ruimten | 6.2 |
| 6.4 | Dekvloeren en vloerafwerking | 6.3 |
| 6.5 | Schilderwerk | 6.4 |
| 6.6 | Keukens en pantry | 6.5 |
| 6.7 | Sanitair plaatsen | 6.6 |
| 7 | **7. Oplevering** |  |
| 7.1 | Buitenterrein aanleggen | 6.7 |
| 7.2 | Inrichting kamers | 7.1 |
| 7.3 | Testen installaties | 7.2 |
| 7.4 | Oplevering | 7.3 |

## Version 2 (saved 2026-07-03)

Note of the change: feat(examples): generator op echte writer+CPM, 3 showcase-planningen, rijkere topologie

Last finish none → 2028-01-18.

Changed:

| ID | Task | Start | Finish | Duration | Total float | Predecessors |
| --- | --- | --- | --- | --- | --- | --- |
| 1 | **1. Voorbereiding** | none → 2027-03-01 | none → 2027-03-16 | none → 5d | none → 0d |  |
| 1.1 | Bouwplaats inrichten | none → 2027-03-01 | none → 2027-03-05 | none → 5d | none → 0d |  |
| 1.2 | Grondonderzoek aanvullend | none → 2027-03-08 | none → 2027-03-10 | none → 3d | none → 199d |  |
| 1.3 | Bomen kappen en verplanten | none → 2027-03-11 | none → 2027-03-15 | none → 3d | none → 199d |  |
| 1.4 | Start bouw | none → 2027-03-16 | none → 2027-03-16 | none → 0d | none → 199d |  |
| 2 | **2. Fundering** | none → 2027-03-09 | none → 2027-04-30 | none → 5d | none → 0d |  |
| 2.1 | Heien funderingspalen | none → 2027-03-09 | none → 2027-03-24 | none → 12d | none → 0d | 1.4 → 1.1 SS+6d |
| 2.2 | Funderingsbalken | none → 2027-03-25 | none → 2027-04-07 | none → 8d | none → 169d |  |
| 2.3 | Riolering en grondleidingen | none → 2027-04-08 | none → 2027-04-19 | none → 8d | none → 169d |  |
| 2.4 | Begane grondvloer storten | none → 2027-04-20 | none → 2027-04-30 | none → 8d | none → 169d |  |
| 3 | **3. Ruwbouw** | none → 2027-03-16 | none → 2027-06-24 | none → 5d | none → 0d |  |
| 3.1 | Begane grond draagstructuur | none → 2027-03-16 | none → 2027-04-02 | none → 12d | none → 0d | 2.4 → 2.1 SS |
| 3.2 | Verdieping 1 beton | none → 2027-04-05 | none → 2027-04-16 | none → 10d | none → 0d |  |
| 3.3 | Verdieping 2 beton | none → 2027-04-19 | none → 2027-05-03 | none → 10d | none → 0d |  |
| 3.4 | Metselwerk gevels | none → 2027-05-04 | none → 2027-05-27 | none → 15d | none → 0d |  |
| 3.5 | Binnenwanden kalkzandsteen | none → 2027-05-28 | none → 2027-06-10 | none → 10d | none → 0d |  |
| 3.6 | Dakconstructie | none → 2027-06-11 | none → 2027-06-24 | none → 10d | none → 0d |  |
| 3.7 | Hoogste punt | none → 2027-06-24 | none → 2027-06-24 | none → 0d | none → 133d |  |
| 4 | **4. Gevel & Dak** | none → 2027-06-08 | none → 2027-08-16 | none → 5d | none → 0d |  |
| 4.1 | Gevelisolatie en afwerking | none → 2027-06-08 | none → 2027-06-23 | none → 12d | none → 0d | 3.7 → 3.6 FS-13d |
| 4.2 | Kozijnen en puien | none → 2027-06-24 | none → 2027-07-07 | none → 10d | none → 0d |  |
| 4.3 | Dakisolatie en bedekking | none → 2027-07-08 | none → 2027-07-19 | none → 8d | none → 0d |  |
| 4.4 | Dakranden en hemelwaterafvoer | none → 2027-07-20 | none → 2027-08-16 | none → 5d | none → 0d | 4.3 → 4.3, 3.6 FF+2d |
| 4.5 | Wind- en waterdicht | none → 2027-08-16 | none → 2027-08-16 | none → 0d | none → 111d |  |
| 5 | **5. Installaties** | none → 2027-08-17 | none → 2027-11-24 | none → 5d | none → 0d |  |
| 5.1 | Elektra hoofdverdeling | none → 2027-08-17 | none → 2027-08-26 | none → 8d | none → 0d | 4.5 → 4.4 |
| 5.2 | Noodstroomvoorziening | none → 2027-08-27 | none → 2027-09-02 | none → 5d | none → 39d |  |
| 5.3 | Zuurstof en medische gassen | none → 2027-09-03 | none → 2027-09-14 | none → 8d | none → 39d |  |
| 5.4 | CV en koeling | none → 2027-09-08 | none → 2027-09-21 | none → 10d | none → 39d | 5.3 SS → 5.3 SS+3d |
| 5.5 | Ventilatie met HEPA filters | none → 2027-09-22 | none → 2027-10-05 | none → 10d | none → 39d |  |
| 5.6 | Sprinkler en BMI | none → 2027-10-06 | none → 2027-10-15 | none → 8d | none → 39d |  |
| 5.7 | Liftinstallatie | none → 2027-10-18 | none → 2027-11-05 | none → 15d | none → 39d |  |
| 5.8 | Zuster-oproepsysteem | none → 2027-11-08 | none → 2027-11-12 | none → 5d | none → 39d |  |
| 5.9 | ICT bekabeling | none → 2027-11-15 | none → 2027-11-24 | none → 8d | none → 39d |  |
| 6 | **6. Afbouw** | none → 2027-10-11 | none → 2027-12-23 | none → 5d | none → 0d |  |
| 6.1 | Scheidingswanden | none → 2027-10-11 | none → 2027-10-20 | none → 8d | none → 0d | 5.9 → 5.1 SS+39d |
| 6.2 | Plafonds en wanden afwerken | none → 2027-10-21 | none → 2027-11-03 | none → 10d | none → 0d |  |
| 6.3 | Tegelwerk natte ruimten | none → 2027-11-04 | none → 2027-11-15 | none → 8d | none → 0d |  |
| 6.4 | Dekvloeren en vloerafwerking | none → 2027-11-16 | none → 2027-11-25 | none → 8d | none → 0d |  |
| 6.5 | Schilderwerk | none → 2027-11-26 | none → 2027-12-09 | none → 10d | none → 0d |  |
| 6.6 | Keukens en pantry | none → 2027-12-10 | none → 2027-12-16 | none → 5d | none → 0d |  |
| 6.7 | Sanitair plaatsen | none → 2027-12-17 | none → 2027-12-23 | none → 5d | none → 0d |  |
| 7 | **7. Oplevering** | none → 2027-12-24 | none → 2028-01-18 | none → 5d | none → 0d |  |
| 7.1 | Buitenterrein aanleggen | none → 2027-12-24 | none → 2028-01-04 | none → 8d | none → 0d |  |
| 7.2 | Inrichting kamers | none → 2028-01-05 | none → 2028-01-11 | none → 5d | none → 0d |  |
| 7.3 | Testen installaties | none → 2028-01-12 | none → 2028-01-18 | none → 5d | none → 0d |  |
| 7.4 | Oplevering | none → 2028-01-18 | none → 2028-01-18 | none → 0d | none → 0d |  |

## Version 3 (saved 2026-09-04)

Note of the change: Merge main (f16bfff7) in de XER/Primavera-importetappe

Last finish stays 2028-01-18.

Changed:

| ID | Task | Other |
| --- | --- | --- |
| 1 | **1. Preparation** | was named 1. Voorbereiding |
| 1.1 | Set up site | was named Bouwplaats inrichten; resources none → Civils and landscaping contractor |
| 1.2 | Additional soil investigation | was named Grondonderzoek aanvullend |
| 1.3 | Fell and transplant trees | was named Bomen kappen en verplanten; resources none → Civils and landscaping contractor |
| 1.4 | Start of construction | was named Start bouw |
| 2 | **2. Foundations** | was named 2. Fundering |
| 2.1 | Pile driving, foundation piles | was named Heien funderingspalen; resources none → Piling contractor |
| 2.2 | Foundation beams | was named Funderingsbalken; resources none → Structural works crew; Concrete C30/37 |
| 2.3 | Sewerage and underground pipework | was named Riolering en grondleidingen; resources none → Civils and landscaping contractor |
| 2.4 | Pour ground floor slab | was named Begane grondvloer storten; resources none → Structural works crew; Concrete C30/37 |
| 3 | **3. Structural works** | was named 3. Ruwbouw |
| 3.1 | Ground floor load-bearing structure | was named Begane grond draagstructuur; resources none → Structural works crew; Mobile crane; Concrete C30/37 |
| 3.2 | Floor 1 concrete | was named Verdieping 1 beton; resources none → Structural works crew; Mobile crane; Concrete C30/37 |
| 3.3 | Floor 2 concrete | was named Verdieping 2 beton; resources none → Structural works crew; Mobile crane; Concrete C30/37 |
| 3.4 | Facade masonry | was named Metselwerk gevels; resources none → Bricklayers; Mobile crane |
| 3.5 | Internal walls, sand-lime brick | was named Binnenwanden kalkzandsteen; resources none → Bricklayers |
| 3.6 | Roof structure | was named Dakconstructie; resources none → Structural works crew; Mobile crane |
| 3.7 | Topping out | was named Hoogste punt |
| 4 | **4. Facade & roof** | was named 4. Gevel & Dak |
| 4.1 | Facade insulation and finish | was named Gevelisolatie en afwerking; resources none → Facade contractor |
| 4.2 | Window frames and screens | was named Kozijnen en puien; resources none → Facade contractor |
| 4.3 | Roof insulation and covering | was named Dakisolatie en bedekking; resources none → Roofing contractor |
| 4.4 | Roof edges and rainwater drainage | was named Dakranden en hemelwaterafvoer; resources none → Roofing contractor |
| 4.5 | Wind and weathertight | was named Wind- en waterdicht |
| 5 | **5. Building services** | was named 5. Installaties |
| 5.1 | Main electrical distribution | was named Elektra hoofdverdeling; resources none → Electricians |
| 5.2 | Emergency power supply | was named Noodstroomvoorziening; resources none → Electricians |
| 5.3 | Oxygen and medical gases | was named Zuurstof en medische gassen; resources none → Medical gas contractor |
| 5.4 | Heating and cooling | was named CV en koeling; resources none → Mechanical fitters |
| 5.5 | Ventilation with HEPA filters | was named Ventilatie met HEPA filters; resources none → Mechanical fitters |
| 5.6 | Sprinkler and fire alarm | was named Sprinkler en BMI; resources none → Mechanical fitters |
| 5.7 | Lift installation | was named Liftinstallatie; resources none → Lift contractor |
| 5.8 | Nurse call system | was named Zuster-oproepsysteem; resources none → Electricians |
| 5.9 | ICT cabling | was named ICT bekabeling; resources none → Electricians |
| 6 | **6. Fit-out** | was named 6. Afbouw |
| 6.1 | Partition walls | was named Scheidingswanden; resources none → Fit-out crew |
| 6.2 | Finish ceilings and walls | was named Plafonds en wanden afwerken; resources none → Fit-out crew |
| 6.3 | Tiling, wet rooms | was named Tegelwerk natte ruimten; resources none → Tilers |
| 6.4 | Screeds and floor finishes | was named Dekvloeren en vloerafwerking; resources none → Fit-out crew |
| 6.5 | Painting | was named Schilderwerk; resources none → Painters |
| 6.6 | Kitchens and pantry | was named Keukens en pantry; resources none → Fit-out crew |
| 6.7 | Install sanitary fittings | was named Sanitair plaatsen; resources none → Mechanical fitters |
| 7 | **7. Handover** | was named 7. Oplevering |
| 7.1 | Construct external areas | was named Buitenterrein aanleggen; resources none → Civils and landscaping contractor |
| 7.2 | Room furnishing | was named Inrichting kamers; resources none → Fit-out crew |
| 7.3 | Test building services | was named Testen installaties; resources none → Commissioning engineer; Electricians; Mechanical fitters |
| 7.4 | Handover | was named Oplevering |

## Version 4 (saved 2026-09-28)

Note of the change: chore(voorbeelden): opnieuw gegenereerd met STEP-codering en de nieuwe GlobalIds

Last finish stays 2028-01-18.

Changed:

| ID | Task | Duration |
| --- | --- | --- |
| 1 | **1. Preparation** | 5d → 12d |
| 2 | **2. Foundations** | 5d → 36d |
| 3 | **3. Structural works** | 5d → 67d |
| 4 | **4. Facade & roof** | 5d → 35d |
| 5 | **5. Building services** | 5d → 72d |
| 6 | **6. Fit-out** | 5d → 54d |
| 7 | **7. Handover** | 5d → 18d |
