# Bouwplanning v1.0

How a schedule from an IFC model changed from version to version. A marks actual dates.

## Version 1 (saved 2026-07-07)

Note of the change: feat(2.10): showcase-schema-uitbreidingen + KLEIN/MIDDEL-showcases (onderdeel 4, golf 1)

| ID | Task | Duration | Start | Finish | Predecessors | Total float |
| --- | --- | --- | --- | --- | --- | --- |
| 1 | Start verbouwing | 0d | 2027-03-01 | 2027-03-01 |  | 4d |
| 2 | **1. Voorbereiding** | 5d | 2027-03-01 | 2027-03-11 |  | 0d |
| 2.1 | Bouwplaats inrichten | 2d | 2027-03-01 | 2027-03-02 | 1 | 4d |
| 2.2 | Sloop bestaande aanbouw | 3d | 2027-03-09 | 2027-03-11 | 2.1 | 0d |
| 3 | **2. Fundering & ruwbouw** | 5d | 2027-03-12 | 2027-04-06 |  | 0d |
| 3.1 | Grondwerk aanbouw | 3d | 2027-03-12 | 2027-03-16 | 2.2 | 0d |
| 3.2 | Fundering aanbouw | 4d | 2027-03-17 | 2027-03-22 | 3.1 | 0d |
| 3.3 | Begane grondvloer storten | 3d | 2027-03-23 | 2027-03-25 | 3.2 | 0d |
| 3.4 | Wanden opmetselen | 6d | 2027-03-30 | 2027-04-06 | 3.3 | 0d |
| 3.5 | Dakconstructie plaatsen | 4d | 2027-04-01 | 2027-04-06 | 3.4 SS+2d | 0d |
| 4 | **3. Afbouw** | 5d | 2027-04-07 | 2027-04-30 |  | 0d |
| 4.1 | Dakbedekking aanbrengen | 3d | 2027-04-07 | 2027-04-09 | 3.5 | 0d |
| 4.2 | Kozijnen plaatsen | 4d | 2027-04-12 | 2027-04-15 | 4.1 | 0d |
| 4.3 | Stucwerk | 5d | 2027-04-16 | 2027-04-22 | 4.2 | 0d |
| 4.4 | Tegelwerk | 4d | 2027-04-23 | 2027-04-29 | 4.3 | 0d |
| 4.5 | Schilderwerk | 3d | 2027-04-28 | 2027-04-30 | 4.3, 4.4 FF+1d | 0d |
| 5 | **4. Oplevering** | 5d | 2027-05-03 | 2027-05-04 |  | 0d |
| 5.1 | Eindschoonmaak | 1d | 2027-05-03 | 2027-05-03 | 4.5 | 0d |
| 5.2 | Opleveringsinspectie | 0d | 2027-05-03 | 2027-05-03 | 5.1 | 0d |
| 5.3 | Sleuteloverdracht | 1d | 2027-05-04 | 2027-05-04 | 5.2 | 0d |

## Version 2 (saved 2026-07-10)

Note of the change: Merge fase-2.10 (onderdelen 4-5 + fixes): showcases, in-app documentatie, solver- en UX-fixes

Last finish stays 2027-05-04.

Changed:

| ID | Task | Other |
| --- | --- | --- |
| 5.3 | Eindoplevering met bewoner | was named Sleuteloverdracht |

## Version 3 (saved 2026-09-04)

Note of the change: Merge remote-tracking branch 'origin/main' into t3code/b1c-etappe3

Last finish stays 2027-05-04.

Changed:

| ID | Task | Other |
| --- | --- | --- |
| 1 | Start of refurbishment | was named Start verbouwing |
| 2 | **1. Preparation** | was named 1. Voorbereiding |
| 2.1 | Set up site | was named Bouwplaats inrichten |
| 2.2 | Demolish existing extension | was named Sloop bestaande aanbouw |
| 3 | **2. Foundations & structure** | was named 2. Fundering & ruwbouw |
| 3.1 | Earthworks for extension | was named Grondwerk aanbouw |
| 3.2 | Extension foundations | was named Fundering aanbouw |
| 3.3 | Pour ground floor slab | was named Begane grondvloer storten |
| 3.4 | Build masonry walls | was named Wanden opmetselen |
| 3.5 | Install roof structure | was named Dakconstructie plaatsen |
| 4 | **3. Fit-out** | was named 3. Afbouw |
| 4.1 | Apply roofing | was named Dakbedekking aanbrengen |
| 4.2 | Install window frames | was named Kozijnen plaatsen |
| 4.3 | Plastering | was named Stucwerk |
| 4.4 | Tiling | was named Tegelwerk |
| 4.5 | Painting | was named Schilderwerk |
| 5 | **4. Handover** | was named 4. Oplevering |
| 5.1 | Final cleaning | was named Eindschoonmaak |
| 5.2 | Handover inspection | was named Opleveringsinspectie |
| 5.3 | Final handover with the occupant | was named Eindoplevering met bewoner |

## Version 4 (saved 2026-09-12)

Note of the change: Merge branch 't3code/b1c-etappe3' into worktree-agent-a3fc934c23c08bbe1

Last finish 2027-05-04 → 2027-07-02 (+59d).

Changed:

| ID | Task | Start | Finish | Total float | Other |
| --- | --- | --- | --- | --- | --- |
| 1 | Start of refurbishment | 2027-03-01 → 2027-05-03 (+63d) | 2027-03-01 → 2027-05-03 (+63d) | 4d → 2d |  |
| 2 | **1. Preparation** | 2027-03-01 → 2027-05-03 (+63d) | 2027-03-11 → 2027-05-13 (+63d) |  |  |
| 2.1 | Set up site | 2027-03-01 → 2027-05-03 (+63d) | 2027-03-02 → 2027-05-04 (+63d) | 4d → 2d |  |
| 2.2 | Demolish existing extension | 2027-03-09 → 2027-05-11 (+63d) | 2027-03-11 → 2027-05-13 (+63d) |  |  |
| 3 | **2. Foundations & structure** | 2027-03-12 → 2027-05-14 (+63d) | 2027-04-06 → 2027-06-07 (+62d) |  |  |
| 3.1 | Earthworks for extension | 2027-03-12 → 2027-05-14 (+63d) | 2027-03-16 → 2027-05-19 (+64d) |  |  |
| 3.2 | Extension foundations | 2027-03-17 → 2027-05-20 (+64d) | 2027-03-22 → 2027-05-25 (+64d) |  |  |
| 3.3 | Pour ground floor slab | 2027-03-23 → 2027-05-26 (+64d) | 2027-03-25 → 2027-05-28 (+64d) |  |  |
| 3.4 | Build masonry walls | 2027-03-30 → 2027-05-31 (+62d) | 2027-04-06 → 2027-06-07 (+62d) |  | resources none → Masonry crew; Bricklayers |
| 3.5 | Install roof structure | 2027-04-01 → 2027-06-02 (+62d) | 2027-04-06 → 2027-06-07 (+62d) |  | resources none → Carpenters |
| 4 | **3. Fit-out** | 2027-04-07 → 2027-06-08 (+62d) | 2027-04-30 → 2027-06-30 (+61d) |  |  |
| 4.1 | Apply roofing | 2027-04-07 → 2027-06-08 (+62d) | 2027-04-09 → 2027-06-10 (+62d) |  | resources none → Carpenters |
| 4.2 | Install window frames | 2027-04-12 → 2027-06-11 (+60d) | 2027-04-15 → 2027-06-16 (+62d) |  | resources none → Carpenters |
| 4.3 | Plastering | 2027-04-16 → 2027-06-17 (+62d) | 2027-04-22 → 2027-06-23 (+62d) |  | resources none → Plasterers |
| 4.4 | Tiling | 2027-04-23 → 2027-06-24 (+62d) | 2027-04-29 → 2027-06-29 (+61d) |  | resources none → Tilers |
| 4.5 | Painting | 2027-04-28 → 2027-06-28 (+61d) | 2027-04-30 → 2027-06-30 (+61d) |  | resources none → Painters |
| 5 | **4. Handover** | 2027-05-03 → 2027-07-01 (+59d) | 2027-05-04 → 2027-07-02 (+59d) |  |  |
| 5.1 | Final cleaning | 2027-05-03 → 2027-07-01 (+59d) | 2027-05-03 → 2027-07-01 (+59d) |  |  |
| 5.2 | Handover inspection | 2027-05-03 → 2027-07-01 (+59d) | 2027-05-03 → 2027-07-01 (+59d) |  |  |
| 5.3 | Final handover with the occupant | 2027-05-04 → 2027-07-02 (+59d) | 2027-05-04 → 2027-07-02 (+59d) |  |  |

## Version 5 (saved 2026-09-14)

Note of the change: feat(examples): onderbrekingen toestaan maakt in de showcases zichtbaar verschil (Masonry crew)

Last finish 2027-07-02 → 2027-07-07 (+5d).

Changed:

| ID | Task | Start | Finish | Total float |
| --- | --- | --- | --- | --- |
| 1 | Start of refurbishment | 2027-05-03 → 2027-05-07 (+4d) | 2027-05-03 → 2027-05-07 (+4d) | 2d → 3d |
| 2 | **1. Preparation** | 2027-05-03 → 2027-05-07 (+4d) | 2027-05-13 → 2027-05-19 (+6d) |  |
| 2.1 | Set up site | 2027-05-03 → 2027-05-07 (+4d) | 2027-05-04 → 2027-05-10 (+6d) | 2d → 3d |
| 2.2 | Demolish existing extension | 2027-05-11 → 2027-05-14 (+3d) | 2027-05-13 → 2027-05-19 (+6d) |  |
| 3 | **2. Foundations & structure** | 2027-05-14 → 2027-05-20 (+6d) | 2027-06-07 → 2027-06-10 (+3d) |  |
| 3.1 | Earthworks for extension | 2027-05-14 → 2027-05-20 (+6d) | 2027-05-19 → 2027-05-24 (+5d) |  |
| 3.2 | Extension foundations | 2027-05-20 → 2027-05-25 (+5d) | 2027-05-25 → 2027-05-28 (+3d) |  |
| 3.3 | Pour ground floor slab | 2027-05-26 → 2027-05-31 (+5d) | 2027-05-28 → 2027-06-02 (+5d) |  |
| 3.4 | Build masonry walls | 2027-05-31 → 2027-06-03 (+3d) | 2027-06-07 → 2027-06-10 (+3d) |  |
| 3.5 | Install roof structure | 2027-06-02 → 2027-06-07 (+5d) | 2027-06-07 → 2027-06-10 (+3d) |  |
| 4 | **3. Fit-out** | 2027-06-08 → 2027-06-11 (+3d) | 2027-06-30 → 2027-07-05 (+5d) |  |
| 4.1 | Apply roofing | 2027-06-08 → 2027-06-11 (+3d) | 2027-06-10 → 2027-06-15 (+5d) |  |
| 4.2 | Install window frames | 2027-06-11 → 2027-06-16 (+5d) | 2027-06-16 → 2027-06-21 (+5d) |  |
| 4.3 | Plastering | 2027-06-17 → 2027-06-22 (+5d) | 2027-06-23 → 2027-06-28 (+5d) |  |
| 4.4 | Tiling | 2027-06-24 → 2027-06-29 (+5d) | 2027-06-29 → 2027-07-02 (+3d) |  |
| 4.5 | Painting | 2027-06-28 → 2027-07-01 (+3d) | 2027-06-30 → 2027-07-05 (+5d) |  |
| 5 | **4. Handover** | 2027-07-01 → 2027-07-06 (+5d) | 2027-07-02 → 2027-07-07 (+5d) |  |
| 5.1 | Final cleaning | 2027-07-01 → 2027-07-06 (+5d) | 2027-07-01 → 2027-07-06 (+5d) |  |
| 5.2 | Handover inspection | 2027-07-01 → 2027-07-06 (+5d) | 2027-07-01 → 2027-07-06 (+5d) |  |
| 5.3 | Final handover with the occupant | 2027-07-02 → 2027-07-07 (+5d) | 2027-07-02 → 2027-07-07 (+5d) |  |

## Version 6 (saved 2026-09-28)

Note of the change: chore(voorbeelden): opnieuw gegenereerd met STEP-codering en de nieuwe GlobalIds

Last finish stays 2027-07-07.

Changed:

| ID | Task | Duration |
| --- | --- | --- |
| 2 | **1. Preparation** | 5d → 8d |
| 3 | **2. Foundations & structure** | 5d → 16d |
| 4 | **3. Fit-out** | 5d → 17d |
| 5 | **4. Handover** | 5d → 2d |
